# NITRIC ACID COMPLEX - Rev-03

Schedule from Primavera P6, 2016-09-29 to 2049-05-15, data date 2018-08-01, A marks actual dates.

## Calendars

- Standard 5 Day Workweek w/ Basic Holidays: Mon-Fri 09:00-13:00, 14:00-18:00; Sat-Sun off. Exceptions (off unless hours are given): 2017-03-04 08:00-16:00, 2017-08-15, 2018-01-26.
- Monsoon: Mon-Fri 09:00-13:00, 14:00-18:00; Sat-Sun off. Exceptions (off unless hours are given): 2017-06-01 to 2017-06-02, 2017-06-05 08:00-16:00, 2017-06-06, 2017-06-07 08:00-16:00, 2017-06-08, 2017-06-09 08:00-16:00, 2017-06-12 to 2017-06-16, 2017-06-19 08:00-16:00, 2017-06-20, 2017-06-21 08:00-16:00, 2017-06-22, 2017-06-23 08:00-16:00, 2017-06-26 to 2017-06-30, 2017-07-03 to 2017-07-07, 2017-07-10 08:00-16:00, 2017-07-11, 2017-07-12 08:00-16:00, 2017-07-13, 2017-07-14 08:00-16:00, 2017-07-17 to 2017-07-21, 2017-07-24 08:00-16:00, 2017-07-25, 2017-07-26 08:00-16:00, 2017-07-27, 2017-07-28 08:00-16:00, 2017-07-31 to 2017-08-04, 2017-08-07 to 2017-08-11 08:00-16:00, 2017-08-14 to 2017-08-18, 2017-08-21 to 2017-08-25 08:00-16:00, 2017-08-28 to 2017-08-31 08:00-16:00.

## Resources

| Resource | Group | Rate |
| --- | --- | --- |
| MH-Wtg | labor | 450 |

## Schedule

| ID | WBS | Activity | Type | Duration | Start | Finish | Predecessors | Complete | Planned start | Planned finish | Total float | Free float |
| --- | --- | --- | --- | --- | --- | --- | --- | --- | --- | --- | --- | --- |
| 000001 |  | Effective Date of Contract (EDOC) | milestone | 0d | 2016-09-29 A | 2016-09-29 A |  | 100% |  |  |  |  |
|  | 5 | **Key Milestones (Deleted)** |  |  | 2016-10-25 | 2018-11-15 |  |  |  |  |  |  |
| 000005 |  | Enquiry for Soil testing (Bore hole locations & BOQ) | milestone | 0d | 2016-10-25 A | 2016-10-25 A | 103249 | 100% |  |  |  |  |
| 000004 |  | Drgs/Docs for obtaining NOC/CTE | milestone | 0d | 2016-11-21 A | 2016-11-21 A | 100430 | 100% |  |  |  |  |
| 000006 |  | Ordering of Soil testing | milestone | 0d | 2016-11-29 A | 2016-11-29 A | 113106 | 100% |  |  |  |  |
| 000002 |  | Finalisation of Plot plan | milestone | 0d | 2017-01-10 A | 2017-01-10 A | 103410 | 100% |  |  |  |  |
| 000007 |  | Availability of Soil test reports | milestone | 0d | 2017-01-21 A | 2017-01-21 A | 100030 | 100% | 2017-01-20 | 2017-01-20 |  |  |
| 000030 |  | Enquiry for 220KV Switchyard | milestone | 0d | 2017-01-23 A | 2017-01-23 A |  | 100% |  |  |  |  |
| 000020 |  | Enquiry for Boiler package | milestone | 0d | 2017-01-25 A | 2017-01-25 A |  | 100% |  |  |  |  |
| 000018 |  | Enquiry for Long delivery static equipments | milestone | 0d | 2017-01-27 A | 2017-01-27 A | 103360 SS+20d | 100% |  |  |  |  |
| 000008 |  | Tender for Piling work | milestone | 0d | 2017-01-30 A | 2017-01-30 A | 103250 | 100% |  |  |  |  |
| 000013 |  | Commencement of Piling work | milestone | 0d | 2018-08-01 | 2018-08-01 | A112920 SS |  |  |  | 52183.9d |  |
| 000014 |  | Commencement of Civil & Structural work | milestone | 0d | 2018-08-01 | 2018-08-01 | A125490 SS |  |  |  | 52183.9d |  |
| 000015 |  | Commencement of Mechanical erection & Piping | milestone | 0d | 2018-08-01 | 2018-08-01 | A113920 SS |  |  |  | 52183.9d |  |
| 000016 |  | Commencement of E & I installation | milestone | 0d | 2018-08-01 | 2018-08-01 | A113510 SS |  |  |  | 52183.9d |  |
| 000022 |  | Commencement of Boiler erection | milestone | 0d | 2018-08-01 | 2018-08-01 | A117580 SS |  |  |  | 52183.9d |  |
| 000025 |  | Commencement of civil work for Cooling tower | milestone | 0d | 2018-08-01 | 2018-08-01 | A119640 SS |  |  |  | 52183.9d |  |
| 000029 |  | Commencement of Fire water piping | milestone | 0d | 2018-08-01 | 2018-08-01 |  |  |  |  | 52183.9d |  |
| 000032 |  | Commencement of Switchyard erection | milestone | 0d | 2018-08-01 | 2018-08-01 |  |  |  |  | 52183.9d |  |
| 000036 |  | Commencement of Pre-Commissioning activities | milestone | 0d | 2018-08-01 | 2018-08-01 |  |  |  |  | 52183.9d |  |
| 000003 |  | Obtaining consent for 220KV Power (Deleted) | milestone | 0d | 2018-08-01 | 2018-08-01 | 000001 FS+23d |  |  |  | 52183.9d |  |
| 000008.1 |  | Tender for Civil work (Part-1) | milestone | 0d | 2018-08-01 | 2018-08-01 |  |  |  |  | 52148.9d | 0d |
| 000008.3 |  | Ordering of PEB structure | milestone | 0d | 2018-08-01 | 2018-08-01 | 113112 |  |  |  | 52173.9d | 0d |
| 000008.5 |  | Availability of PEB foundation bolts | milestone | 0d | 2018-08-01 | 2018-08-01 | A125490 SS+5d |  |  |  | 52183.9d |  |
| 000009 |  | Ordering of Piling work | milestone | 0d | 2018-08-01 | 2018-08-01 | 113110 |  |  |  | 52183.9d |  |
| 000013.1 |  | Completion of piling Work | milestone | 0d | 2018-08-01 | 2018-08-01 | A112920, A113400, A117550 |  |  |  | 52183.9d |  |
| 000019 |  | Ordering of Long delivery static equipments | milestone | 0d | 2018-08-01 | 2018-08-01 | 113170 SS+10d |  |  |  | 52183.9d |  |
| 000021 |  | Ordering of Boiler package | milestone | 0d | 2018-08-01 | 2018-08-01 | 112870 |  |  |  | 52183.9d |  |
| 000023 |  | Enquiry for Cooling tower package | milestone | 0d | 2018-08-01 | 2018-08-01 | 100160 |  |  |  | 52183.9d |  |
| 000024 |  | Ordering of Cooling tower package | milestone | 0d | 2018-08-01 | 2018-08-01 | 112850 |  |  |  | 52183.9d |  |
| 000026 |  | Enquiry for Fire water network | milestone | 0d | 2018-08-01 | 2018-08-01 | 100140 |  |  |  | 52183.9d |  |
| 000027 |  | Ordering of Fire water network | milestone | 0d | 2018-08-01 | 2018-08-01 | 112830 |  |  |  | 52183.9d |  |
| 000031 |  | Ordering of 220KV Switchyard | milestone | 0d | 2018-08-01 | 2018-08-01 |  |  |  |  | 52183.9d |  |
| 000033 |  | Charging of electrical substation | milestone | 0d | 2018-08-01 | 2018-08-01 |  |  |  |  | 52163.9d | 0d |
| 000035 |  | Installation Completion | milestone | 0d | 2018-08-01 | 2018-08-01 |  |  |  |  | 52183.9d |  |
| 000037 |  | Achievement of Mechanical Completion | milestone | 0d | 2018-08-01 | 2018-08-01 |  |  |  |  | 52183.9d |  |
| 000008.4 |  | Deisgn approval of PEB structure | milestone | 0d | 2018-08-15 | 2018-08-15 | 000008.3 FS+10d |  |  |  | 52173.9d |  |
| 000034 |  | Commissioning of Utilities | milestone | 0d | 2018-08-29 | 2018-08-29 | 000033 FS+20d |  |  |  | 52163.9d |  |
| 000017 |  | Completion of WNA equipment refurbishment | milestone | 0d | 2018-08-30 | 2018-08-30 | A112821 |  |  |  | 52161.9d |  |
| 000008.2 |  | Ordering of Civil work (Part-1) | milestone | 0d | 2018-09-19 | 2018-09-19 | 000008.1 FS+35d |  |  |  | 52148.9d |  |
| 000028 |  | Completion of WBM roads | milestone | 0d | 2018-09-25 | 2018-09-25 | A100010 |  |  |  | 52143.9d |  |
| 000010 |  | NOC/CTE for site work | milestone | 0d | 2018-10-23 | 2018-10-23 | 100040 |  |  |  | 52123.9d |  |
| 000011 |  | Plot levelling and grading | milestone | 0d | 2018-11-15 | 2018-11-15 | 100041 |  |  |  | 52106.9d |  |
| 000012 |  | Construction Power, water & other facilities at site | milestone | 0d | 2018-11-15 | 2018-11-15 | 100042 |  |  |  | 52106.9d |  |

Notes:
- 000008.2: Basis & Assumptions: 15 days offer receipt / 10 days TR preparation / 10 days ordering

| ID | WBS | Activity | Duration | Start | Finish | Predecessors | Complete | Remaining | Planned start | Planned finish | Total float | Free float | Constraint | Resources | Cost | Actual cost | UNIT DESCRIPTION |
| --- | --- | --- | --- | --- | --- | --- | --- | --- | --- | --- | --- | --- | --- | --- | --- | --- | --- |
|  | 1 | **General Obligations (Deleted)** |  | 2016-09-30 | 2018-11-15 |  |  |  |  |  |  |  |  |  |  |  |  |
| 100020 |  | Drgs & Docs for existing ISBL Plants | 93d | 2016-09-30 A | 2017-02-07 A | 000001 | 100% |  |  |  |  |  |  |  |  |  |  |
| 100040 |  | Obtaining NOC/CTE | 111d | 2016-11-22 A | 2018-10-23 | 100430 | 46% | 60d | 2016-11-22 | 2017-04-25 | 52106.9d | 0d |  |  |  |  |  |
| 100030 |  | Soil testing and report | 39d | 2016-11-29 A | 2017-01-21 A | 113106 | 100% |  | 2016-11-29 | 2017-01-20 |  |  |  |  |  |  |  |
| 100041 |  | Plot levelling and grading | 17d | 2018-10-24 | 2018-11-15 | 100040 |  |  |  |  | 52106.9d | 0d |  |  |  |  |  |
| 100042 |  | Construction Power, water & other facilities at site | 15d | 2018-10-26 | 2018-11-15 | 100041 FF |  |  |  |  | 52106.9d | 0d |  |  |  |  |  |
|  | 2 | **Engineering & Proc. Assistance** |  | 2016-10-06 | 2018-10-25 |  |  |  |  |  |  |  |  |  |  |  |  |
|  | 1 | **Engineering** |  | 2016-10-06 | 2018-10-25 |  |  |  |  |  |  |  |  |  |  |  |  |
|  | 1 | **Process** |  | 2016-10-28 | 2018-08-21 |  |  |  |  |  |  |  |  |  |  |  |  |
|  | 1 | **Basic Documents** |  | 2016-10-28 | 2017-04-07 |  |  |  |  |  |  |  |  |  |  |  |  |
| 100050 |  | Process design basis | 86d | 2016-10-28 A | 2017-02-24 A | 000001 | 100% |  | 2017-02-01 | 2017-05-31 |  |  | start on 2016-10-28 | MH-Wtg [81.52 h] | 36,684 | 36,684 | 003 |
| 100050.1 |  | Utility concept notes | 64d | 2016-12-05 A | 2017-03-17 A |  | 100% |  | 2017-03-01 | 2017-05-29 |  |  | start on 2016-12-05 | MH-Wtg [81.52 h] | 36,684 | 36,684 | 003 |
| 100060 |  | Equipment list for WNA Plant | 54d | 2016-12-15 A | 2017-03-01 A | 100080 FF | 100% |  | 2017-03-01 | 2017-05-15 |  |  | start on 2016-12-15 | MH-Wtg [61.14 h] | 27,513 | 27,513 | 001 |
| 100061 |  | Equipment list for CNA Plants | 22d | 2016-12-15 A | 2017-02-24 A | 100081 | 100% |  | 2017-04-17 | 2017-05-16 |  |  | start on 2016-12-15 | MH-Wtg [24.46 h] | 11,007 | 11,007 | 002 |
| 100070 |  | Utility consumer list for WNA Plant | 27d | 2017-01-23 A | 2017-03-08 A | 100060 FF | 100% |  | 2017-04-07 | 2017-05-15 |  |  | start on 2017-01-23 | MH-Wtg [81.52 h] | 36,684 | 36,684 | 001 |
| 100051 |  | Preparation of PFD/UFD for Offsites & Utilities | 26d | 2017-01-27 A | 2017-03-17 A | 100050.1 FF | 100% |  | 2017-04-24 | 2017-05-29 |  |  | start on 2017-01-27 | MH-Wtg [326.08 h] | 146,736 | 146,736 | 003 |
| 100190 |  | Utility consumer list for CNA Plants | 23d | 2017-01-27 A | 2017-03-08 A | 100061, 100070 FF | 100% |  | 2017-05-17 | 2017-06-16 |  |  | start on 2017-01-27 | MH-Wtg [32.61 h] | 14,675 | 14,675 | 002 |
| 100050.2 |  | Concept note for ammonia tanker unloading | 12d | 2017-02-10 A | 2017-04-07 A |  | 100% |  | 2017-03-01 | 2017-03-16 |  |  | start on 2017-02-10 | MH-Wtg [40.76 h] | 18,342 | 18,342 | 003 |
| 100062 |  | Equipment list for Offsites & Utilites | 8d | 2017-02-28 A | 2017-03-01 A | 100051 FF | 100% |  | 2017-05-18 | 2017-05-29 |  |  |  | MH-Wtg [36.68 h] | 16,506 | 16,506 | 003 |
| 100191 |  | Utility consumer list for Offistes & Utilities | 5d | 2017-03-07 A | 2017-03-29 A | 100062 | 100% |  | 2017-05-15 | 2017-05-19 |  |  |  | MH-Wtg [48.91 h] | 22,010 | 22,010 | 003 |
|  | 2 | **Detail Documents** |  | 2016-12-23 | 2018-08-14 |  |  |  |  |  |  |  |  |  |  |  |  |
| 100081 |  | Updating P&IDs for CNA Plants | 33d | 2016-12-23 A | 2017-03-03 A |  | 100% |  | 2017-03-01 | 2017-04-14 |  |  | start on 2016-12-23 | MH-Wtg [61.14 h] | 27,513 | 27,513 | 002 |
| 100080 |  | Updating P&IDs for WNA Plant | 44d | 2016-12-29 A | 2017-07-31 A |  | 100% |  | 2017-03-01 | 2017-05-01 |  |  | start on 2016-12-29 | MH-Wtg [61.14 h] | 27,513 | 27,513 | 001 |
| 100130 |  | Hydraulic calculations for WNA Plant | 22d | 2016-12-29 A | 2017-01-23 A | 100080 | 100% |  | 2017-05-15 | 2017-06-13 |  |  |  | MH-Wtg [146.74 h] | 66,033 | 66,033 | 003 |
| 100091 |  | Datasheets for Offsite fabricated equipments | 30d | 2017-02-28 A | 2017-08-21 A | 100060 SS-3d | 100% |  | 2017-04-27 | 2017-06-07 |  |  |  | MH-Wtg [489.12 h] | 220,104 | 220,104 | 003 |
| 100090 |  | Preparation of P&IDs for Offsite & Utilities | 23d | 2017-03-17 A | 2017-06-30 A | 100051 FS-15d, 100050.2 FF | 100% |  | 2017-05-01 | 2017-05-31 |  |  |  | MH-Wtg [855.96 h] | 385,182 | 385,182 | 003 |
| 101350 |  | Hydarulic calculations for Offsites & Utilities | 20d | 2017-03-17 A | 2017-03-21 A | 100090 FF | 100% |  | 2017-05-19 | 2017-06-15 |  |  |  | MH-Wtg [97.82 h] | 44,019 | 44,019 | 003 |
| 100110 |  | Preparation of Process interlock list | 11d | 2017-03-29 A | 2017-06-28 A | 100080, 100081, 100090 FF | 100% |  | 2017-04-17 | 2017-05-01 |  |  |  | MH-Wtg [244.56 h] | 110,052 | 110,052 | 003 |
| 100120 |  | Line list for WNA Plant | 15d | 2017-04-01 A | 2017-07-13 A | 100121 FF | 100% |  | 2017-04-11 | 2017-05-01 |  |  |  | MH-Wtg [73.37 h] | 33,017 | 33,017 | 001 |
| 100121 |  | Line list for CNA Plants | 8d | 2017-04-01 A | 2017-06-30 A | 100081 | 100% |  | 2017-04-20 | 2017-05-01 |  |  |  | MH-Wtg [48.91 h] | 22,010 | 22,010 | 002 |
| 100100 |  | Datasheet for WNA Plant fabricated equipments | 20d | 2017-04-13 A | 2017-09-08 A |  | 100% |  | 2017-04-03 | 2017-04-28 |  |  |  | MH-Wtg [122.28 h] | 55,026 | 55,026 | 001 |
| 100122 |  | Line list for Offsites & Utilities | 12d | 2017-06-30 A | 2017-06-30 A | 100090 FF | 100% |  | 2017-06-20 | 2017-07-05 |  |  |  | MH-Wtg [122.28 h] | 55,026 | 55,026 | 003 |
| 101350.1 |  | Hazop study | 15d | 2017-09-26 A | 2017-10-06 A | 100080, 100081, 100090 | 100% |  | 2017-09-26 | 2017-10-16 |  |  | start on or after 2017-09-25 | MH-Wtg [48.91 h] | 22,010 | 22,010 | 003 |
| 100100.1 |  | ESS & ESD for additional scope (MOM-078) equipments | 1d | 2017-12-05 A | 2017-12-05 A |  | 100% |  | 2017-12-01 | 2017-12-01 |  |  |  |  |  |  | 003 |
| 101350.2 |  | Hazardous material handling procedure (Deleted) | 10d | 2018-08-01 | 2018-08-14 | 100340 |  |  |  |  | 52173.9d |  | finish on or after 2017-09-15 | MH-Wtg |  |  | 003 |
| 101350.3 |  | Coal handling procedure (Deleted) | 9d | 2018-08-01 | 2018-08-13 | 100340 |  |  |  |  | 52174.9d |  | finish on or after 2017-08-16 | MH-Wtg |  |  | 003 |

| ID | WBS | Activity | Duration | Start | Finish | Predecessors | Complete | Planned start | Planned finish | Total float | Constraint | Resources | Cost | Actual cost | UNIT DESCRIPTION |
| --- | --- | --- | --- | --- | --- | --- | --- | --- | --- | --- | --- | --- | --- | --- | --- |
|  | 3 | **Enquiry/Tenders** |  | 2016-12-02 | 2018-08-21 |  |  |  |  |  |  |  |  |  |  |
| 100180 |  | Enquiry for Boiler package (Deleted) | 39d | 2016-12-02 A | 2017-01-25 A |  | 100% | 2017-03-01 | 2017-04-24 |  | start on 2016-12-02 | MH-Wtg |  |  | 003 |
| 100160 |  | Enquiry for Cooling tower package | 58d | 2016-12-09 A | 2017-02-28 A |  | 100% | 2017-03-01 | 2017-05-19 |  | start on 2016-12-09 | MH-Wtg [390.52 h] | 175,734 | 175,734 | 003 |
| 100150 |  | Enquiry for Raw water treatment plant | 19d | 2016-12-28 A | 2017-01-23 A |  | 100% | 2017-03-01 | 2017-03-27 |  | start on 2016-12-28 | MH-Wtg [390.52 h] | 175,734 | 175,734 | 003 |
| 100320 |  | Enquiry for Chiller unit | 19d | 2016-12-28 A | 2017-01-23 A |  | 100% | 2017-03-01 | 2017-03-27 |  | start on 2016-12-28 | MH-Wtg [146.44 h] | 65,898 | 65,898 | 003 |
| 100290 |  | Enquiry for Agitators | 10d | 2017-01-16 A | 2017-01-31 A | 100280 | 100% | 2017-05-08 | 2017-05-19 |  |  | MH-Wtg [25 h] | 11,250 | 11,250 | 002 |
| 100241 |  | Enquiry for API pumps- CNA Plants | 14d | 2017-01-27 A | 2017-03-28 A | 100240 SS | 100% | 2017-04-17 | 2017-05-04 |  |  | MH-Wtg [97.63 h] | 43,934 | 43,934 | 002 |
| 100170 |  | Enquiry for DM plant | 29d | 2017-02-02 A | 2017-03-06 A | 100300 | 100% | 2017-04-11 | 2017-05-19 |  | start on 2017-02-02 | MH-Wtg [146.44 h] | 65,898 | 65,898 | 003 |
| 100140 |  | Enquiry for Fire fighting package | 15d | 2017-02-13 A | 2017-02-22 A | 103410 | 100% | 2017-06-02 | 2017-06-22 |  |  | MH-Wtg [488.15 h] | 219,668 | 219,668 | 003 |
| 100410.1 |  | Enquiry for Ejectors | 8d | 2017-02-13 A | 2017-04-19 A |  | 100% | 2017-03-01 | 2017-03-10 |  | finish on or after 2017-02-13 | MH-Wtg [122.04 h] | 54,918 | 54,918 | 002 |
| 100270 |  | Enquiry for Metering pumps | 10d | 2017-02-15 A | 2017-08-23 A | 100290 | 100% | 2017-06-26 | 2017-07-07 |  |  | MH-Wtg [97.63 h] | 43,934 | 43,934 | 003 |
| 100300 |  | Enquiry for Air compressor | 10d | 2017-02-28 A | 2017-04-26 A | 100150 | 100% | 2017-03-28 | 2017-04-10 |  | finish on or after 2017-02-28 | MH-Wtg [146.44 h] | 65,898 | 65,898 | 003 |
| 100310 |  | Enquiry for Air drier | 10d | 2017-02-28 A | 2017-04-26 A | 100300 FF | 100% | 2017-03-28 | 2017-04-10 |  |  | MH-Wtg [97.63 h] | 43,934 | 43,934 | 003 |
| 100260 |  | Enquiry for Cooling water pumps | 10d | 2017-03-21 A | 2017-05-24 A | 100160 | 100% | 2017-05-01 | 2017-05-12 |  |  | MH-Wtg [244.07 h] | 109,832 | 109,832 | 003 |
| 100240 |  | Enquiry for Non-API pumps- WNA Plant | 14d | 2017-03-30 A | 2017-04-28 A | 100130 SS | 100% | 2017-04-17 | 2017-05-04 |  |  | MH-Wtg [195 h] | 87,750 | 87,750 | 001 |
| 100181 |  | Enquiry CPP Package (By DFPCL) | 1d | 2017-04-07 A | 2017-07-27 A |  | 100% | 2017-09-01 | 2017-09-01 |  |  |  |  |  | 003 |
| 100200 |  | Enquiry for ETP package | 15d | 2017-04-18 A | 2017-05-08 A | 100170 FS-4d | 100% | 2017-04-03 | 2017-04-21 |  |  | MH-Wtg [390.52 h] | 175,734 | 175,734 | 003 |
| 100410.7 |  | Enquiry for Deareator | 10d | 2017-04-28 A | 2017-05-17 A |  | 100% | 2017-04-25 | 2017-05-08 |  | finish on or after 2017-05-08 |  |  |  | 001 |
| 100410.4 |  | Enquiry for Filters | 8d | 2017-05-06 A | 2017-05-31 A |  | 100% | 2017-05-01 | 2017-05-10 |  | finish on or after 2017-04-28 |  |  |  | 001 |
| 100410.3 |  | Enquiry for Inlet air filter | 10d | 2017-05-17 A | 2017-05-22 A |  | 100% | 2017-05-01 | 2017-05-12 |  | finish on or after 2017-04-25 |  |  |  | 001 |
| 100250 |  | Enquiry for Non-API pumps | 15d | 2017-05-30 A | 2017-05-30 A | 101350 SS | 100% | 2017-04-21 | 2017-05-11 |  |  | MH-Wtg [586 h] | 263,700 | 263,700 | 003 |
| 100220 |  | Enquiry for Side stream filter package | 10d | 2017-06-01 A | 2017-06-09 A | 100260 | 100% | 2017-05-15 | 2017-05-26 |  | finish on or after 2017-04-12 | MH-Wtg [73.22 h] | 32,949 | 32,949 | 003 |
| 100411 |  | Enquiry for De-alkalizer | 8d | 2017-06-01 A | 2017-06-09 A |  | 100% | 2017-05-04 | 2017-05-15 |  | finish on or after 2017-05-15 |  |  |  | 003 |
| 100411.1 |  | Enquiry for Ammonia compressor | 12d | 2017-06-23 A | 2017-08-03 A | 100050.2 | 100% | 2017-06-01 | 2017-06-16 |  | finish on or after 2017-06-15 |  |  |  | 003 |
| 100230 |  | Enquiry for Chlorination package | 10d | 2017-07-07 A | 2017-07-28 A | 100220 | 100% | 2017-08-16 | 2017-08-29 |  |  | MH-Wtg [24 h] | 10,800 | 10,800 | 003 |
| 100410.2 |  | Enquiry for Ammonia scrubber | 10d | 2017-07-28 A | 2017-08-04 A | 100050.2 | 100% | 2017-08-01 | 2017-08-14 |  | finish on or after 2017-06-20 | MH-Wtg [122.04 h] | 54,918 | 54,918 | 003 |
| 100280 |  | Enquiry for Extended shaft pumps | 10d | 2017-08-02 A | 2017-09-01 A | 100250 | 100% | 2017-08-01 | 2017-08-14 |  | finish on or after 2017-07-15 | MH-Wtg [75 h] | 33,750 | 33,750 | 003 |
| 100410.6 |  | Enquiry for Mist separator | 5d | 2017-08-08 A | 2017-08-10 A |  | 100% | 2017-09-01 | 2017-09-07 |  | finish on or after 2017-07-25 |  |  |  | 001 |
| 100411.4 |  | Enquiry for PFA lined pumps | 5d | 2017-08-08 A | 2017-08-09 A |  | 100% | 2017-09-01 | 2017-09-07 |  | finish on or after 2017-08-04 |  |  |  | 003 |
| 100340 |  | Enquiry for Non-metallic tanks | 10d | 2017-08-10 A | 2017-08-10 A | 100350 FS-2d | 100% | 2017-10-11 | 2017-10-24 |  | finish on or after 2017-11-01 | MH-Wtg [10 h] | 4,500 | 4,500 | 003 |
| 100350 |  | Enquiry for Safety shower/Eye wash | 10d | 2017-08-10 A | 2017-08-10 A | 100410 | 100% | 2017-09-29 | 2017-10-12 |  | finish on or after 2017-10-01 | MH-Wtg [10 h] | 4,500 | 4,500 | 001 |
| 100411.2 |  | Enquiry for Packing/Internals | 10d | 2017-08-14 A | 2017-08-16 A | A113460.1 FS-150d | 100% | 2017-11-10 | 2017-11-23 |  |  |  |  |  | 002 |
| 100360 |  | Enquiry for Loading arms | 10d | 2017-08-18 A | 2017-08-18 A | 100370 | 100% | 2017-09-15 | 2017-09-28 |  |  | MH-Wtg [15 h] | 6,750 | 6,750 | 003 |
| 100370 |  | Enquiry for Desuperheater | 10d | 2017-08-18 A | 2017-09-02 A | 100290 | 100% | 2017-09-01 | 2017-09-14 |  | finish on or after 2017-07-20 | MH-Wtg [20 h] | 9,000 | 9,000 | 003 |
| 100411.9.1 |  | Enquiry for Platinum filter (Internals) | 8d | 2017-08-18 A | 2017-08-24 A |  | 100% | 2017-09-01 | 2017-09-12 |  | finish on or after 2017-08-16 |  |  |  | 001 |
| 100410.8 |  | Enquiry for Vacuum jet | 5d | 2017-08-21 A | 2017-08-28 A |  | 100% | 2017-09-01 | 2017-09-07 |  | finish on or after 2017-06-23 |  |  |  | 001 |
| 100411.9.2 |  | Enquiry for Rotary vane pumps | 10d | 2017-08-23 A | 2017-09-06 A | 100411.1 FF | 100% | 2017-09-05 | 2017-09-18 |  |  |  |  |  | 003 |
| 100411.9.3 |  | Enquiry for Ammonia transfer pumps | 10d | 2017-08-23 A | 2017-09-22 A | 100411.9.2 FF | 100% | 2017-09-05 | 2017-09-18 |  |  |  |  |  | 003 |
| 100410 |  | Enquiry for EOT Cranes | 10d | 2017-08-28 A | 2017-08-28 A | 100370 | 100% | 2017-09-15 | 2017-09-28 |  |  | MH-Wtg [24.41 h] | 10,985 | 10,985 | 001 |
| 100411.3 |  | Enquiry for Surface condenser pump | 5d | 2017-08-29 A | 2017-09-05 A |  | 100% | 2017-09-01 | 2017-09-07 |  | finish on or after 2017-08-21 |  |  |  | 001 |
| 100411.7 |  | Enquiry for Inlet air silencer | 5d | 2017-08-29 A | 2017-08-29 A |  | 100% | 2017-09-01 | 2017-09-07 |  |  |  |  |  | 001 |
| 100411.8 |  | Enquiry for Lift (CNA) | 10d | 2017-08-29 A | 2017-08-29 A |  | 100% | 2017-09-01 | 2017-09-14 |  | finish on or after 2017-08-25 |  |  |  | 002 |
| 100411.5 |  | Enquiry for Lube oil pumps | 5d | 2017-08-30 A | 2017-08-30 A |  | 100% | 2017-09-01 | 2017-09-07 |  |  |  |  |  | 001 |
| 100411.9 |  | Enquiry for Chemical skids | 10d | 2017-08-31 A | 2017-08-31 A |  | 100% | 2017-09-01 | 2017-09-14 |  |  |  |  |  | 001 |
| 100411.6 |  | Enquiry for Lube filters | 5d | 2017-09-01 A | 2017-09-02 A |  | 100% | 2017-09-01 | 2017-09-07 |  |  |  |  |  | 001 |
| 100411.9.4 |  | Enquiry for Silica gel | 1d | 2017-09-02 A | 2017-09-02 A |  | 100% | 2017-09-01 | 2017-09-01 |  | finish on or after 2017-11-01 |  |  |  | 003 |
| 100411.9.5 |  | Enquiry for Condensate transfer pumps | 1d | 2017-09-05 A | 2017-09-05 A |  | 100% | 2017-09-25 | 2017-09-25 |  | finish on or after 2017-09-05 |  |  |  | 003 |
| 100210 |  | Enquiry for HVAC package | 10d | 2017-09-15 A | 2017-09-18 A | 100320, 102300 FS-22d | 100% | 2017-09-01 | 2017-09-14 |  | finish on or after 2017-07-10 | MH-Wtg [75 h] | 33,750 | 33,750 | 003 |
| 100410.5 |  | Enquiry for Mixer | 8d | 2017-09-18 A | 2017-09-22 A |  | 100% | 2017-09-01 | 2017-09-12 |  |  |  |  |  | 001 |
| 100411.9.6 |  | Enquiry for Ammonia effluent transfer pumps (Mobile) | 8d | 2017-11-10 A | 2017-11-10 A |  | 100% | 2017-11-01 | 2017-11-10 |  | finish on or after 2017-11-10 |  |  |  | 003 |
| A126880 |  | Enquiry for Pressure vacuum relief valve | 1d | 2018-01-19 A | 2018-01-19 A |  | 100% | 2018-03-01 | 2018-03-01 |  |  |  |  |  | 001 |
| A126890 |  | Enquiry for PRDS | 1d | 2018-03-12 A | 2018-03-12 A |  | 100% | 2018-03-01 | 2018-03-01 |  |  |  |  |  | 003 |
| 100242 |  | Enquiry for API pumps- Offsite & Utilities (Deleted) | 12d | 2018-08-01 | 2018-08-16 | 101350 SS |  |  |  | 52171.9d |  | MH-Wtg |  |  | 003 |
| 100330 |  | Enuiry for Plate type exchangers (Deleted) | 15d | 2018-08-01 | 2018-08-21 | 100080 FF |  |  |  | 52168.9d |  | MH-Wtg |  |  | 003 |
| 100380 |  | Enquiry for Flame arrestors (Deleted) | 10d | 2018-08-01 | 2018-08-14 |  |  |  |  | 52173.9d |  | MH-Wtg |  |  | 003 |
| 100390 |  | Enquiry for Breather valves (Deleted) | 10d | 2018-08-01 | 2018-08-14 |  |  |  |  | 52173.9d |  | MH-Wtg |  |  | 003 |
| 100400 |  | Enquiry for NG station (Deleted) | 10d | 2018-08-01 | 2018-08-14 | 100370 |  |  |  | 52173.9d |  | MH-Wtg |  |  | 003 |
| 100410.9 |  | Enquiry for Roof vent fan (Deleted) | 5d | 2018-08-01 | 2018-08-07 | 100410 |  |  |  | 52178.9d |  |  |  |  | 001 |

Notes:
- 100290: Explanation: Along with MGN Solution tank

| ID | WBS | Activity | Duration | Start | Finish | Predecessors | Complete | Planned start | Planned finish | Constraint | Resources | Cost | Actual cost | UNIT DESCRIPTION |
| --- | --- | --- | --- | --- | --- | --- | --- | --- | --- | --- | --- | --- | --- | --- |
|  | 2 | **Civil & Structural** |  | 2016-10-17 | 2018-10-01 |  |  |  |  |  |  |  |  |  |
|  | 1 | **Basic Documents** |  | 2016-10-17 | 2017-11-07 |  |  |  |  |  |  |  |  |  |
| 100420 |  | Design basis | 1d | 2016-10-17 A | 2016-10-17 A | 000001 | 100% | 2017-03-01 | 2017-03-01 | start on 2016-10-17 | MH-Wtg [58.23 h] | 26,204 | 26,204 | 003 |
| 100430 |  | Drawings for statutory approval | 1d | 2016-11-21 A | 2017-02-09 A | 103410 | 100% | 2017-06-02 | 2017-06-02 | start on 2016-11-21 | MH-Wtg [310.55 h] | 139,748 | 139,748 | 003 |
| 100440 |  | Standard drawings | 15d | 2017-08-22 A | 2017-11-07 A | 100500 FF | 100% | 2017-09-15 | 2017-10-05 |  | MH-Wtg [38.82 h] | 17,469 | 17,469 | 003 |
|  | 2 | **Detail Documents** |  | 2016-12-02 | 2018-10-01 |  |  |  |  |  |  |  |  |  |
|  | 1 | **B101- WNA Plant** |  | 2017-05-30 | 2018-07-05 |  |  |  |  |  |  |  |  |  |
|  | 1 | **Civil Concrete Drawings (CCD)** |  | 2017-05-30 | 2018-06-07 |  |  |  |  |  |  |  |  |  |
| 100450 |  | Piling details | 15d | 2017-05-30 A | 2017-06-21 A | 103440 SS, 100030 | 100% | 2017-05-08 | 2017-05-26 | finish on or after 2017-05-26 | MH-Wtg [105.89 h] | 47,651 | 47,651 | 001 |
| 100460 |  | Foundation & column details | 15d | 2017-06-30 A | 2018-01-18 A | 100450 | 100% | 2017-06-22 | 2017-07-12 |  | MH-Wtg [63.53 h] | 28,589 | 28,589 | 001 |
| 100470 |  | Plinth beam details | 10d | 2017-06-30 A | 2017-07-03 A | 100460 | 100% | 2017-07-13 | 2017-07-26 |  | MH-Wtg [42.35 h] | 19,058 | 19,058 | 001 |
| 100490 |  | Equipment foundation details | 20d | 2017-06-30 A | 2018-06-07 A | 100470, 112930 FF+15d, 113100.4 FF+15d | 100% | 2017-08-01 | 2017-08-29 |  | MH-Wtg [127.06 h] | 57,177 | 57,177 | 001 |
| 100480 |  | Grade slab details | 20d | 2017-11-30 A | 2018-04-20 A | 100490 FF | 100% | 2017-11-01 | 2017-11-28 |  | MH-Wtg [84.71 h] | 38,120 | 38,120 | 001 |
|  | 2 | **Civil Structural Drawings (CSD)** |  | 2017-06-03 | 2018-07-05 |  |  |  |  |  |  |  |  |  |
| 100500 |  | Steel framing plan | 25d | 2017-06-03 A | 2018-07-05 A | 100460 FF, 100490 FF | 100% | 2017-08-16 | 2017-09-19 |  | MH-Wtg [112.95 h] | 50,828 | 50,828 | 001 |
| 100510 |  | Elevation & section details | 20d | 2017-06-03 A | 2018-07-05 A | 100500 FF | 100% | 2017-09-20 | 2017-10-17 |  | MH-Wtg [84.71 h] | 38,120 | 38,120 | 001 |
| 100520 |  | Staircase details | 15d | 2017-06-03 A | 2017-08-12 A | 100510 | 100% | 2017-10-18 | 2017-11-07 |  | MH-Wtg [56.47 h] | 25,412 | 25,412 | 001 |
| 100530 |  | Roof details | 10d | 2017-06-03 A | 2017-06-03 A | 100520 | 100% | 2017-11-08 | 2017-11-21 |  | MH-Wtg [28.24 h] | 12,708 | 12,708 | 001 |
|  | 2 | **B102A- CNA Plant-1** |  | 2017-02-28 | 2017-11-23 |  |  |  |  |  |  |  |  |  |
|  | 1 | **Civil Concrete Drawings (CCD)** |  | 2017-02-28 | 2017-11-23 |  |  |  |  |  |  |  |  |  |
| 100540 |  | Piling details | 15d | 2017-02-28 A | 2017-05-19 A | 100030 | 100% | 2017-07-11 | 2017-07-31 |  | MH-Wtg [83.93 h] | 37,769 | 37,769 | 002 |
| 100550 |  | Foundation & column details | 10d | 2017-02-28 A | 2017-08-12 A | 100540 | 100% | 2017-08-01 | 2017-08-14 |  | MH-Wtg [52.46 h] | 23,607 | 23,607 | 002 |
| 100560 |  | Plinth beam details | 10d | 2017-02-28 A | 2017-06-30 A | 100550 | 100% | 2017-08-16 | 2017-08-29 |  | MH-Wtg [31.47 h] | 14,162 | 14,162 | 002 |
| 100580 |  | Equipment foundation details | 15d | 2017-06-08 A | 2017-11-23 A | 100560, 112931 FF+15d | 100% | 2017-09-15 | 2017-10-05 |  | MH-Wtg [20.98 h] | 9,441 | 9,441 | 002 |
| 100570 |  | Grade slab details | 10d | 2017-07-21 A | 2017-08-12 A | 100580 | 100% | 2017-09-06 | 2017-09-19 |  | MH-Wtg [20.98 h] | 9,441 | 9,441 | 002 |

Notes:
- 100450: Explanation: Revised layout for Converter cone and Vertical gas / heater from Weatherly is expected with in 2 weeks after 6.Apr.17

| ID | WBS | Activity | Duration | Start | Finish | Predecessors | Complete | Planned start | Planned finish | Resources | Cost | Actual cost | UNIT DESCRIPTION |
| --- | --- | --- | --- | --- | --- | --- | --- | --- | --- | --- | --- | --- | --- |
|  | 2 | **Civil Structural Drawings (CSD)** |  | 2017-03-01 | 2017-09-11 |  |  |  |  |  |  |  |  |
| 100610 |  | Updating staircase details | 15d | 2017-03-01 A | 2017-08-02 A | 100600 | 100% | 2017-08-16 | 2017-09-05 | MH-Wtg [27.98 h] | 12,591 | 12,591 | 002 |
| 100590 |  | Updating steel framing plan | 25d | 2017-05-19 A | 2017-09-11 A | 100560 | 100% | 2017-08-29 | 2017-10-02 | MH-Wtg [55.96 h] | 25,182 | 25,182 | 002 |
| 100600 |  | Updating elevation & section details | 20d | 2017-05-19 A | 2017-09-11 A | 100590 | 100% | 2017-10-03 | 2017-10-30 | MH-Wtg [41.97 h] | 18,887 | 18,887 | 002 |
| 100620 |  | Updating roof details | 10d | 2017-05-19 A | 2017-09-11 A | 100610 | 100% | 2017-09-06 | 2017-09-19 | MH-Wtg [13.99 h] | 6,296 | 6,296 | 002 |
|  | 3 | **B102B- CNA Plant-2** |  | 2017-02-28 | 2017-11-23 |  |  |  |  |  |  |  |  |
|  | 1 | **Civil Concrete Drawings (CCD)** |  | 2017-02-28 | 2017-11-23 |  |  |  |  |  |  |  |  |
| 100630 |  | Piling details | 15d | 2017-02-28 A | 2017-05-19 A | 100540 SS | 100% | 2017-07-11 | 2017-07-31 | MH-Wtg [83.93 h] | 37,769 | 37,769 | 002 |
| 100640 |  | Foundation & column details | 10d | 2017-02-28 A | 2017-08-12 A | 100630 | 100% | 2017-08-01 | 2017-08-14 | MH-Wtg [52.46 h] | 23,607 | 23,607 | 002 |
| 100650 |  | Plinth beam details | 10d | 2017-02-28 A | 2017-06-30 A | 100640 | 100% | 2017-08-16 | 2017-08-29 | MH-Wtg [31.47 h] | 14,162 | 14,162 | 002 |
| 100670 |  | Equipment foundation details | 15d | 2017-06-08 A | 2017-11-23 A | 100650 | 100% | 2017-09-15 | 2017-10-05 | MH-Wtg [20.98 h] | 9,441 | 9,441 | 002 |
| 100660 |  | Grade slab details | 10d | 2017-07-21 A | 2017-08-31 A | 100670 | 100% | 2017-09-06 | 2017-09-19 | MH-Wtg [20.98 h] | 9,441 | 9,441 | 002 |
|  | 2 | **Civil Structural Drawings (CSD)** |  | 2017-03-01 | 2017-09-11 |  |  |  |  |  |  |  |  |
| 100700 |  | Updating staircase details | 15d | 2017-03-01 A | 2017-08-02 A | 100690 | 100% | 2017-08-16 | 2017-09-05 | MH-Wtg [27.98 h] | 12,591 | 12,591 | 002 |
| 100680 |  | Updating steel framing plan | 25d | 2017-05-19 A | 2017-09-11 A | 100590 SS | 100% | 2017-08-29 | 2017-10-02 | MH-Wtg [55.96 h] | 25,182 | 25,182 | 002 |
| 100690 |  | Updating elevation & section details | 20d | 2017-05-19 A | 2017-09-11 A | 100680 | 100% | 2017-10-03 | 2017-10-30 | MH-Wtg [41.97 h] | 18,887 | 18,887 | 002 |
| 100710 |  | Updating roof details | 10d | 2017-05-19 A | 2017-09-11 A | 100700 | 100% | 2017-09-06 | 2017-09-19 | MH-Wtg [13.99 h] | 6,296 | 6,296 | 002 |
|  | 4 | **B103A- WNA Storage Tanks** |  | 2017-05-04 | 2018-01-11 |  |  |  |  |  |  |  |  |
|  | 1 | **Civil Concrete Drawings (CCD)** |  | 2017-05-04 | 2018-01-11 |  |  |  |  |  |  |  |  |
| 100720 |  | Equipment foundation details | 23d | 2017-05-04 A | 2017-05-04 A | 103660, 100030 | 100% | 2017-05-01 | 2017-05-31 | MH-Wtg [115.41 h] | 51,935 | 51,935 | 003 |
| 100740 |  | Grade slab & dyke wall details | 15d | 2017-05-04 A | 2018-01-11 A | 100730, 112940 FF+15d | 100% | 2017-06-15 | 2017-07-05 | MH-Wtg [57.7 h] | 25,965 | 25,965 | 003 |
| 100730 |  | Foundation & column details | 10d | 2017-10-31 A | 2017-11-01 A | 100720 | 100% | 2017-10-02 | 2017-10-13 | MH-Wtg [19.23 h] | 8,654 | 8,654 | 003 |
|  | 2 | **Civil Structural Drawings (CSD)** |  | 2017-10-31 | 2017-11-01 |  |  |  |  |  |  |  |  |
| 100750 |  | Steel framing plan | 15d | 2017-10-31 A | 2017-11-01 A | 100730 | 100% | 2017-10-16 | 2017-11-03 | MH-Wtg [12.82 h] | 5,769 | 5,769 | 003 |
| 100760 |  | Elevation & section details | 10d | 2017-10-31 A | 2017-11-01 A | 100750 | 100% | 2017-11-06 | 2017-11-17 | MH-Wtg [6.41 h] | 2,885 | 2,885 | 003 |
| 100770 |  | Staircase details | 8d | 2017-10-31 A | 2017-11-01 A | 100760 | 100% | 2017-11-20 | 2017-11-29 | MH-Wtg [2.14 h] | 963 | 963 | 003 |

| ID | WBS | Activity | Duration | Start | Finish | Predecessors | Complete | Planned start | Planned finish | Total float | Constraint | Resources | Cost | Actual cost | UNIT DESCRIPTION |
| --- | --- | --- | --- | --- | --- | --- | --- | --- | --- | --- | --- | --- | --- | --- | --- |
|  | 41 | **B103B- CNA Storage Tanks** |  | 2017-05-04 | 2018-05-30 |  |  |  |  |  |  |  |  |  |  |
|  | 1 | **Civil Concrete Drawings (CCD)** |  | 2017-05-12 | 2018-05-30 |  |  |  |  |  |  |  |  |  |  |
| 101550 |  | Equipment foundation details | 23d | 2017-05-12 A | 2017-05-12 A | 105240, 100030 | 100% | 2017-05-01 | 2017-05-31 |  |  | MH-Wtg [115.41 h] | 51,935 | 51,935 | 003 |
| 101560 |  | Foundation & column details | 10d | 2017-05-12 A | 2017-05-12 A | 101550 | 100% | 2017-06-01 | 2017-06-14 |  |  | MH-Wtg [19.23 h] | 8,654 | 8,654 | 003 |
| 101570 |  | Grade slab & dyke wall details | 15d | 2017-05-12 A | 2018-05-30 A | 101560, 113101.4 FF+15d | 100% | 2017-06-15 | 2017-07-05 |  |  | MH-Wtg [57.7 h] | 25,965 | 25,965 | 003 |
|  | 2 | **Civil Structural Drawings (CSD)** |  | 2017-05-04 | 2017-05-04 |  |  |  |  |  |  |  |  |  |  |
| 101580 |  | Steel framing plan | 15d | 2017-05-04 A | 2017-05-04 A | 101560 | 100% | 2017-08-08 | 2017-08-29 |  |  | MH-Wtg [50 h] | 22,500 | 22,500 | 003 |
| 101590 |  | Elevation & section details | 10d | 2017-05-04 A | 2017-05-04 A | 101580 | 100% | 2017-08-30 | 2017-09-12 |  |  | MH-Wtg [20 h] | 9,000 | 9,000 | 003 |
| 101600 |  | Staircase details | 8d | 2017-05-04 A | 2017-05-04 A | 101590 | 100% | 2017-09-13 | 2017-09-22 |  |  | MH-Wtg [15 h] | 6,750 | 6,750 | 003 |
| 101980 |  | Roof details | 5d | 2017-05-04 A | 2017-05-04 A | 101600 | 100% | 2017-09-25 | 2017-09-29 |  |  |  |  |  | 003 |
|  | 46 | **B103C- WWS Storage Tanks** |  | 2017-05-10 | 2018-07-16 |  |  |  |  |  |  |  |  |  |  |
|  | 1 | **Civil Concrete Drawings (CCD)** |  | 2017-05-10 | 2018-07-16 |  |  |  |  |  |  |  |  |  |  |
| 101850 |  | Equipment foundation details | 15d | 2017-05-10 A | 2017-05-10 A | 105510, 100030 | 100% | 2017-05-11 | 2017-05-31 |  |  | MH-Wtg [38.47 h] | 17,312 | 17,312 | 003 |
| 101860 |  | Foundation & column details | 10d | 2017-05-10 A | 2017-05-10 A | 101850 | 100% | 2017-06-01 | 2017-06-14 |  |  | MH-Wtg [6.41 h] | 2,885 | 2,885 | 003 |
| 102180 |  | Grade slab & dyke wall details | 15d | 2017-05-11 A | 2018-07-16 A | 101860, 112940 FF+15d | 100% | 2017-06-15 | 2017-07-05 |  |  | MH-Wtg [19.23 h] | 8,654 | 8,654 | 003 |
|  | 2 | **Civil Structural Drawings (CSD)** |  | 2017-07-25 | 2017-07-25 |  |  |  |  |  |  |  |  |  |  |
| 102190 |  | Steel framing plan | 12d | 2017-07-25 A | 2017-07-25 A | 101860 | 100% | 2017-08-08 | 2017-08-24 |  | start on or after 2017-06-25 | MH-Wtg [4.27 h] | 1,922 | 1,922 | 003 |
| 102200 |  | Elevation & section details | 10d | 2017-07-25 A | 2017-07-25 A | 102190 | 100% | 2017-08-25 | 2017-09-07 |  |  | MH-Wtg [2.14 h] | 963 | 963 | 003 |
| 102210 |  | Staircase details | 8d | 2017-07-25 A | 2017-07-25 A | 102200 | 100% | 2017-09-08 | 2017-09-19 |  |  | MH-Wtg [0.71 h] | 320 | 320 | 003 |
|  | 5 | **B103D- WNA Tanker Loading Bays** |  | 2017-08-23 | 2018-08-10 |  |  |  |  |  |  |  |  |  |  |
|  | 1 | **Civil Concrete Drawings (CCD)** |  | 2017-08-23 | 2018-08-10 |  |  |  |  |  |  |  |  |  |  |
| 100780 |  | Foundation & column details | 12d | 2017-08-23 A | 2017-08-23 A | 103860, 100740 | 100% | 2017-09-22 | 2017-10-09 |  |  | MH-Wtg [32 h] | 14,400 | 14,400 | 003 |
| 100800 |  | Grade slab details | 8d | 2017-08-23 A | 2017-08-23 A |  | 100% | 2017-10-20 | 2017-10-31 |  |  | MH-Wtg [3.63 h] | 1,634 | 1,634 | 003 |
| 100790 |  | Plinth beam details (Deleted) | 8d | 2018-08-01 | 2018-08-10 | 100780 |  |  |  | 52175.9d |  | MH-Wtg |  |  | 003 |

| ID | WBS | Activity | Duration | Start | Finish | Predecessors | Complete | Planned start | Planned finish | Total float | Resources | Cost | Actual cost | UNIT DESCRIPTION |
| --- | --- | --- | --- | --- | --- | --- | --- | --- | --- | --- | --- | --- | --- | --- |
|  | 2 | **Civil Structural Drawings (CSD)** |  | 2017-08-23 | 2017-08-23 |  |  |  |  |  |  |  |  |  |
| 100810 |  | Steel framing plan | 12d | 2017-08-23 A | 2017-08-23 A |  | 100% | 2017-10-20 | 2017-11-06 |  | MH-Wtg [7.77 h] | 3,497 | 3,497 | 003 |
| 100820 |  | Elevation & section details | 8d | 2017-08-23 A | 2017-08-23 A | 100810 | 100% | 2017-11-07 | 2017-11-16 |  | MH-Wtg [3.89 h] | 1,751 | 1,751 | 003 |
| 100830 |  | Staircase details | 8d | 2017-08-23 A | 2017-08-23 A | 100820 | 100% | 2017-11-17 | 2017-11-28 |  | MH-Wtg [1.55 h] | 698 | 698 | 003 |
| 100840 |  | Roof details | 8d | 2017-08-23 A | 2017-08-23 A | 100830 | 100% | 2017-11-29 | 2017-12-08 |  | MH-Wtg [2.33 h] | 1,049 | 1,049 | 003 |
|  | 49 | **B103E- CNA Tanker Loading Bays** |  | 2017-08-23 | 2018-08-10 |  |  |  |  |  |  |  |  |  |
|  | 1 | **Civil Concrete Drawings (CCD)** |  | 2017-08-23 | 2018-08-10 |  |  |  |  |  |  |  |  |  |
| 102220 |  | Foundation & column details | 12d | 2017-08-23 A | 2017-08-23 A | 106500, 101570 | 100% | 2017-09-08 | 2017-09-25 |  | MH-Wtg [32 h] | 14,400 | 14,400 | 003 |
| 102240 |  | Grade slab details | 8d | 2017-08-23 A | 2017-08-23 A |  | 100% | 2017-10-06 | 2017-10-17 |  | MH-Wtg [3.63 h] | 1,634 | 1,634 | 003 |
| 102230 |  | Plinth beam details (Deleted) | 8d | 2018-08-01 | 2018-08-10 | 102220 |  |  |  | 52175.9d | MH-Wtg |  |  | 003 |
|  | 2 | **Civil Structural Drawings (CSD)** |  | 2017-08-23 | 2017-08-23 |  |  |  |  |  |  |  |  |  |
| 102250 |  | Steel framing plan | 12d | 2017-08-23 A | 2017-08-23 A |  | 100% | 2017-10-06 | 2017-10-23 |  | MH-Wtg [7.77 h] | 3,497 | 3,497 | 003 |
| 102260 |  | Elevation & section details | 8d | 2017-08-23 A | 2017-08-23 A | 102250 | 100% | 2017-10-24 | 2017-11-02 |  | MH-Wtg [3.89 h] | 1,751 | 1,751 | 003 |
| 102270 |  | Staircase details | 8d | 2017-08-23 A | 2017-08-23 A | 102260 | 100% | 2017-11-03 | 2017-11-14 |  | MH-Wtg [1.55 h] | 698 | 698 | 003 |
| 102280 |  | Roof details | 8d | 2017-08-23 A | 2017-08-23 A | 102270 | 100% | 2017-11-15 | 2017-11-24 |  | MH-Wtg [2.33 h] | 1,049 | 1,049 | 003 |
|  | 6 | **B104A- Caustic, Sulphuric Storage** |  | 2017-05-10 | 2018-01-25 |  |  |  |  |  |  |  |  |  |
|  | 1 | **Civil Concrete Drawings (CCD)** |  | 2017-05-10 | 2018-01-25 |  |  |  |  |  |  |  |  |  |
| 100850 |  | Equipment foundation details | 23d | 2017-05-10 A | 2017-05-10 A | 104040, 100030 | 100% | 2017-05-01 | 2017-05-31 |  | MH-Wtg [99.73 h] | 44,879 | 44,879 | 003 |
| 100860 |  | Grade slab & dyke wall details | 20d | 2017-05-11 A | 2018-01-25 A | 100850, 112940 FF+15d | 100% | 2017-06-01 | 2017-06-28 |  | MH-Wtg [42.74 h] | 19,233 | 19,233 | 003 |
| 101990 |  | Staircase details | 1d | 2017-07-25 A | 2017-07-25 A |  | 100% | 2017-08-01 | 2017-08-01 |  |  |  |  | 003 |
|  | 7 | **B104B- HSD Storage (Deleted)** |  | 2018-08-01 | 2018-08-21 |  |  |  |  |  |  |  |  |  |
|  | 1 | **Civil Concrete Drawings (CCD)** |  | 2018-08-01 | 2018-08-21 |  |  |  |  |  |  |  |  |  |
| 100870 |  | Equipment foundation details (Deleted) | 15d | 2018-08-01 | 2018-08-21 | 100030 |  |  |  | 52168.9d | MH-Wtg |  |  | 003 |
| 100880 |  | Grade slab & dyke wall details (Deleted) | 10d | 2018-08-01 | 2018-08-14 |  |  |  |  | 52173.9d | MH-Wtg |  |  | 003 |

| ID | WBS | Activity | Duration | Start | Finish | Predecessors | Complete | Remaining | Planned start | Planned finish | Total float | Resources | Cost | Actual cost | UNIT DESCRIPTION |
| --- | --- | --- | --- | --- | --- | --- | --- | --- | --- | --- | --- | --- | --- | --- | --- |
|  | 8 | **B404C-Liquid NH3 Storage** |  | 2017-06-01 | 2018-08-07 |  |  |  |  |  |  |  |  |  |  |
|  | 1 | **Civil Concrete Drawings (CCD)** |  | 2017-06-01 | 2017-10-10 |  |  |  |  |  |  |  |  |  |  |
| 100890 |  | Equipment foundation details | 23d | 2017-06-01 A | 2017-10-10 A | 104400, 100030, 113101.1 FF+20d | 100% |  | 2017-05-01 | 2017-05-31 |  | MH-Wtg [63.47 h] | 28,562 | 28,562 | 003 |
| 100891 |  | Foundation & column details | 10d | 2017-06-01 A | 2017-10-10 A | 100890 FF | 100% |  | 2017-05-01 | 2017-05-12 |  |  |  |  | 003 |
| 100900 |  | Grade slab & dyke wall details | 20d | 2017-06-01 A | 2017-10-10 A | 100890 | 100% |  | 2017-06-01 | 2017-06-28 |  | MH-Wtg [27.2 h] | 12,240 | 12,240 | 003 |
|  | 2 | **Civil Structural Drawings (CSD)** |  | 2017-06-01 | 2018-08-07 |  |  |  |  |  |  |  |  |  |  |
| 112880 |  | Roof details (Deleted) | 8d | 2017-06-01 A | 2018-08-07 | 112520 | 38% | 5d | 2017-08-08 | 2017-08-18 | 52178.9d | MH-Wtg |  |  | 003 |
| 111570 |  | Steel framing plan | 5d | 2018-03-23 A | 2018-03-23 A | 100900 | 100% |  | 2018-03-01 | 2018-03-07 |  | MH-Wtg [20 h] | 9,000 | 9,000 | 003 |
| 112490 |  | Elevation & section details | 5d | 2018-03-23 A | 2018-03-23 A | 111570 FF | 100% |  | 2018-03-01 | 2018-03-07 |  | MH-Wtg [10 h] | 4,500 | 4,500 | 003 |
| 112520 |  | Staircase details | 5d | 2018-03-23 A | 2018-03-23 A | 112490 | 100% |  | 2018-03-08 | 2018-03-14 |  | MH-Wtg [15 h] | 6,750 | 6,750 | 003 |
|  | 50 | **B104D- Caustic, Sulphuric Tanker Loading Bays** |  | 2017-09-11 | 2017-09-11 |  |  |  |  |  |  |  |  |  |  |
|  | 1 | **Civil Concrete Drawings (CCD)** |  | 2017-09-11 | 2017-09-11 |  |  |  |  |  |  |  |  |  |  |
| 102930 |  | Grade slab details | 20d | 2017-09-11 A | 2017-09-11 A | 100860 | 100% |  | 2017-10-09 | 2017-11-03 |  | MH-Wtg [19.43 h] | 8,744 | 8,744 | 003 |
|  | 17 | **B104E- SNA** |  | 2017-05-10 | 2018-07-03 |  |  |  |  |  |  |  |  |  |  |
|  | 1 | **Civil Concrete Drawings (CCD)** |  | 2017-05-10 | 2018-07-03 |  |  |  |  |  |  |  |  |  |  |
| 101910 |  | Equipment foundation details | 15d | 2017-05-10 A | 2017-05-10 A | 113750 | 100% |  | 2017-05-01 | 2017-05-19 |  | MH-Wtg [38.47 h] | 17,312 | 17,312 | 003 |
| 101970 |  | Foundation & column details | 10d | 2017-05-10 A | 2017-05-10 A | 101910 | 100% |  | 2017-05-22 | 2017-06-02 |  | MH-Wtg [6.41 h] | 2,885 | 2,885 | 003 |
| 109200 |  | Grade slab & dyke wall details | 15d | 2017-05-10 A | 2018-07-03 A | 101970, 112940 FF+15d | 100% |  | 2017-06-05 | 2017-06-23 |  | MH-Wtg [19.23 h] | 8,654 | 8,654 | 003 |
|  | 2 | **Civil Structural Drawings (CSD)** |  | 2017-10-11 | 2017-10-11 |  |  |  |  |  |  |  |  |  |  |
| 109760 |  | Steel framing plan | 12d | 2017-10-11 A | 2017-10-11 A | 109200 | 100% |  | 2017-10-23 | 2017-11-07 |  | MH-Wtg [4.27 h] | 1,922 | 1,922 | 003 |
| 110040 |  | Elevation & section details | 10d | 2017-10-11 A | 2017-10-11 A | 109760 | 100% |  | 2017-11-08 | 2017-11-21 |  | MH-Wtg [2.14 h] | 963 | 963 | 003 |
| 111550 |  | Staircase details | 8d | 2017-10-11 A | 2017-10-11 A | 110040 | 100% |  | 2017-11-22 | 2017-12-01 |  | MH-Wtg [0.71 h] | 320 | 320 | 003 |
|  | 27 | **B104F- SNA Tanker Unloading** |  | 2017-08-23 | 2018-08-10 |  |  |  |  |  |  |  |  |  |  |
|  | 3 | **Civil Concrete Drawings (CCD)** |  | 2017-08-23 | 2018-08-10 |  |  |  |  |  |  |  |  |  |  |
| 101370 |  | Foundation & column details | 12d | 2017-08-23 A | 2017-08-23 A | 109200, 113980 | 100% |  | 2017-09-22 | 2017-10-09 |  | MH-Wtg [32 h] | 14,400 | 14,400 | 003 |
| 101390 |  | Grade slab details | 8d | 2017-08-23 A | 2017-08-23 A |  | 100% |  | 2017-10-20 | 2017-10-31 |  | MH-Wtg [3.63 h] | 1,634 | 1,634 | 003 |
| 101380 |  | Plinth beam details (Deleted) | 8d | 2018-08-01 | 2018-08-10 | 101370 |  |  |  |  | 52175.9d | MH-Wtg [7.25 h] | 3,263 |  | 003 |

| ID | WBS | Activity | Duration | Start | Finish | Predecessors | Complete | Planned start | Planned finish | Total float | Resources | Cost | Actual cost | UNIT DESCRIPTION |
| --- | --- | --- | --- | --- | --- | --- | --- | --- | --- | --- | --- | --- | --- | --- |
|  | 2 | **Civil Structural Drawings (CSD)** |  | 2017-08-23 | 2017-08-23 |  |  |  |  |  |  |  |  |  |
| 101400 |  | Steel framing plan | 12d | 2017-08-23 A | 2017-08-23 A |  | 100% | 2017-10-20 | 2017-11-06 |  | MH-Wtg [7.77 h] | 3,497 | 3,497 | 003 |
| 101410 |  | Elevation & section details | 8d | 2017-08-23 A | 2017-08-23 A | 101400 | 100% | 2017-11-07 | 2017-11-16 |  | MH-Wtg [3.89 h] | 1,751 | 1,751 | 003 |
| 101420 |  | Staircase details | 8d | 2017-08-23 A | 2017-08-23 A | 101410 | 100% | 2017-11-17 | 2017-11-28 |  | MH-Wtg [1.55 h] | 698 | 698 | 003 |
| 101430 |  | Roof details | 8d | 2017-08-23 A | 2017-08-23 A | 101420 | 100% | 2017-11-29 | 2017-12-08 |  | MH-Wtg [2.33 h] | 1,049 | 1,049 | 003 |
|  | 51 | **B104G- Ammonia Tanker Unloading** |  | 2017-10-30 | 2018-03-22 |  |  |  |  |  |  |  |  |  |
|  | 1 | **Civil Concrete Drawings (CCD)** |  | 2017-10-30 | 2018-03-22 |  |  |  |  |  |  |  |  |  |
| 111559.1 |  | Foundation and column details | 12d | 2017-10-30 A | 2018-03-22 A | 100891 FF, 113101.1 FF+15d, 113101.9.2 FF+15d, 113101.9.3 FF+15d | 100% | 2017-11-09 | 2017-11-27 |  |  |  |  | 003 |
| 111560 |  | Grade slab details | 3d | 2017-10-30 A | 2018-01-29 A | 111559.1 FF | 100% | 2017-11-27 | 2017-11-30 |  | MH-Wtg [5 h] | 2,250 | 2,250 | 003 |
| 111560.1 |  | Structrual details for platforms and shed | 10d | 2017-10-30 A | 2018-01-29 A | 111559.1 FF | 100% | 2017-11-27 | 2017-12-11 |  |  |  |  | 003 |
|  | 9 | **B105A- Air Compressor** |  | 2017-09-11 | 2018-08-14 |  |  |  |  |  |  |  |  |  |
|  | 1 | **Civil Concrete Drawings (CCD)** |  | 2017-09-18 | 2018-08-14 |  |  |  |  |  |  |  |  |  |
| 100910 |  | Foundation & column details | 20d | 2017-09-18 A | 2017-09-18 A | 104590, 100030 | 100% | 2017-09-15 | 2017-10-12 |  | MH-Wtg [75 h] | 33,750 | 33,750 | 003 |
| 100930 |  | Grade slab details | 8d | 2017-09-18 A | 2017-09-18 A | 100940 | 100% | 2017-10-13 | 2017-10-24 |  | MH-Wtg [14.96 h] | 6,732 | 6,732 | 003 |
| 100940 |  | Equipment foundation details | 20d | 2017-09-18 A | 2017-09-18 A | 100910 FF | 100% | 2017-09-15 | 2017-10-12 |  | MH-Wtg [59.84 h] | 26,928 | 26,928 | 003 |
| 100920 |  | Plinth beam details (Deleted) | 10d | 2018-08-01 | 2018-08-14 | 100910 |  |  |  | 52173.9d | MH-Wtg |  |  | 003 |
|  | 2 | **Civil Structural Drawings (CSD)** |  | 2017-09-11 | 2017-09-11 |  |  |  |  |  |  |  |  |  |
| 100950 |  | Steel framing plan | 15d | 2017-09-11 A | 2017-09-11 A |  | 100% | 2017-10-27 | 2017-11-16 |  | MH-Wtg [32.06 h] | 14,427 | 14,427 | 003 |
| 100960 |  | Elevation & section details | 10d | 2017-09-11 A | 2017-09-11 A | 100950 | 100% | 2017-11-17 | 2017-11-30 |  | MH-Wtg [19.23 h] | 8,654 | 8,654 | 003 |
| 100970 |  | Roof details | 10d | 2017-09-11 A | 2017-09-11 A | 100960 | 100% | 2017-12-01 | 2017-12-14 |  | MH-Wtg [12.82 h] | 5,769 | 5,769 | 003 |
|  | 10 | **B105B- Air Drier** |  | 2017-09-11 | 2018-08-10 |  |  |  |  |  |  |  |  |  |
|  | 1 | **Civil Concrete Drawings (CCD)** |  | 2017-09-18 | 2018-08-10 |  |  |  |  |  |  |  |  |  |
| 100980 |  | Foundation & column details | 10d | 2017-09-18 A | 2017-09-18 A | 104750, 100030 | 100% | 2017-09-15 | 2017-09-28 |  | MH-Wtg [25 h] | 11,250 | 11,250 | 003 |
| 101000 |  | Grade slab details | 8d | 2017-09-18 A | 2017-09-18 A | 101010 | 100% | 2017-09-29 | 2017-10-10 |  | MH-Wtg [4.99 h] | 2,246 | 2,246 | 003 |
| 101010 |  | Equipment foundation details | 15d | 2017-09-29 A | 2017-09-29 A | 100980 FF | 100% | 2017-09-25 | 2017-10-13 |  | MH-Wtg [19.95 h] | 8,978 | 8,978 | 003 |
| 100990 |  | Plinth beam details (Deleted) | 8d | 2018-08-01 | 2018-08-10 | 100980 |  |  |  | 52175.9d | MH-Wtg |  |  | 003 |

| ID | WBS | Activity | Duration | Start | Finish | Predecessors | Complete | Planned start | Planned finish | Total float | Resources | Cost | Actual cost | UNIT DESCRIPTION |
| --- | --- | --- | --- | --- | --- | --- | --- | --- | --- | --- | --- | --- | --- | --- |
|  | 2 | **Civil Structural Drawings (CSD)** |  | 2017-09-11 | 2017-09-11 |  |  |  |  |  |  |  |  |  |
| 101020 |  | Steel framing plan | 15d | 2017-09-11 A | 2017-09-11 A |  | 100% | 2017-10-27 | 2017-11-16 |  | MH-Wtg [10.69 h] | 4,811 | 4,811 | 003 |
| 101030 |  | Elevation & section details | 10d | 2017-09-11 A | 2017-09-11 A | 101020 | 100% | 2017-11-17 | 2017-11-30 |  | MH-Wtg [6.41 h] | 2,885 | 2,885 | 003 |
| 101040 |  | Roof details | 10d | 2017-09-11 A | 2017-09-11 A | 101030 | 100% | 2017-12-01 | 2017-12-14 |  | MH-Wtg [4.27 h] | 1,922 | 1,922 | 003 |
|  | 11 | **B105C- VAM Unit** |  | 2017-09-19 | 2018-08-10 |  |  |  |  |  |  |  |  |  |
|  | 1 | **Civil Concrete Drawings (CCD)** |  | 2017-09-19 | 2018-08-10 |  |  |  |  |  |  |  |  |  |
| 101050 |  | Foundation & column details | 10d | 2017-09-19 A | 2017-09-19 A | 100030 | 100% | 2017-09-15 | 2017-09-28 |  | MH-Wtg [25 h] | 11,250 | 11,250 | 003 |
| 101070 |  | Grade slab details | 8d | 2017-09-19 A | 2017-09-19 A | 101080 | 100% | 2017-09-29 | 2017-10-10 |  | MH-Wtg [4.99 h] | 2,246 | 2,246 | 003 |
| 101080 |  | Equipment foundation details | 15d | 2017-09-19 A | 2017-09-19 A | 101050 FF | 100% | 2017-09-08 | 2017-09-28 |  | MH-Wtg [19.95 h] | 8,978 | 8,978 | 003 |
| 101060 |  | Plinth beam details (Deleted) | 8d | 2018-08-01 | 2018-08-10 | 101050 |  |  |  | 52175.9d | MH-Wtg |  |  | 003 |
|  | 2 | **Civil Structural Drawings (CSD)** |  | 2017-09-19 | 2017-09-19 |  |  |  |  |  |  |  |  |  |
| 101090 |  | Steel framing plan | 15d | 2017-09-19 A | 2017-09-19 A |  | 100% | 2017-10-27 | 2017-11-16 |  | MH-Wtg [10.69 h] | 4,811 | 4,811 | 003 |
| 101100 |  | Elevation & section details | 10d | 2017-09-19 A | 2017-09-19 A | 101090 | 100% | 2017-11-17 | 2017-11-30 |  | MH-Wtg [6.41 h] | 2,885 | 2,885 | 003 |
| 101110 |  | Roof details | 10d | 2017-09-19 A | 2017-09-19 A | 101100 | 100% | 2017-12-01 | 2017-12-14 |  | MH-Wtg [4.27 h] | 1,922 | 1,922 | 003 |
|  | 12 | **B105D- Hot Well/Cold Well, Pumps** |  | 2017-09-19 | 2018-08-14 |  |  |  |  |  |  |  |  |  |
|  | 1 | **Civil Concrete Drawings (CCD)** |  | 2017-09-19 | 2018-08-14 |  |  |  |  |  |  |  |  |  |
| 101120 |  | Foundation & details for tanks | 25d | 2017-09-19 A | 2017-09-19 A | 100030 | 100% | 2017-10-20 | 2017-11-23 |  | MH-Wtg [28.5 h] | 12,825 | 12,825 | 003 |
| 101140 |  | Grade slab details | 10d | 2017-09-19 A | 2017-09-19 A | 101141 | 100% | 2017-12-29 | 2018-01-11 |  | MH-Wtg [10.69 h] | 4,811 | 4,811 | 003 |
| 101141 |  | Equipment foundation details | 15d | 2017-09-19 A | 2017-09-19 A | 112940 FS+10d | 100% | 2017-12-08 | 2017-12-28 |  | MH-Wtg [17.81 h] | 8,015 | 8,015 | 003 |
| 101130 |  | Beam & slab details (Deleted) | 10d | 2018-08-01 | 2018-08-14 | 101120 |  |  |  | 52173.9d | MH-Wtg |  |  | 003 |
|  | 13 | **B106A-Coal Storage (Deleted)** |  | 2018-08-01 | 2018-08-21 |  |  |  |  |  |  |  |  |  |
|  | 1 | **Civil Concrete Drawings (CCD)** |  | 2018-08-01 | 2018-08-21 |  |  |  |  |  |  |  |  |  |
| 101150 |  | Foundation & column details (Deleted) | 15d | 2018-08-01 | 2018-08-21 |  |  |  |  | 52168.9d | MH-Wtg |  |  | 003 |
| 101160 |  | Plinth beam details (Deleted) | 10d | 2018-08-01 | 2018-08-14 |  |  |  |  | 52173.9d | MH-Wtg |  |  | 003 |
| 101170 |  | Grade slab details (Deleted) | 10d | 2018-08-01 | 2018-08-14 |  |  |  |  | 52173.9d | MH-Wtg |  |  | 003 |

| ID | WBS | Activity | Duration | Start | Finish | Predecessors | Complete | Planned start | Planned finish | Total float | Free float | Resources | Cost | Actual cost | UNIT DESCRIPTION |
| --- | --- | --- | --- | --- | --- | --- | --- | --- | --- | --- | --- | --- | --- | --- | --- |
|  | 2 | **Civil Structural Drawings (CSD)** |  | 2018-08-01 | 2018-08-14 |  |  |  |  |  |  |  |  |  |  |
| 101180 |  | Steel framing plan (Deleted) | 10d | 2018-08-01 | 2018-08-14 |  |  |  |  | 52173.9d |  | MH-Wtg |  |  | 003 |
| 101190 |  | Elevation & section details (Deleted) | 8d | 2018-08-01 | 2018-08-10 |  |  |  |  | 52175.9d |  | MH-Wtg |  |  | 003 |
| 101200 |  | Roof details (Deleted) | 5d | 2018-08-01 | 2018-08-07 |  |  |  |  | 52178.9d |  | MH-Wtg |  |  | 003 |
|  | 14 | **B106B- CPP Package** |  | 2017-10-27 | 2018-07-28 |  |  |  |  |  |  |  |  |  |  |
|  | 1 | **Civil Concrete Drawings (CCD)** |  | 2017-10-27 | 2018-07-28 |  |  |  |  |  |  |  |  |  |  |
| 101210 |  | Piling details for boiler | 30d | 2017-10-27 A | 2017-10-27 A | 112870.1 FF+20d, 112870 FS+20d | 100% | 2017-10-02 | 2017-11-10 |  |  | MH-Wtg [80 h] | 36,000 | 36,000 | 003 |
| 101240.1 |  | Piling details for TG Hall & STG | 24d | 2017-11-30 A | 2017-12-13 A | 101210 | 100% | 2017-11-01 | 2017-12-04 |  |  |  |  |  | 003 |
| 101210.1 |  | Foundation & column details boiler | 20d | 2017-12-21 A | 2017-12-21 A | 101210 | 100% | 2017-12-01 | 2017-12-28 |  |  |  |  |  | 003 |
| 101220 |  | Plinth beam details boiler | 10d | 2017-12-21 A | 2017-12-21 A | 101210.1 | 100% | 2017-12-29 | 2018-01-11 |  |  | MH-Wtg [20 h] | 9,000 | 9,000 | 003 |
| 101240.3 |  | Foundation and column detail for TG Hall & STG | 15d | 2017-12-21 A | 2018-01-02 A | 101240.2 | 100% | 2017-12-15 | 2018-01-04 |  |  |  |  |  | 003 |
| 101240.9 |  | Equipment foundation details for STG | 20d | 2017-12-21 A | 2018-07-03 A | 101240.1, 101230 FF | 100% | 2018-01-17 | 2018-02-14 |  |  |  |  |  | 003 |
| 101240.4 |  | Plinth beam details for TG Hall | 10d | 2018-01-02 A | 2018-01-02 A | 101240.3 FF | 100% | 2018-01-08 | 2018-01-19 |  |  |  |  |  | 003 |
| 101230 |  | Beam & slab details boiler | 10d | 2018-01-17 A | 2018-01-29 A | 101240.8 | 100% | 2018-03-05 | 2018-03-16 |  |  | MH-Wtg [40 h] | 18,000 | 18,000 | 003 |
| 101240.8 |  | Equipment foundation details for boiler | 22d | 2018-01-29 A | 2018-07-28 A | 101240.1 | 100% | 2018-02-01 | 2018-03-02 |  |  | MH-Wtg [48 h] | 21,600 | 21,600 | 003 |
| 101240.5 |  | Beam and slab details for TG Hall | 15d | 2018-02-01 A | 2018-02-01 A | 101240.3 | 100% | 2018-02-01 | 2018-02-21 |  |  |  |  |  | 003 |
| 101240.6 |  | Grade slab details | 8d | 2018-02-02 A | 2018-05-14 A | 101240.4 | 100% | 2018-02-01 | 2018-02-12 |  |  |  |  |  | 003 |
| 101240.2 |  | Architectural layout for TG Hall | 10d | 2018-03-19 A | 2018-03-19 A | 101240.1 | 100% | 2018-03-01 | 2018-03-14 |  |  |  |  |  | 003 |
| 101240.7 |  | Staircase details | 10d | 2018-04-23 A | 2018-06-20 A | 101240.5 FF | 100% | 2018-05-01 | 2018-05-14 |  |  |  |  |  | 003 |
|  | 42 | **B106C- Boiler 20T (HOLD)** |  | 2018-08-01 | 2018-10-01 |  |  |  |  |  |  |  |  |  |  |
|  | 1 | **Civil Concrete Drawings (CCD)** |  | 2018-08-01 | 2018-10-01 |  |  |  |  |  |  |  |  |  |  |
| 109480 |  | Foundation & column details (Hold) | 15d | 2018-08-01 | 2018-08-21 | 101210 SS |  |  |  | 52139.9d | 0d | MH-Wtg |  |  | 003 |
| 109680 |  | Plinth beam details (Hold) | 9d | 2018-08-22 | 2018-09-03 | 109480 |  |  |  | 52139.9d | 0d | MH-Wtg |  |  | 003 |
| 110880 |  | Equipment foundation details (Hold) | 10d | 2018-09-04 | 2018-09-17 | 109680 |  |  |  | 52139.9d | 0d | MH-Wtg |  |  | 003 |
| 110870 |  | Grade slab details (Hold) | 10d | 2018-09-18 | 2018-10-01 | 110880 |  |  |  | 52139.9d |  | MH-Wtg |  |  | 003 |

| ID | WBS | Activity | Duration | Start | Finish | Predecessors | Complete | Planned start | Planned finish | Total float | Resources | Cost | Actual cost | UNIT DESCRIPTION |
| --- | --- | --- | --- | --- | --- | --- | --- | --- | --- | --- | --- | --- | --- | --- |
|  | 15 | **B106D- Condensate Storage, Pumps** |  | 2017-10-26 | 2018-08-14 |  |  |  |  |  |  |  |  |  |
|  | 1 | **Civil Concrete Drawings (CCD)** |  | 2017-10-26 | 2018-08-14 |  |  |  |  |  |  |  |  |  |
| 101280 |  | Equipment foundation details | 10d | 2017-10-26 A | 2017-10-26 A | 101240.8 | 100% | 2018-01-15 | 2018-01-29 |  | MH-Wtg [42.74 h] | 19,233 | 19,233 | 003 |
| 101310 |  | Grade slab & dyke wall details | 10d | 2017-10-26 A | 2018-05-16 A | 113101.9.5 FF+15d | 100% | 2018-02-13 | 2018-02-26 |  | MH-Wtg [21.37 h] | 9,617 | 9,617 | 003 |
| 101290 |  | Foundation & column details (Deleted) | 10d | 2018-08-01 | 2018-08-14 | 101280 |  |  |  | 52173.9d | MH-Wtg |  |  | 003 |
|  | 16 | **B107A- Raw Water Storage** |  | 2017-04-21 | 2017-09-12 |  |  |  |  |  |  |  |  |  |
|  | 1 | **Civil Concrete Drawings (CCD)** |  | 2017-04-21 | 2017-09-12 |  |  |  |  |  |  |  |  |  |
| 101360 |  | Foundation & details for tanks | 20d | 2017-04-21 A | 2017-09-12 A | 105410, 100030 | 100% | 2017-04-03 | 2017-04-28 |  | MH-Wtg [142.48 h] | 64,116 | 64,116 | 003 |
|  | 53 | **B107B- Raw Water Treatment Plant** |  | 2017-09-15 | 2018-01-09 |  |  |  |  |  |  |  |  |  |
|  | 1 | **Civil Concrete Drawings (CCD)** |  | 2017-09-15 | 2018-01-09 |  |  |  |  |  |  |  |  |  |
| A126080 |  | Foundation and column details | 8d | 2017-09-15 A | 2017-09-23 A | A126070 FF | 100% | 2017-09-26 | 2017-10-05 |  |  |  |  | 003 |
| A126060 |  | Foundation & details for Clarified water tank | 15d | 2017-09-22 A | 2017-09-23 A | 112840 FS+10d | 100% | 2017-09-01 | 2017-09-21 |  |  |  |  | 003 |
| A126090 |  | Equipment foundations | 15d | 2017-09-22 A | 2018-01-09 A | A126070 | 100% | 2017-10-06 | 2017-10-26 |  |  |  |  | 003 |
| A126100 |  | Grade slab details | 8d | 2017-09-22 A | 2017-09-23 A | A126090 | 100% | 2017-10-27 | 2017-11-07 |  |  |  |  | 003 |
| A126110 |  | Staircase & platform details | 5d | 2017-09-22 A | 2017-09-23 A | A126090 FF | 100% | 2017-10-20 | 2017-10-26 |  |  |  |  | 003 |
| A126070 |  | Foundation & details for Static mixing tank | 10d | 2017-09-22 A | 2017-09-23 A | A126060 | 100% | 2017-09-22 | 2017-10-05 |  |  |  |  | 003 |
|  | 48 | **B107C- Pump House** |  | 2017-09-12 | 2018-01-25 |  |  |  |  |  |  |  |  |  |
|  | 1 | **Civil Concrete Drawings (CCD)** |  | 2017-09-12 | 2018-01-25 |  |  |  |  |  |  |  |  |  |
| 101250 |  | Foundation & column details | 10d | 2017-09-12 A | 2017-09-12 A | 107810, 100030 | 100% | 2017-09-15 | 2017-09-28 |  | MH-Wtg [39.89 h] | 17,951 | 17,951 | 003 |
| 101260 |  | Plinth beam details | 8d | 2017-09-12 A | 2017-09-12 A | 101250 | 100% | 2017-09-29 | 2017-10-10 |  | MH-Wtg [19.95 h] | 8,978 | 8,978 | 003 |
| 101270 |  | Grade slab details | 8d | 2017-09-12 A | 2018-01-25 A | 101300 | 100% | 2017-11-24 | 2017-12-05 |  | MH-Wtg [9.97 h] | 4,487 | 4,487 | 003 |
| 101300 |  | Equipment foundation details | 15d | 2017-11-23 A | 2017-11-23 A | 101260, 112940 FS+10d | 100% | 2017-11-01 | 2017-11-21 |  | MH-Wtg [29.92 h] | 13,464 | 13,464 | 003 |
|  | 2 | **Civil Structural Drawings (CSD)** |  | 2017-09-12 | 2017-11-23 |  |  |  |  |  |  |  |  |  |
| 101320 |  | Steel framing plan | 10d | 2017-09-12 A | 2017-11-23 A | 101260 | 100% | 2017-09-25 | 2017-10-06 |  | MH-Wtg [21.37 h] | 9,617 | 9,617 | 003 |
| 101330 |  | Elevation & section details | 5d | 2017-09-12 A | 2017-11-23 A | 101320 | 100% | 2017-10-09 | 2017-10-13 |  | MH-Wtg [12.82 h] | 5,769 | 5,769 | 003 |
| 101340 |  | Roof details | 10d | 2017-09-12 A | 2017-09-12 A | 101330 | 100% | 2017-10-16 | 2017-10-27 |  | MH-Wtg [8.55 h] | 3,848 | 3,848 | 003 |

| ID | WBS | Activity | Duration | Start | Finish | Predecessors | Complete | Remaining | Planned start | Planned finish | Total float | Resources | Cost | Actual cost | UNIT DESCRIPTION |
| --- | --- | --- | --- | --- | --- | --- | --- | --- | --- | --- | --- | --- | --- | --- | --- |
|  | 18 | **B108A- Fire Water Storage** |  | 2017-04-21 | 2018-08-07 |  |  |  |  |  |  |  |  |  |  |
|  | 1 | **Civil Concrete Drawings (CCD)** |  | 2017-04-21 | 2018-08-07 |  |  |  |  |  |  |  |  |  |  |
| 101440 |  | Foundation & details for tanks | 15d | 2017-04-21 A | 2017-09-12 A | 101360 FF | 100% |  | 2017-04-10 | 2017-04-28 |  | MH-Wtg [99.73 h] | 44,879 | 44,879 | 003 |
| 101450 |  | Beam & slab details (Deleted) | 10d | 2017-04-21 A | 2018-08-07 | 101440 | 50% | 5d | 2017-05-01 | 2017-05-12 | 52178.9d | MH-Wtg |  |  | 003 |
| 101450.1 |  | Structural details for tank roof | 1d | 2017-09-12 A | 2017-09-12 A |  | 100% |  | 2017-09-01 | 2017-09-01 |  | MH-Wtg [30 h] | 13,500 | 13,500 | 003 |
|  | 19 | **B108B- Treated Water Storage** |  | 2017-04-21 | 2018-08-07 |  |  |  |  |  |  |  |  |  |  |
|  | 1 | **Civil Concrete Drawings (CCD)** |  | 2017-04-21 | 2018-08-07 |  |  |  |  |  |  |  |  |  |  |
| 101460 |  | Foundation & details for tanks | 15d | 2017-04-21 A | 2017-09-12 A | 101440 FF | 100% |  | 2017-04-10 | 2017-04-28 |  | MH-Wtg [99.73 h] | 44,879 | 44,879 | 003 |
| 101470 |  | Beam & slab details (Deleted) | 10d | 2017-04-21 A | 2018-08-07 | 101460 | 50% | 5d | 2017-05-01 | 2017-05-12 | 52178.9d | MH-Wtg |  |  | 003 |
| 101470.1 |  | Structural details for tank roof | 1d | 2017-09-12 A | 2017-09-12 A |  | 100% |  | 2017-09-01 | 2017-09-01 |  |  |  |  | 003 |
|  | 20 | **B108C- DM plant** |  | 2017-09-14 | 2018-08-07 |  |  |  |  |  |  |  |  |  |  |
|  | 1 | **Civil Concrete Drawings (CCD)** |  | 2017-09-14 | 2018-08-07 |  |  |  |  |  |  |  |  |  |  |
| 101480 |  | Foundation & column details | 10d | 2017-09-14 A | 2017-09-14 A | 112860 FS+10d | 100% |  | 2017-09-01 | 2017-09-14 |  | MH-Wtg [51 h] | 22,950 | 22,950 | 003 |
| 101500 |  | Grade slab details | 8d | 2017-09-18 A | 2017-09-18 A | 101510 | 100% |  | 2017-10-12 | 2017-10-23 |  | MH-Wtg [26 h] | 11,700 | 11,700 | 003 |
| 101510 |  | Equipment foundation details | 14d | 2017-09-18 A | 2018-01-11 A | 112860 FS+22d | 100% |  | 2017-09-22 | 2017-10-11 |  | MH-Wtg [51 h] | 22,950 | 22,950 | 003 |
| 101490 |  | Plinth beam details (Deleted) | 5d | 2018-08-01 | 2018-08-07 | 101480 |  |  |  |  | 52178.9d | MH-Wtg |  |  | 003 |
|  | 2 | **Civil Structural Drawings (CSD)** |  | 2017-09-14 | 2017-09-14 |  |  |  |  |  |  |  |  |  |  |
| 101520 |  | Steel framing plan | 14d | 2017-09-14 A | 2017-09-14 A |  | 100% |  | 2017-10-02 | 2017-10-19 |  | MH-Wtg [7 h] | 3,150 | 3,150 | 003 |
| 101530 |  | Elevation & section details | 10d | 2017-09-14 A | 2017-09-14 A | 101520 | 100% |  | 2017-10-20 | 2017-11-02 |  | MH-Wtg [4 h] | 1,800 | 1,800 | 003 |
| 101540 |  | Roof details | 8d | 2017-09-14 A | 2017-09-14 A | 101530 | 100% |  | 2017-11-03 | 2017-11-14 |  | MH-Wtg [3 h] | 1,350 | 1,350 | 003 |
|  | 21 | **B108F- DM Storage** |  | 2017-06-29 | 2018-08-21 |  |  |  |  |  |  |  |  |  |  |
|  | 1 | **Civil Concrete Drawings (CCD)** |  | 2017-06-29 | 2018-01-10 |  |  |  |  |  |  |  |  |  |  |
| 102290 |  | Equipment foundation details | 25d | 2017-06-29 A | 2017-06-29 A | 109510, 100030 | 100% |  | 2017-06-01 | 2017-07-05 |  | MH-Wtg [38.47 h] | 17,312 | 17,312 | 003 |
| 111400 |  | Foundation & column details | 10d | 2017-06-29 A | 2017-06-29 A | 102290 | 100% |  | 2017-07-06 | 2017-07-19 |  | MH-Wtg [6.41 h] | 2,885 | 2,885 | 003 |
| 111410 |  | Grade slab & dyke wall details | 15d | 2017-06-29 A | 2018-01-10 A | 111400, 112940 FF+15d | 100% |  | 2017-07-20 | 2017-08-09 |  | MH-Wtg [19.23 h] | 8,654 | 8,654 | 003 |

| ID | WBS | Activity | Duration | Start | Finish | Predecessors | Complete | Planned start | Planned finish | Total float | Resources | Cost | Actual cost | UNIT DESCRIPTION |
| --- | --- | --- | --- | --- | --- | --- | --- | --- | --- | --- | --- | --- | --- | --- |
|  | 2 | **Civil Structural Drawings (CSD)** |  | 2018-08-01 | 2018-08-21 |  |  |  |  |  |  |  |  |  |
| 111420 |  | Steel framing plan (Deleted) | 15d | 2018-08-01 | 2018-08-21 | 111400 |  |  |  | 52168.9d | MH-Wtg |  |  | 003 |
| 119740 |  | Elevation & section details (Deleted) | 10d | 2018-08-01 | 2018-08-14 |  |  |  |  | 52173.9d | MH-Wtg |  |  | 003 |
| 119750 |  | Staircase details (Deleted) | 8d | 2018-08-01 | 2018-08-10 |  |  |  |  | 52175.9d | MH-Wtg |  |  | 003 |
|  | 22 | **B109- Cooling Tower with Pumps** |  | 2017-09-22 | 2018-08-21 |  |  |  |  |  |  |  |  |  |
|  | 1 | **Civil Concrete Drawings (CCD)** |  | 2017-09-22 | 2018-08-21 |  |  |  |  |  |  |  |  |  |
| 101620 |  | Foundation & column details | 10d | 2017-09-22 A | 2018-01-31 A | 100030, 105640 | 100% | 2017-09-15 | 2017-09-28 |  | MH-Wtg [171 h] | 76,950 | 76,950 | 003 |
| 101631 |  | RCC basin detail | 20d | 2017-09-22 A | 2017-10-03 A |  | 100% | 2017-10-11 | 2017-11-07 |  | MH-Wtg [56.99 h] | 25,646 | 25,646 | 003 |
| 101640 |  | Grade slab details | 10d | 2018-01-30 A | 2018-06-04 A | 101650 | 100% | 2018-02-15 | 2018-02-28 |  | MH-Wtg [28.5 h] | 12,825 | 12,825 | 003 |
| 101650 |  | Equipment foundation details | 10d | 2018-01-31 A | 2018-05-11 A | 112950 FS+22d, 101631 | 100% | 2018-02-01 | 2018-02-14 |  | MH-Wtg [28.5 h] | 12,825 | 12,825 | 003 |
| 101610 |  | Piling details (Deleted) | 15d | 2018-08-01 | 2018-08-21 | 105640, 100030 |  |  |  | 52168.9d | MH-Wtg |  |  | 003 |
| 101630 |  | Plinth beam details (Deleted) | 8d | 2018-08-01 | 2018-08-10 |  |  |  |  | 52175.9d | MH-Wtg |  |  | 003 |
|  | 26 | **B110A- Metering room (Deleted)** |  | 2018-08-01 | 2018-08-14 |  |  |  |  |  |  |  |  |  |
|  | 1 | **Civil Architectural Drawings (CAD)** |  | 2018-08-01 | 2018-08-14 |  |  |  |  |  |  |  |  |  |
| 101870 |  | Floor plan details (Deleted) | 10d | 2018-08-01 | 2018-08-14 | 101660 |  |  |  | 52173.9d | MH-Wtg |  |  | 003 |
| 101880 |  | Elevation & section details (Deleted) | 8d | 2018-08-01 | 2018-08-10 |  |  |  |  | 52175.9d | MH-Wtg |  |  | 003 |
| 101890 |  | Door & window details (Deleted) | 5d | 2018-08-01 | 2018-08-07 |  |  |  |  | 52178.9d | MH-Wtg |  |  | 003 |
| 101900 |  | Flooring and ceiling details (Deleted) | 5d | 2018-08-01 | 2018-08-07 |  |  |  |  | 52178.9d | MH-Wtg |  |  | 003 |
|  | 2 | **Civil Concrete Drawings (CCD)** |  | 2018-08-01 | 2018-08-10 |  |  |  |  |  |  |  |  |  |
| 101920 |  | Foundation & column details (Deleted) | 8d | 2018-08-01 | 2018-08-10 |  |  |  |  | 52175.9d | MH-Wtg |  |  | 003 |
| 101930 |  | Plinth beam details (Deleted) | 5d | 2018-08-01 | 2018-08-07 |  |  |  |  | 52178.9d | MH-Wtg |  |  | 003 |
| 101940 |  | Grade slab details (Deleted) | 3d | 2018-08-01 | 2018-08-03 |  |  |  |  | 52180.9d | MH-Wtg |  |  | 003 |
| 101950 |  | Lintel level details (Deleted) | 5d | 2018-08-01 | 2018-08-07 |  |  |  |  | 52178.9d | MH-Wtg |  |  | 003 |
| 101960 |  | Beam & slab details (Deleted) | 8d | 2018-08-01 | 2018-08-10 |  |  |  |  | 52175.9d | MH-Wtg |  |  | 003 |

| ID | WBS | Activity | Duration | Start | Finish | Predecessors | Complete | Planned start | Planned finish | Total float | Resources | Cost | Actual cost | UNIT DESCRIPTION |
| --- | --- | --- | --- | --- | --- | --- | --- | --- | --- | --- | --- | --- | --- | --- |
|  | 24 | **B110B- DG Room** |  | 2018-02-02 | 2018-05-14 |  |  |  |  |  |  |  |  |  |
|  | 1 | **Civil Concrete Drawings (CCD)** |  | 2018-02-02 | 2018-05-14 |  |  |  |  |  |  |  |  |  |
| 101780 |  | Equipment foundation details | 15d | 2018-02-02 A | 2018-03-08 A | 113380 FS+10d | 100% | 2018-02-01 | 2018-02-21 |  | MH-Wtg [29.92 h] | 13,464 | 13,464 | 003 |
| 101790 |  | Foundation & column details | 10d | 2018-03-13 A | 2018-03-13 A | 101780 | 100% | 2018-05-01 | 2018-05-14 |  | MH-Wtg [9.97 h] | 4,487 | 4,487 | 003 |
| 101800 |  | Plinth beam details | 8d | 2018-03-13 A | 2018-03-13 A | 101790 | 100% | 2018-05-15 | 2018-05-24 |  | MH-Wtg [4.99 h] | 2,246 | 2,246 | 003 |
| 101810 |  | Grade slab details | 5d | 2018-05-14 A | 2018-05-14 A | 101800 | 100% | 2018-06-01 | 2018-06-07 |  | MH-Wtg [4.99 h] | 2,246 | 2,246 | 003 |
|  | 2 | **Civil Structural Drawings (CSD)** |  | 2018-04-23 | 2018-04-23 |  |  |  |  |  |  |  |  |  |
| 101820 |  | Steel framing plan | 10d | 2018-04-23 A | 2018-04-23 A | 101800 | 100% | 2018-05-25 | 2018-06-07 |  | MH-Wtg [10.69 h] | 4,811 | 4,811 | 003 |
| 101830 |  | Elevation & section details | 8d | 2018-04-23 A | 2018-04-23 A | 101820 | 100% | 2018-06-08 | 2018-06-19 |  | MH-Wtg [6.41 h] | 2,885 | 2,885 | 003 |
| 101840 |  | Roof details | 5d | 2018-04-23 A | 2018-04-23 A | 101830 | 100% | 2018-06-20 | 2018-06-26 |  | MH-Wtg [4.27 h] | 1,922 | 1,922 | 003 |
|  | 23 | **B110A- Process/Utility Sub-station** |  | 2017-06-15 | 2018-08-28 |  |  |  |  |  |  |  |  |  |
|  | 1 | **Civil Architectural Drawings (CAD)** |  | 2017-06-15 | 2018-02-19 |  |  |  |  |  |  |  |  |  |
| 101660 |  | Floor plan details | 10d | 2017-06-15 A | 2017-09-26 A | 101730 | 100% | 2017-07-06 | 2017-07-19 |  | MH-Wtg [21.37 h] | 9,617 | 9,617 | 003 |
| 101670 |  | Elevation & section details | 8d | 2017-06-15 A | 2017-09-26 A | 101660 | 100% | 2017-07-20 | 2017-07-31 |  | MH-Wtg [10.69 h] | 4,811 | 4,811 | 003 |
| 101680 |  | Door & window details | 5d | 2017-06-15 A | 2017-09-26 A | 101700 | 100% | 2017-11-20 | 2017-11-24 |  | MH-Wtg [5.34 h] | 2,403 | 2,403 | 003 |
| 101690 |  | Flooring and ceiling details | 5d | 2017-09-26 A | 2017-09-26 A | 101680 | 100% | 2017-09-26 | 2017-10-02 |  | MH-Wtg [5.34 h] | 2,403 | 2,403 | 003 |
| 101700 |  | Sanitary details | 10d | 2018-02-19 A | 2018-02-19 A | 101760 | 100% | 2018-02-01 | 2018-02-14 |  | MH-Wtg [10.69 h] | 4,811 | 4,811 | 003 |
|  | 2 | **Civil Concrete Drawings (CCD)** |  | 2017-07-03 | 2018-08-28 |  |  |  |  |  |  |  |  |  |
| 101720 |  | Foundation & column details | 15d | 2017-07-03 A | 2017-09-28 A | 106691 | 100% | 2017-08-01 | 2017-08-22 |  | MH-Wtg [56.1 h] | 25,245 | 25,245 | 003 |
| 101730 |  | Plinth beam details | 10d | 2017-08-10 A | 2017-09-28 A | 101720 | 100% | 2017-09-22 | 2017-10-05 |  | MH-Wtg [16.03 h] | 7,214 | 7,214 | 003 |
| 101740 |  | Grade slab details | 8d | 2017-09-28 A | 2017-09-28 A | 101730 | 100% | 2017-10-09 | 2017-10-18 |  | MH-Wtg [16.03 h] | 7,214 | 7,214 | 003 |
| 101760 |  | Beam & slab details | 25d | 2017-10-13 A | 2017-11-01 A | 101750 FS-10d | 100% | 2017-10-16 | 2017-11-17 |  | MH-Wtg [32.06 h] | 14,427 | 14,427 | 003 |
| 101750 |  | Lintel level details | 20d | 2017-11-01 A | 2017-11-01 A | 101740 | 100% | 2017-10-02 | 2017-10-27 |  | MH-Wtg [24.04 h] | 10,818 | 10,818 | 003 |
| 101770 |  | Staircase details | 15d | 2017-11-01 A | 2017-11-01 A | 101760 FF | 100% | 2017-10-30 | 2017-11-17 |  | MH-Wtg [16.03 h] | 7,214 | 7,214 | 003 |
| 101710 |  | Piling details (Deleted) | 20d | 2018-08-01 | 2018-08-28 |  |  |  |  | 52163.9d | MH-Wtg |  |  | 003 |

| ID | WBS | Activity | Duration | Start | Finish | Predecessors | Complete | Remaining | Planned start | Planned finish | Total float | Constraint | Resources | Cost | Actual cost | UNIT DESCRIPTION |
| --- | --- | --- | --- | --- | --- | --- | --- | --- | --- | --- | --- | --- | --- | --- | --- | --- |
|  | 54 | **B111- Effluent Treatment Plant** |  | 2018-03-01 | 2018-08-21 |  |  |  |  |  |  |  |  |  |  |  |
|  | 1 | **Civil Concrete Drawings (CCD)** |  | 2018-03-01 | 2018-08-21 |  |  |  |  |  |  |  |  |  |  |  |
| A126120 |  | Foundation & details for tanks | 15d | 2018-03-01 A | 2018-08-21 | 112890 FS+10d |  | 15d | 2018-03-01 | 2018-03-21 | 52168.9d |  | MH-Wtg [70 h] | 31,500 | 28,350 | 003 |
| A126140 |  | Foundation & column details | 3d | 2018-03-07 A | 2018-06-27 A | A126130 FF | 100% |  | 2018-04-02 | 2018-04-04 |  |  | MH-Wtg [40 h] | 18,000 | 18,000 | 003 |
| A126130 |  | Equipment foundations | 10d | 2018-04-24 A | 2018-08-14 | A126120 |  | 10d | 2018-05-22 | 2018-06-04 | 52173.9d |  | MH-Wtg [16 h] | 7,200 | 6,480 | 003 |
| A126150 |  | Grade slab details | 5d | 2018-06-28 A | 2018-08-07 | A126130 |  | 5d | 2018-06-15 | 2018-06-21 | 52178.9d |  | MH-Wtg [24 h] | 10,800 | 9,720 | 003 |
|  | 2 | **Civil Structural Drawings (CSD)** |  | 2018-06-29 | 2018-06-29 |  |  |  |  |  |  |  |  |  |  |  |
| A126160 |  | Steel framing plan | 5d | 2018-06-29 A | 2018-06-29 A | A126140 | 100% |  | 2018-06-15 | 2018-06-21 |  |  | MH-Wtg [16 h] | 7,200 | 7,200 | 003 |
| A126170 |  | Elevation & section details | 3d | 2018-06-29 A | 2018-06-29 A | A126160 | 100% |  | 2018-06-22 | 2018-06-26 |  |  | MH-Wtg [8 h] | 3,600 | 3,600 | 003 |
|  | 28 | **B112- Control Room & QC** |  | 2017-06-23 | 2018-08-28 |  |  |  |  |  |  |  |  |  |  |  |
|  | 1 | **Civil Architectural Drawings (CAD)** |  | 2017-06-23 | 2017-09-20 |  |  |  |  |  |  |  |  |  |  |  |
| 102060 |  | Floor plan details | 10d | 2017-06-23 A | 2017-09-20 A | 102130 | 100% |  | 2017-07-13 | 2017-07-26 |  |  | MH-Wtg [21.37 h] | 9,617 | 9,617 | 003 |
| 102070 |  | Elevation & section details | 8d | 2017-06-23 A | 2017-09-20 A | 102060 | 100% |  | 2017-07-27 | 2017-08-07 |  |  | MH-Wtg [10.69 h] | 4,811 | 4,811 | 003 |
| 102080 |  | Door & window details | 5d | 2017-07-27 A | 2017-09-20 A | 102100 | 100% |  | 2017-11-20 | 2017-11-24 |  |  | MH-Wtg [5.34 h] | 2,403 | 2,403 | 003 |
| 102090 |  | Flooring and ceiling details | 5d | 2017-09-20 A | 2017-09-20 A | 102080 | 100% |  | 2017-10-09 | 2017-10-13 |  |  | MH-Wtg [5.34 h] | 2,403 | 2,403 | 003 |
| 102100 |  | Sanitary details | 8d | 2017-09-20 A | 2017-09-20 A | 102160 | 100% |  | 2017-11-20 | 2017-11-29 |  |  | MH-Wtg [10.69 h] | 4,811 | 4,811 | 003 |
|  | 2 | **Civil Concrete Drawings (CCD)** |  | 2017-09-12 | 2018-08-28 |  |  |  |  |  |  |  |  |  |  |  |
| 102120 |  | Foundation & column details | 15d | 2017-09-12 A | 2017-09-12 A | 108441 | 100% |  | 2017-09-01 | 2017-09-21 |  | finish on or after 2017-06-25 | MH-Wtg [56.1 h] | 25,245 | 25,245 | 003 |
| 102130 |  | Plinth beam details | 10d | 2017-09-12 A | 2017-09-12 A | 102120 | 100% |  | 2017-09-22 | 2017-10-05 |  |  | MH-Wtg [16.03 h] | 7,214 | 7,214 | 003 |
| 102140 |  | Grade slab details | 5d | 2017-09-28 A | 2017-09-28 A | 102130 | 100% |  | 2017-09-25 | 2017-09-29 |  |  | MH-Wtg [16.03 h] | 7,214 | 7,214 | 003 |
| 102150 |  | Lintel level details | 20d | 2017-09-29 A | 2017-09-29 A | 102140 | 100% |  | 2017-10-02 | 2017-10-27 |  |  | MH-Wtg [24.04 h] | 10,818 | 10,818 | 003 |
| 102160 |  | Beam & slab details | 25d | 2017-09-29 A | 2017-09-29 A | 102150 FS-10d | 100% |  | 2017-10-16 | 2017-11-17 |  |  | MH-Wtg [32.06 h] | 14,427 | 14,427 | 003 |
| 102110 |  | Piling details (Deleted) | 20d | 2018-08-01 | 2018-08-28 | 108441 |  |  |  |  | 52163.9d |  | MH-Wtg |  |  | 003 |
| 102170 |  | Staircase details (Deleted) | 15d | 2018-08-01 | 2018-08-21 | 102160 FF |  |  |  |  | 52168.9d |  | MH-Wtg |  |  | 003 |

| ID | WBS | Activity | Duration | Start | Finish | Predecessors | Complete | Planned start | Planned finish | Constraint | Resources | Cost | Actual cost | UNIT DESCRIPTION |
| --- | --- | --- | --- | --- | --- | --- | --- | --- | --- | --- | --- | --- | --- | --- |
|  | 30 | **B113A- Admin Building** |  | 2016-12-02 | 2017-08-28 |  |  |  |  |  |  |  |  |  |
|  | 1 | **Civil Architectural Drawings (CAD)** |  | 2016-12-02 | 2017-08-16 |  |  |  |  |  |  |  |  |  |
| 102300 |  | Floor plan details | 103d | 2016-12-02 A | 2017-03-15 A | 102370 | 100% | 2017-09-12 | 2018-02-01 | start on 2016-12-02 | MH-Wtg [21.37 h] | 9,617 | 9,617 | 003 |
| 102310 |  | Elevation & section details | 113d | 2016-12-02 A | 2017-03-15 A | 102300 | 100% | 2018-02-02 | 2018-07-10 | start on 2016-12-02 | MH-Wtg [10.69 h] | 4,811 | 4,811 | 003 |
| 102320 |  | Door & window details | 10d | 2016-12-02 A | 2017-03-15 A | 102340 | 100% | 2017-08-16 | 2017-08-29 |  | MH-Wtg [5.34 h] | 2,403 | 2,403 | 003 |
| 102340 |  | Sanitary details | 12d | 2017-08-10 A | 2017-08-10 A | 102400 | 100% | 2017-09-01 | 2017-09-18 |  | MH-Wtg [10.69 h] | 4,811 | 4,811 | 003 |
| 102330 |  | Flooring and ceiling details | 10d | 2017-08-16 A | 2017-08-16 A | 102340 | 100% | 2017-09-19 | 2017-10-02 |  | MH-Wtg [5.34 h] | 2,403 | 2,403 | 003 |
|  | 2 | **Civil Concrete Drawings (CCD)** |  | 2017-03-08 | 2017-08-28 |  |  |  |  |  |  |  |  |  |
| 102350 |  | Piling details | 20d | 2017-03-08 A | 2017-03-08 A | 100030 | 100% | 2017-05-01 | 2017-05-26 |  | MH-Wtg [32.06 h] | 14,427 | 14,427 | 003 |
| 102360 |  | Foundation & column details | 15d | 2017-03-31 A | 2017-06-01 A | 102350 | 100% | 2017-05-01 | 2017-05-19 |  | MH-Wtg [24.04 h] | 10,818 | 10,818 | 003 |
| 102370 |  | Plinth beam details | 10d | 2017-03-31 A | 2017-03-31 A | 102360 | 100% | 2017-05-22 | 2017-06-02 |  | MH-Wtg [16.03 h] | 7,214 | 7,214 | 003 |
| 102400 |  | Beam & slab details | 25d | 2017-06-08 A | 2017-07-22 A | 102390 FS-10d | 100% | 2017-06-22 | 2017-07-26 |  | MH-Wtg [32.06 h] | 14,427 | 14,427 | 003 |
| 102390 |  | Lintel level details | 20d | 2017-06-08 A | 2017-07-22 A | 102380 | 100% | 2017-06-08 | 2017-07-05 |  | MH-Wtg [24.04 h] | 10,818 | 10,818 | 003 |
| 102410 |  | Staircase details | 15d | 2017-07-03 A | 2017-07-03 A | 102400 FF | 100% | 2017-08-16 | 2017-09-05 |  | MH-Wtg [16.03 h] | 7,214 | 7,214 | 003 |
| 102380 |  | Grade slab details | 5d | 2017-08-28 A | 2017-08-28 A | 102370 | 100% | 2017-09-01 | 2017-09-07 |  | MH-Wtg [16.03 h] | 7,214 | 7,214 | 003 |
|  | 31 | **B113A- Canteen** |  | 2016-12-02 | 2017-08-28 |  |  |  |  |  |  |  |  |  |
|  | 1 | **Civil Architectural Drawings (CAD)** |  | 2016-12-02 | 2017-08-16 |  |  |  |  |  |  |  |  |  |
| 102420 |  | Floor plan details | 98d | 2016-12-02 A | 2017-03-15 A | 102490 | 100% | 2017-09-12 | 2018-01-25 | start on 2016-12-02 | MH-Wtg [14.25 h] | 6,413 | 6,413 | 003 |
| 102430 |  | Elevation & section details | 103d | 2016-12-02 A | 2017-03-15 A | 102420 | 100% | 2018-01-26 | 2018-06-19 | start on 2016-12-02 | MH-Wtg [7.12 h] | 3,204 | 3,204 | 003 |
| 102440 |  | Door & window details | 5d | 2016-12-02 A | 2017-03-15 A | 102460 | 100% | 2017-08-10 | 2017-08-16 |  | MH-Wtg [3.56 h] | 1,602 | 1,602 | 003 |
| 102460 |  | Sanitary details | 8d | 2017-08-10 A | 2017-08-10 A | 102340 FF | 100% | 2017-09-07 | 2017-09-18 |  | MH-Wtg [7.12 h] | 3,204 | 3,204 | 003 |
| 102450 |  | Flooring and ceiling details | 8d | 2017-08-16 A | 2017-08-16 A | 102330 FF | 100% | 2017-09-21 | 2017-10-02 |  | MH-Wtg [3.56 h] | 1,602 | 1,602 | 003 |
|  | 2 | **Civil Concrete Drawings (CCD)** |  | 2017-03-08 | 2017-08-28 |  |  |  |  |  |  |  |  |  |
| 102470 |  | Piling details | 20d | 2017-03-08 A | 2017-03-08 A | 102350 FF | 100% | 2017-05-01 | 2017-05-26 |  | MH-Wtg [21.37 h] | 9,617 | 9,617 | 003 |
| 102480 |  | Foundation & column details | 15d | 2017-03-31 A | 2017-06-01 A | 102470 | 100% | 2017-05-01 | 2017-05-19 |  | MH-Wtg [16.03 h] | 7,214 | 7,214 | 003 |
| 102490 |  | Plinth beam details | 10d | 2017-03-31 A | 2017-03-31 A | 102480 | 100% | 2017-05-22 | 2017-06-02 |  | MH-Wtg [10.69 h] | 4,811 | 4,811 | 003 |
| 102520 |  | Beam & slab details | 25d | 2017-06-08 A | 2017-07-22 A | 102510 FS-10d | 100% | 2017-06-22 | 2017-07-26 |  | MH-Wtg [21.37 h] | 9,617 | 9,617 | 003 |
| 102510 |  | Lintel level details | 20d | 2017-06-08 A | 2017-07-22 A | 102500 | 100% | 2017-06-08 | 2017-07-05 |  | MH-Wtg [16.03 h] | 7,214 | 7,214 | 003 |
| 102530 |  | Staircase details | 15d | 2017-07-03 A | 2017-07-03 A | 102520 FF | 100% | 2017-08-16 | 2017-09-05 |  | MH-Wtg [10.69 h] | 4,811 | 4,811 | 003 |
| 102500 |  | Grade slab details | 5d | 2017-08-28 A | 2017-08-28 A | 102490 | 100% | 2017-09-01 | 2017-09-07 |  | MH-Wtg [10.69 h] | 4,811 | 4,811 | 003 |

| ID | WBS | Activity | Duration | Start | Finish | Predecessors | Complete | Planned start | Planned finish | Total float | Constraint | Resources | Cost | Actual cost | UNIT DESCRIPTION |
| --- | --- | --- | --- | --- | --- | --- | --- | --- | --- | --- | --- | --- | --- | --- | --- |
|  | 37 | **B113B- Security Block, HSE** |  | 2016-12-02 | 2017-10-06 |  |  |  |  |  |  |  |  |  |  |
|  | 1 | **Civil Architectural Drawings (CAD)** |  | 2016-12-02 | 2017-09-29 |  |  |  |  |  |  |  |  |  |  |
| 102940 |  | Floor plan details | 85.91d | 2016-12-02 A | 2017-03-15 A | 103010 | 100% | 2017-09-01 | 2017-12-29 |  | start on 2016-12-02 | MH-Wtg [14.25 h] | 6,413 | 6,413 | 003 |
| 102950 |  | Elevation & section details | 8d | 2016-12-02 A | 2017-03-15 A | 102940 | 100% | 2017-12-29 | 2018-01-10 |  |  | MH-Wtg [7.12 h] | 3,204 | 3,204 | 003 |
| 102960 |  | Door & window details | 5d | 2016-12-02 A | 2017-03-15 A | 102980 | 100% | 2017-07-18 | 2017-07-24 |  |  | MH-Wtg [3.56 h] | 1,602 | 1,602 | 003 |
| 102980 |  | Sanitary details | 8d | 2017-08-10 A | 2017-08-10 A | 103040, 102460 SS | 100% | 2017-09-07 | 2017-09-18 |  |  | MH-Wtg [7.12 h] | 3,204 | 3,204 | 003 |
| 102970 |  | Flooring and ceiling details | 5d | 2017-09-29 A | 2017-09-29 A | 102980 | 100% | 2017-10-02 | 2017-10-06 |  |  | MH-Wtg [3.56 h] | 1,602 | 1,602 | 003 |
|  | 2 | **Civil Concrete Drawings (CCD)** |  | 2017-03-08 | 2017-10-06 |  |  |  |  |  |  |  |  |  |  |
| 102990 |  | Piling details (Deleted) | 12d | 2017-03-08 A | 2017-03-08 A | 102470 FF | 100% | 2017-05-11 | 2017-05-26 |  |  | MH-Wtg |  |  | 003 |
| 103000 |  | Foundation & column details | 10d | 2017-03-31 A | 2017-03-31 A |  | 100% | 2017-05-01 | 2017-05-12 |  |  | MH-Wtg [38 h] | 17,100 | 17,100 | 003 |
| 103010 |  | Plinth beam details | 8d | 2017-03-31 A | 2017-03-31 A | 103000 | 100% | 2017-05-15 | 2017-05-24 |  |  | MH-Wtg [10.69 h] | 4,811 | 4,811 | 003 |
| 103030 |  | Lintel level details | 10d | 2017-03-31 A | 2017-03-31 A | 103020 | 100% | 2017-06-01 | 2017-06-14 |  |  | MH-Wtg [16.03 h] | 7,214 | 7,214 | 003 |
| 103040 |  | Beam & slab details | 15d | 2017-03-31 A | 2017-03-31 A | 103030 | 100% | 2017-06-15 | 2017-07-05 |  |  | MH-Wtg [32 h] | 14,400 | 14,400 | 003 |
| 103050 |  | Staircase details (Deleted) | 10d | 2017-03-31 A | 2017-03-31 A | 103040 FF | 100% | 2017-06-22 | 2017-07-05 |  |  | MH-Wtg |  |  | 003 |
| 103020 |  | Grade slab details | 5d | 2017-10-06 A | 2017-10-06 A | 103010 | 100% | 2017-10-02 | 2017-10-06 |  |  | MH-Wtg [10.69 h] | 4,811 | 4,811 | 003 |
|  | 32 | **B114A- Warehouse, Stores** |  | 2016-12-02 | 2018-08-21 |  |  |  |  |  |  |  |  |  |  |
|  | 1 | **Civil Architectural Drawings (CAD)** |  | 2016-12-02 | 2018-08-10 |  |  |  |  |  |  |  |  |  |  |
| 102540 |  | Floor plan details | 115d | 2016-12-02 A | 2017-01-31 A | 102610 | 100% | 2018-01-30 | 2018-07-09 |  | start on 2016-12-02 | MH-Wtg [2.59 h] | 1,166 | 1,166 | 003 |
| 102550 |  | Elevation & section details | 5d | 2017-01-31 A | 2017-01-31 A | 102540 | 100% | 2018-07-10 | 2018-07-16 |  |  | MH-Wtg [0.65 h] | 293 | 293 | 003 |
| 102560 |  | Door & window details (Deleted) | 5d | 2018-08-01 | 2018-08-07 |  |  |  |  | 52178.9d |  | MH-Wtg |  |  | 003 |
| 102570 |  | Flooring and ceiling details (Deleted) | 5d | 2018-08-01 | 2018-08-07 |  |  |  |  | 52178.9d |  | MH-Wtg |  |  | 003 |
| 102580 |  | Sanitary details (Deleted) | 8d | 2018-08-01 | 2018-08-10 |  |  |  |  | 52175.9d |  | MH-Wtg |  |  | 003 |
|  | 2 | **Civil Concrete Drawings (CCD)** |  | 2017-07-28 | 2018-08-21 |  |  |  |  |  |  |  |  |  |  |
| 102600 |  | Foundation & column details | 10d | 2017-07-28 A | 2017-07-28 A | 119650, 102540 | 100% | 2017-08-01 | 2017-08-14 |  |  | MH-Wtg [5.18 h] | 2,331 | 2,331 | 003 |
| 102610 |  | Plinth beam details | 8d | 2017-07-28 A | 2017-07-28 A | 102600 | 100% | 2017-08-16 | 2017-08-25 |  |  | MH-Wtg [1.3 h] | 585 | 585 | 003 |
| 102590 |  | Piling details (Deleted) | 12d | 2018-08-01 | 2018-08-16 | 102470 |  |  |  | 52171.9d |  | MH-Wtg |  |  | 003 |
| 102620 |  | Grade slab details (Deleted) | 5d | 2018-08-01 | 2018-08-07 | 102610 |  |  |  | 52178.9d |  | MH-Wtg |  |  | 003 |
| 102630 |  | Lintel level details (Deleted) | 10d | 2018-08-01 | 2018-08-14 |  |  |  |  | 52173.9d |  | MH-Wtg |  |  | 003 |
| 102640 |  | Beam & slab details (Deleted) | 15d | 2018-08-01 | 2018-08-21 |  |  |  |  | 52168.9d |  | MH-Wtg |  |  | 003 |
| 102650 |  | Staircase details (Deleted) | 10d | 2018-08-01 | 2018-08-14 |  |  |  |  | 52173.9d |  | MH-Wtg |  |  | 003 |

| ID | WBS | Activity | Duration | Start | Finish | Predecessors | Complete | Planned start | Planned finish | Total float | Constraint | Resources | Cost | Actual cost | UNIT DESCRIPTION |
| --- | --- | --- | --- | --- | --- | --- | --- | --- | --- | --- | --- | --- | --- | --- | --- |
|  | 3 | **Civil Structural Drawings (CSD)** |  | 2017-07-28 | 2018-08-14 |  |  |  |  |  |  |  |  |  |  |
| 102740 |  | Fencing detail | 8d | 2017-07-28 A | 2017-07-28 A | 102610 | 100% | 2017-08-28 | 2017-09-06 |  |  | MH-Wtg [3.24 h] | 1,458 | 1,458 | 003 |
| 102660 |  | Steel framing plan (Deleted) | 10d | 2018-08-01 | 2018-08-14 | 102610 |  |  |  | 52173.9d |  | MH-Wtg |  |  | 003 |
| 102670 |  | Elevation & section details (Deleted) | 8d | 2018-08-01 | 2018-08-10 |  |  |  |  | 52175.9d |  | MH-Wtg |  |  | 003 |
| 102680 |  | Roof details (Deleted) | 5d | 2018-08-01 | 2018-08-07 |  |  |  |  | 52178.9d |  | MH-Wtg |  |  | 003 |
|  | 33 | **B114B- Weighbridge, Logistics** |  | 2016-12-02 | 2018-08-14 |  |  |  |  |  |  |  |  |  |  |
|  | 1 | **Civil Architectural Drawings (CAD)** |  | 2016-12-02 | 2018-08-10 |  |  |  |  |  |  |  |  |  |  |
| 102690 |  | Floor plan details | 128d | 2016-12-02 A | 2016-12-02 A | 102760 | 100% | 2018-02-16 | 2018-08-14 |  | start on 2016-12-02 | MH-Wtg [9.71 h] | 4,370 | 4,370 | 003 |
| 102710 |  | Door & window details | 5d | 2016-12-02 A | 2016-12-02 A | 102730 | 100% | 2017-09-06 | 2017-09-12 |  |  | MH-Wtg [2.43 h] | 1,094 | 1,094 | 003 |
| 102700 |  | Elevation & section details | 95d | 2017-01-25 A | 2017-01-25 A | 102690 | 100% | 2018-08-15 | 2018-12-25 |  | start on 2017-01-25 | MH-Wtg [4.86 h] | 2,187 | 2,187 | 003 |
| 102720 |  | Flooring and ceiling details | 5d | 2017-09-18 A | 2017-09-18 A | 102730 | 100% | 2018-06-13 | 2018-06-19 |  |  | MH-Wtg [2.43 h] | 1,094 | 1,094 | 003 |
| 102730 |  | Sanitary details | 8d | 2018-08-01 | 2018-08-10 | 102790 |  |  |  | 52175.9d |  | MH-Wtg [4.86 h] | 2,187 |  | 003 |
|  | 2 | **Civil Concrete Drawings (CCD)** |  | 2017-06-23 | 2018-08-14 |  |  |  |  |  |  |  |  |  |  |
| 102750 |  | Foundation & column details | 8d | 2017-06-23 A | 2017-12-18 A | 102610, 113710 FF+20d | 100% | 2017-06-27 | 2017-07-06 |  |  | MH-Wtg [29 h] | 13,050 | 13,050 | 003 |
| 102760 |  | Plinth beam details | 5d | 2017-06-23 A | 2017-06-23 A | 102750 | 100% | 2017-07-07 | 2017-07-13 |  |  | MH-Wtg [10.93 h] | 4,919 | 4,919 | 003 |
| 102780 |  | Lintel level details | 10d | 2017-06-23 A | 2017-06-23 A | 102770 | 100% | 2017-07-21 | 2017-08-03 |  |  | MH-Wtg [10.93 h] | 4,919 | 4,919 | 003 |
| 102790 |  | Beam & slab details | 15d | 2017-06-23 A | 2017-06-23 A | 102780 FS-5d | 100% | 2017-07-28 | 2017-08-18 |  |  | MH-Wtg [14.57 h] | 6,557 | 6,557 | 003 |
| 102770 |  | Grade slab details | 5d | 2017-09-18 A | 2017-09-18 A | 102760 | 100% | 2017-09-08 | 2017-09-14 |  |  | MH-Wtg [7.29 h] | 3,281 | 3,281 | 003 |
| 102800 |  | Staircase details (Deleted) | 10d | 2018-08-01 | 2018-08-14 | 102790 FF |  |  |  | 52173.9d |  | MH-Wtg |  |  | 003 |
|  | 25 | **B114C- Weighbridge, Logistics** |  | 2017-07-22 | 2018-09-25 |  |  |  |  |  |  |  |  |  |  |
|  | 1 | **Civil Architectural Drawings (CAD)** |  | 2017-07-22 | 2018-08-10 |  |  |  |  |  |  |  |  |  |  |
| 111430 |  | Floor plan details | 128d | 2017-07-22 A | 2017-07-22 A | 111500 | 100% | 2018-02-16 | 2018-08-14 |  | start on 2016-12-02 | MH-Wtg [9.71 h] | 4,370 | 4,370 | 003 |
| 111440 |  | Elevation & section details | 95d | 2017-07-22 A | 2017-07-22 A | 111430 | 100% | 2018-08-15 | 2018-12-25 |  | start on 2017-01-25 | MH-Wtg [4.86 h] | 2,187 | 2,187 | 003 |
| 111450 |  | Door & window details | 5d | 2017-07-22 A | 2017-07-22 A |  | 100% | 2017-09-06 | 2017-09-12 |  |  | MH-Wtg [2.43 h] | 1,094 | 1,094 | 003 |
| 111460 |  | Flooring and ceiling details | 5d | 2017-08-31 A | 2017-08-31 A | 111470 | 100% | 2018-06-13 | 2018-06-19 |  |  | MH-Wtg [2.43 h] | 1,094 | 1,094 | 003 |
| 111470 |  | Sanitary details (Deleted) | 8d | 2018-08-01 | 2018-08-10 | 111530 |  |  |  | 52175.9d |  | MH-Wtg |  |  | 003 |

| ID | WBS | Activity | Duration | Start | Finish | Predecessors | Complete | Planned start | Planned finish | Total float | Free float | Constraint | Resources | Cost | Actual cost | UNIT DESCRIPTION |
| --- | --- | --- | --- | --- | --- | --- | --- | --- | --- | --- | --- | --- | --- | --- | --- | --- |
|  | 2 | **Civil Concrete Drawings (CCD)** |  | 2017-09-22 | 2018-09-25 |  |  |  |  |  |  |  |  |  |  |  |
| 111490 |  | Foundation & column details | 8d | 2017-09-22 A | 2018-09-25 A | 102750 SS, 113710 FF+20d | 100% | 2017-09-01 | 2017-09-12 |  |  |  | MH-Wtg [29 h] | 13,050 | 13,050 | 003 |
| 111500 |  | Plinth beam details | 5d | 2017-09-22 A | 2017-09-25 A | 111490 | 100% | 2017-09-13 | 2017-09-19 |  |  |  | MH-Wtg [10.93 h] | 4,919 | 4,919 | 003 |
| 111510 |  | Grade slab details | 5d | 2017-09-22 A | 2017-09-25 A | 111500 | 100% | 2017-09-20 | 2017-09-26 |  |  |  | MH-Wtg [7.29 h] | 3,281 | 3,281 | 003 |
| 111520 |  | Lintel level details | 10d | 2017-09-22 A | 2017-09-25 A | 111510 | 100% | 2017-09-27 | 2017-10-10 |  |  |  | MH-Wtg [10.93 h] | 4,919 | 4,919 | 003 |
| 111530 |  | Beam & slab details | 15d | 2017-09-22 A | 2017-09-25 A | 111520 FS-5d | 100% | 2017-10-04 | 2017-10-24 |  |  |  | MH-Wtg [14.57 h] | 6,557 | 6,557 | 003 |
| 111540 |  | Staircase details (Deleted) | 10d | 2018-08-01 | 2018-08-14 | 111530 FF |  |  |  | 52173.9d |  |  | MH-Wtg |  |  | 003 |
|  | 34 | **B115A- Car Parking** |  | 2018-08-01 | 2018-08-27 |  |  |  |  |  |  |  |  |  |  |  |
|  | 1 | **Civil Concrete Drawings (CCD)** |  | 2018-08-01 | 2018-08-15 |  |  |  |  |  |  |  |  |  |  |  |
| 102810 |  | Foundation & column details | 5d | 2018-08-01 | 2018-08-07 |  |  |  |  | -32d | 0d | start on or after 2018-02-15 | MH-Wtg [4.66 h] | 2,097 |  | 003 |
| 102820 |  | Plinth beam details | 3d | 2018-08-08 | 2018-08-10 | 102810 |  |  |  | 52164.9d | 0d |  | MH-Wtg [2.33 h] | 1,049 |  | 003 |
| 102830 |  | Grade slab details | 3d | 2018-08-13 | 2018-08-15 | 102820 |  |  |  | 52172.9d |  |  | MH-Wtg [0.78 h] | 351 |  | 003 |
|  | 2 | **Civil Structural Drawings (CSD)** |  | 2018-08-13 | 2018-08-27 |  |  |  |  |  |  |  |  |  |  |  |
| 102840 |  | Steel framing plan | 5d | 2018-08-13 | 2018-08-17 | 102820 |  |  |  | 52164.9d | 0d |  | MH-Wtg [5.83 h] | 2,624 |  | 003 |
| 102850 |  | Elevation & section details | 3d | 2018-08-20 | 2018-08-22 | 102840 |  |  |  | 52164.9d | 0d |  | MH-Wtg [3.5 h] | 1,575 |  | 003 |
| 102860 |  | Roof details | 3d | 2018-08-23 | 2018-08-27 | 102850 |  |  |  | 52164.9d |  |  | MH-Wtg [2.33 h] | 1,049 |  | 003 |
|  | 35 | **B115B- Two Wheeler Parking** |  | 2018-08-01 | 2018-08-27 |  |  |  |  |  |  |  |  |  |  |  |
|  | 1 | **Civil Concrete Drawings (CCD)** |  | 2018-08-01 | 2018-08-15 |  |  |  |  |  |  |  |  |  |  |  |
| 102870 |  | Foundation & column details | 5d | 2018-08-01 | 2018-08-07 | 102810 SS |  |  |  | -15d | 0d |  | MH-Wtg [4.66 h] | 2,097 |  | 003 |
| 102880 |  | Plinth beam details | 3d | 2018-08-08 | 2018-08-10 | 102870 |  |  |  | -15d | 0d |  | MH-Wtg [2.33 h] | 1,049 |  | 003 |
| 102890 |  | Grade slab details | 3d | 2018-08-13 | 2018-08-15 | 102880 |  |  |  | 52172.9d |  |  | MH-Wtg [0.78 h] | 351 |  | 003 |
|  | 2 | **Civil Structural Drawings (CSD)** |  | 2018-08-13 | 2018-08-27 |  |  |  |  |  |  |  |  |  |  |  |
| 102900 |  | Steel framing plan | 5d | 2018-08-13 | 2018-08-17 | 102880 |  |  |  | -15d | 0d |  | MH-Wtg [5.83 h] | 2,624 |  | 003 |
| 102910 |  | Elevation & section details | 3d | 2018-08-20 | 2018-08-22 | 102900 |  |  |  | -15d | 0d |  | MH-Wtg [3.5 h] | 1,575 |  | 003 |
| 102920 |  | Roof details | 3d | 2018-08-23 | 2018-08-27 | 102910 |  |  |  | -15d | 0d |  | MH-Wtg [2.33 h] | 1,049 |  | 003 |

| ID | WBS | Activity | Duration | Start | Finish | Predecessors | Complete | Planned start | Planned finish | Total float | Free float | Constraint | Resources | Cost | Actual cost | UNIT DESCRIPTION |
| --- | --- | --- | --- | --- | --- | --- | --- | --- | --- | --- | --- | --- | --- | --- | --- | --- |
|  | 47 | **B115C- Truck Parking** |  | 2018-08-21 | 2018-08-27 |  |  |  |  |  |  |  |  |  |  |  |
|  | 1 | **Civil Concrete Drawings (CCD)** |  | 2018-08-21 | 2018-08-27 |  |  |  |  |  |  |  |  |  |  |  |
| 102921 |  | Paving details | 5d | 2018-08-21 | 2018-08-27 | 102920 FF |  |  |  | -15d | 16d |  | MH-Wtg [19.43 h] | 8,744 |  | 003 |
|  | 38 | **B116A- Security Guard House** |  | 2016-12-02 | 2017-08-31 |  |  |  |  |  |  |  |  |  |  |  |
|  | 1 | **Civil Architectural Drawings (CAD)** |  | 2016-12-02 | 2017-08-31 |  |  |  |  |  |  |  |  |  |  |  |
| 103060 |  | Floor plan details | 158d | 2016-12-02 A | 2017-08-31 A | 103110 | 100% | 2018-04-04 | 2018-11-09 |  |  | start on 2016-12-02 | MH-Wtg [2.43 h] | 1,094 | 1,094 | 003 |
| 103070 |  | Elevation & section details | 3d | 2017-08-16 A | 2017-08-31 A | 103060 | 100% | 2017-09-15 | 2017-09-19 |  |  |  | MH-Wtg [1.46 h] | 657 | 657 | 003 |
| 103080 |  | Door & window details | 3d | 2017-08-16 A | 2017-08-31 A | 103140 | 100% | 2017-10-18 | 2017-10-20 |  |  |  | MH-Wtg [0.49 h] | 221 | 221 | 003 |
| 103090 |  | Flooring and ceiling details | 3d | 2017-08-31 A | 2017-08-31 A | 103080 | 100% | 2018-06-01 | 2018-06-05 |  |  |  | MH-Wtg [0.49 h] | 221 | 221 | 003 |
|  | 2 | **Civil Concrete Drawings (CCD)** |  | 2017-08-19 | 2017-08-19 |  |  |  |  |  |  |  |  |  |  |  |
| 103100 |  | Foundation & column details | 5d | 2017-08-19 A | 2017-08-19 A |  | 100% | 2017-09-22 | 2017-09-28 |  |  |  | MH-Wtg [4.37 h] | 1,967 | 1,967 | 003 |
| 103110 |  | Plinth beam details | 3d | 2017-08-19 A | 2017-08-19 A | 103100 | 100% | 2017-09-29 | 2017-10-03 |  |  |  | MH-Wtg [2.91 h] | 1,310 | 1,310 | 003 |
| 103120 |  | Grade slab details | 2d | 2017-08-19 A | 2017-08-19 A | 103110 | 100% | 2017-10-04 | 2017-10-05 |  |  |  | MH-Wtg [1.46 h] | 657 | 657 | 003 |
| 103130 |  | Lintel level details | 3d | 2017-08-19 A | 2017-08-19 A | 103120 | 100% | 2017-10-06 | 2017-10-10 |  |  |  | MH-Wtg [2.91 h] | 1,310 | 1,310 | 003 |
| 103140 |  | Beam & slab details | 5d | 2017-08-19 A | 2017-08-19 A | 103130 | 100% | 2017-10-11 | 2017-10-17 |  |  |  | MH-Wtg [2.91 h] | 1,310 | 1,310 | 003 |
|  | 29 | **B116B- Security Guard House** |  | 2016-12-02 | 2017-08-31 |  |  |  |  |  |  |  |  |  |  |  |
|  | 1 | **Civil Architectural Drawings (CAD)** |  | 2016-12-02 | 2017-08-31 |  |  |  |  |  |  |  |  |  |  |  |
| 111580 |  | Floor plan details | 158d | 2016-12-02 A | 2017-08-31 A | 111630 | 100% | 2018-04-04 | 2018-11-09 |  |  | start on 2016-12-02 | MH-Wtg [2.43 h] | 1,094 | 1,094 | 003 |
| 111590 |  | Elevation & section details | 3d | 2017-08-16 A | 2017-08-31 A | 111580 | 100% | 2017-09-15 | 2017-09-19 |  |  |  | MH-Wtg [1.46 h] | 657 | 657 | 003 |
| 111600 |  | Door & window details | 3d | 2017-08-16 A | 2017-08-31 A | 111660 | 100% | 2017-10-18 | 2017-10-20 |  |  |  | MH-Wtg [0.49 h] | 221 | 221 | 003 |
| 111610 |  | Flooring and ceiling details | 3d | 2017-08-31 A | 2017-08-31 A | 111600 | 100% | 2018-06-01 | 2018-06-05 |  |  |  | MH-Wtg [0.49 h] | 221 | 221 | 003 |
|  | 2 | **Civil Concrete Drawings (CCD)** |  | 2017-08-19 | 2017-08-19 |  |  |  |  |  |  |  |  |  |  |  |
| 111620 |  | Foundation & column details | 5d | 2017-08-19 A | 2017-08-19 A | 103100 SS | 100% | 2017-09-22 | 2017-09-28 |  |  |  | MH-Wtg [4.37 h] | 1,967 | 1,967 | 003 |
| 111630 |  | Plinth beam details | 3d | 2017-08-19 A | 2017-08-19 A | 111620 | 100% | 2017-09-29 | 2017-10-03 |  |  |  | MH-Wtg [2.91 h] | 1,310 | 1,310 | 003 |
| 111640 |  | Grade slab details | 2d | 2017-08-19 A | 2017-08-19 A | 111630 | 100% | 2017-10-04 | 2017-10-05 |  |  |  | MH-Wtg [1.46 h] | 657 | 657 | 003 |
| 111650 |  | Lintel level details | 3d | 2017-08-19 A | 2017-08-19 A | 111640 | 100% | 2017-10-06 | 2017-10-10 |  |  |  | MH-Wtg [2.91 h] | 1,310 | 1,310 | 003 |
| 111660 |  | Beam & slab details | 5d | 2017-08-19 A | 2017-08-19 A | 111650 | 100% | 2017-10-11 | 2017-10-17 |  |  |  | MH-Wtg [2.91 h] | 1,310 | 1,310 | 003 |

| ID | WBS | Activity | Duration | Start | Finish | Predecessors | Complete | Planned start | Planned finish | Total float | Free float | Resources | Cost | Actual cost | UNIT DESCRIPTION |
| --- | --- | --- | --- | --- | --- | --- | --- | --- | --- | --- | --- | --- | --- | --- | --- |
|  | 36 | **B116D- Security Guard House (Deleted)** |  | 2018-08-01 | 2018-08-07 |  |  |  |  |  |  |  |  |  |  |
|  | 1 | **Civil Architectural Drawings (CAD)** |  | 2018-08-01 | 2018-08-07 |  |  |  |  |  |  |  |  |  |  |
| 111670 |  | Floor plan details (Deleted) | 5d | 2018-08-01 | 2018-08-07 |  |  |  |  | 52178.9d |  | MH-Wtg |  |  | 003 |
| 111680 |  | Elevation & section details (Deleted) | 3d | 2018-08-01 | 2018-08-03 |  |  |  |  | 52180.9d |  | MH-Wtg |  |  | 003 |
| 112410 |  | Door & window details (Deleted) | 3d | 2018-08-01 | 2018-08-03 |  |  |  |  | 52180.9d |  | MH-Wtg |  |  | 003 |
| 112420 |  | Flooring and ceiling details (Deleted) | 3d | 2018-08-01 | 2018-08-03 |  |  |  |  | 52180.9d |  | MH-Wtg |  |  | 003 |
|  | 2 | **Civil Concrete Drawings (CCD)** |  | 2018-08-01 | 2018-08-07 |  |  |  |  |  |  |  |  |  |  |
| 112430 |  | Foundation & column details (Deleted) | 5d | 2018-08-01 | 2018-08-07 | 111620 SS |  |  |  | 52178.9d |  | MH-Wtg |  |  | 003 |
| 112440 |  | Plinth beam details (Deleted) | 3d | 2018-08-01 | 2018-08-03 |  |  |  |  | 52178.9d | 0d | MH-Wtg |  |  | 003 |
| 112460 |  | Lintel level details (Deleted) | 2d | 2018-08-01 | 2018-08-02 |  |  |  |  | 52181.9d |  | MH-Wtg |  |  | 003 |
| 112470 |  | Beam & slab details (Deleted) | 5d | 2018-08-01 | 2018-08-07 |  |  |  |  | 52178.9d |  | MH-Wtg |  |  | 003 |
| 112450 |  | Grade slab details (Deleted) | 2d | 2018-08-06 | 2018-08-07 | 112440 |  |  |  | 52178.9d |  | MH-Wtg |  |  | 003 |
|  | 39 | **B117- Piperack** |  | 2017-08-18 | 2018-08-28 |  |  |  |  |  |  |  |  |  |  |
|  | 1 | **Civil Concrete Drawings (CCD)** |  | 2017-08-18 | 2018-08-28 |  |  |  |  |  |  |  |  |  |  |
| 103160 |  | Foundation & column details | 20d | 2017-08-18 A | 2017-10-11 A | 105790 | 100% | 2017-08-01 | 2017-08-29 |  |  | MH-Wtg [182.63 h] | 82,184 | 82,184 | 003 |
| 103150 |  | Piling details (Deleted) | 20d | 2018-08-01 | 2018-08-28 | 105790 |  |  |  | 52163.9d |  | MH-Wtg |  |  | 003 |
|  | 2 | **Civil Structural Drawings (CSD)** |  | 2017-08-24 | 2017-09-25 |  |  |  |  |  |  |  |  |  |  |
| 103170 |  | Steel framing plan | 40d | 2017-08-24 A | 2017-09-25 A | 103160 | 100% | 2017-09-29 | 2017-11-23 |  |  | MH-Wtg [85.23 h] | 38,354 | 38,354 | 003 |
| 103180 |  | Elevation & section details | 30d | 2017-08-24 A | 2017-09-25 A | 103170 FS-15d | 100% | 2017-11-03 | 2017-12-14 |  |  | MH-Wtg [36.53 h] | 16,439 | 16,439 | 003 |
|  | 43 | **B120- Gas Metering Station (Deleted)** |  | 2018-08-01 | 2018-08-14 |  |  |  |  |  |  |  |  |  |  |
|  | 2 | **Civil Concrete Drawings (CCD)** |  | 2018-08-01 | 2018-08-14 |  |  |  |  |  |  |  |  |  |  |
| 112480 |  | Equipment foundation details (Deleted) | 10d | 2018-08-01 | 2018-08-14 |  |  |  |  | 52173.9d |  | MH-Wtg |  |  | 003 |
| 112500 |  | Grade slab details (Deleted) | 7d | 2018-08-01 | 2018-08-09 |  |  |  |  | 52176.9d |  | MH-Wtg |  |  | 003 |
| 112510 |  | Fencing details (Deleted) | 3d | 2018-08-01 | 2018-08-03 |  |  |  |  | 52180.9d |  | MH-Wtg |  |  | 003 |

| ID | WBS | Activity | Duration | Start | Finish | Predecessors | Complete | Planned start | Planned finish | Total float | Free float | Constraint | Resources | Cost | Actual cost | UNIT DESCRIPTION |
| --- | --- | --- | --- | --- | --- | --- | --- | --- | --- | --- | --- | --- | --- | --- | --- | --- |
|  | 44 | **B121- Engineering Store** |  | 2016-12-02 | 2018-08-31 |  |  |  |  |  |  |  |  |  |  |  |
|  | 1 | **Civil Architectural Drawings (CAD)** |  | 2016-12-02 | 2017-09-23 |  |  |  |  |  |  |  |  |  |  |  |
| 112530 |  | Floor plan details | 89d | 2016-12-02 A | 2017-05-30 A | 119510 | 100% | 2017-09-01 | 2018-01-03 |  |  | start on 2016-12-02 | MH-Wtg [14.25 h] | 6,413 | 6,413 | 003 |
| 112540 |  | Elevation & section details | 52d | 2017-01-31 A | 2017-05-30 A | 112530 | 100% | 2018-01-04 | 2018-03-19 |  |  | start on 2017-01-31 | MH-Wtg [7.12 h] | 3,204 | 3,204 | 003 |
| 119460 |  | Door & window details | 5d | 2017-08-10 A | 2017-08-10 A | 119480 | 100% | 2017-09-13 | 2017-09-19 |  |  |  | MH-Wtg [3.56 h] | 1,602 | 1,602 | 003 |
| 119470 |  | Flooring and ceiling details | 5d | 2017-08-10 A | 2017-08-10 A | 119460 | 100% | 2017-09-20 | 2017-09-26 |  |  |  | MH-Wtg [3.56 h] | 1,602 | 1,602 | 003 |
| 119480 |  | Sanitary details | 8d | 2017-09-23 A | 2017-09-23 A | 119540 | 100% | 2017-09-01 | 2017-09-12 |  |  |  | MH-Wtg [7.12 h] | 3,204 | 3,204 | 003 |
|  | 2 | **Civil Concrete Drawings (CCD)** |  | 2017-05-16 | 2018-08-16 |  |  |  |  |  |  |  |  |  |  |  |
| 119500 |  | Foundation & column details | 10d | 2017-05-16 A | 2017-05-19 A | 113112 FS+10d | 100% | 2017-05-01 | 2017-05-12 |  |  |  | MH-Wtg [37.4 h] | 16,830 | 16,830 | 003 |
| 119510 |  | Plinth beam details | 8d | 2017-05-16 A | 2017-05-19 A | 119500 | 100% | 2017-05-15 | 2017-05-24 |  |  |  | MH-Wtg [10.69 h] | 4,811 | 4,811 | 003 |
| 119520 |  | Grade slab details | 5d | 2017-05-16 A | 2017-05-19 A | 119510 | 100% | 2017-05-25 | 2017-05-31 |  |  |  | MH-Wtg [10.69 h] | 4,811 | 4,811 | 003 |
| 119530 |  | Lintel level details | 10d | 2017-06-01 A | 2017-07-31 A | 119520 | 100% | 2017-06-01 | 2017-06-14 |  |  |  | MH-Wtg [16.03 h] | 7,214 | 7,214 | 003 |
| 119540 |  | Beam & slab details | 15d | 2017-06-01 A | 2017-07-31 A | 119530 FS-5d | 100% | 2017-06-08 | 2017-06-28 |  |  |  | MH-Wtg [21.37 h] | 9,617 | 9,617 | 003 |
| 119550 |  | Staircase details | 10d | 2017-06-01 A | 2017-07-31 A | 119540 FF | 100% | 2017-06-15 | 2017-06-28 |  |  |  | MH-Wtg [10.69 h] | 4,811 | 4,811 | 003 |
| 119490 |  | Piling details (Deleted) | 12d | 2018-08-01 | 2018-08-16 |  |  |  |  | 52171.9d |  |  | MH-Wtg |  |  | 003 |
|  | 3 | **Civil Structural Drawings (CSD)** |  | 2018-08-01 | 2018-08-31 |  |  |  |  |  |  |  |  |  |  |  |
| 119560 |  | Steel framing plan (Vendor scope) | 10d | 2018-08-01 | 2018-08-14 | 119510 |  |  |  | 52160.9d | 0d |  | MH-Wtg |  |  | 003 |
| 119570 |  | Elevation & section details (Vendor scope) | 8d | 2018-08-15 | 2018-08-24 | 119560 |  |  |  | 52160.9d | 0d |  | MH-Wtg |  |  | 003 |
| 119580 |  | Roof details (vendor scope) | 5d | 2018-08-27 | 2018-08-31 | 119570 |  |  |  | 52160.9d |  |  | MH-Wtg |  |  | 003 |
|  | 45 | **B122- Engineering Workshop** |  | 2017-05-16 | 2018-09-14 |  |  |  |  |  |  |  |  |  |  |  |
|  | 2 | **Civil Concrete Drawings (CCD)** |  | 2017-05-16 | 2017-07-31 |  |  |  |  |  |  |  |  |  |  |  |
| 119650 |  | Foundation & column details | 10d | 2017-05-16 A | 2017-05-19 A | 119500 SS | 100% | 2017-07-03 | 2017-07-14 |  |  |  | MH-Wtg [42.74 h] | 19,233 | 19,233 | 003 |
| 119660 |  | Plinth beam details | 8d | 2017-05-16 A | 2017-05-19 A | 119650 | 100% | 2017-05-15 | 2017-05-24 |  |  |  | MH-Wtg [28.5 h] | 12,825 | 12,825 | 003 |
| 119670 |  | Grade slab details | 5d | 2017-05-16 A | 2017-05-19 A | 119660 | 100% | 2017-05-25 | 2017-05-31 |  |  |  | MH-Wtg [14.25 h] | 6,413 | 6,413 | 003 |
| 119680 |  | Lintel level details | 5d | 2017-06-01 A | 2017-07-31 A | 119670 | 100% | 2017-06-01 | 2017-06-07 |  |  |  | MH-Wtg [28.5 h] | 12,825 | 12,825 | 003 |
| 119690 |  | Beam & slab details | 5d | 2017-06-01 A | 2017-07-31 A | 119680 FS-5d | 100% | 2017-06-01 | 2017-06-07 |  |  |  | MH-Wtg [28.5 h] | 12,825 | 12,825 | 003 |

| ID | WBS | Activity | Duration | Start | Finish | Predecessors | Complete | Remaining | Planned start | Planned finish | Total float | Free float | Constraint | Resources | Cost | Actual cost | UNIT DESCRIPTION |
| --- | --- | --- | --- | --- | --- | --- | --- | --- | --- | --- | --- | --- | --- | --- | --- | --- | --- |
|  | 3 | **Civil Structural Drawings (CSD)** |  | 2018-08-01 | 2018-09-14 |  |  |  |  |  |  |  |  |  |  |  |  |
| 119710 |  | Steel framing plan (Vendor scope) | 15d | 2018-08-01 | 2018-08-21 | 119660 |  |  |  |  | 52150.9d | 0d |  | MH-Wtg |  |  | 003 |
| 119720 |  | Elevation & section details (Vendor scope) | 10d | 2018-08-22 | 2018-09-04 | 119710 |  |  |  |  | 52150.9d | 0d |  | MH-Wtg |  |  | 003 |
| 119730 |  | Roof details (vendor scope) | 8d | 2018-09-05 | 2018-09-14 | 119720 |  |  |  |  | 52150.9d |  |  | MH-Wtg |  |  | 003 |
|  | 55 | **B123- Ammonia Scrubber** |  | 2018-03-29 | 2018-07-04 |  |  |  |  |  |  |  |  |  |  |  |  |
| A126600 |  | Steel framing plan | 10d | 2018-03-29 A | 2018-03-29 A | 113100.2 FS+10d | 100% |  | 2018-03-01 | 2018-03-14 |  |  |  | MH-Wtg [30 h] | 13,500 | 13,500 | 003 |
| A126610 |  | Elevation & section details | 8d | 2018-03-29 A | 2018-03-29 A | A126600 FF | 100% |  | 2018-03-05 | 2018-03-14 |  |  |  | MH-Wtg [20 h] | 9,000 | 9,000 | 003 |
| A126580 |  | Foundation & column details | 10d | 2018-03-30 A | 2018-03-30 A | A126610 | 100% |  | 2018-03-15 | 2018-03-28 |  |  |  | MH-Wtg [32 h] | 14,400 | 14,400 | 003 |
| A126590 |  | Equipment foundations | 5d | 2018-07-04 A | 2018-07-04 A | A126580 FS+5d | 100% |  | 2018-06-01 | 2018-06-07 |  |  |  | MH-Wtg [10 h] | 4,500 | 4,500 | 003 |
|  | 40 | **BXXX- Roads & Drains** |  | 2017-03-03 | 2017-06-06 |  |  |  |  |  |  |  |  |  |  |  |  |
|  | 1 | **Civil Concrete Drawings (CCD)** |  | 2017-03-03 | 2017-06-06 |  |  |  |  |  |  |  |  |  |  |  |  |
| 103190 |  | Road layout details | 8d | 2017-03-03 A | 2017-05-19 A | 103410 | 100% |  | 2017-05-01 | 2017-05-10 |  |  | finish on or after 2017-03-15 | MH-Wtg [42.74 h] | 19,233 | 19,233 | 003 |
| 103200 |  | Road section details | 10d | 2017-03-03 A | 2017-05-19 A | 103190 FF | 100% |  | 2017-05-01 | 2017-05-12 |  |  |  | MH-Wtg [21.37 h] | 9,617 | 9,617 | 003 |
| 103210 |  | Drain layout details | 8d | 2017-06-06 A | 2017-06-06 A | 103190 | 100% |  | 2017-06-13 | 2017-06-22 |  |  |  | MH-Wtg [85.49 h] | 38,471 | 38,471 | 003 |
| 103220 |  | Drain section details | 20d | 2017-06-06 A | 2017-06-06 A | 103210 FF | 100% |  | 2017-06-01 | 2017-06-28 |  |  |  | MH-Wtg [64.12 h] | 28,854 | 28,854 | 003 |
|  | 52 | **BXXX- Construction Power** |  | 2017-06-19 | 2017-08-18 |  |  |  |  |  |  |  |  |  |  |  |  |
| A126040 |  | Foundation details for transformer | 1d | 2017-06-19 A | 2017-06-22 A |  | 100% |  | 2017-06-01 | 2017-06-01 |  |  |  |  |  |  | 003 |
| A126050 |  | Foundation detail for ICOG panel | 1d | 2017-06-22 A | 2017-06-22 A |  | 100% |  | 2017-06-01 | 2017-06-01 |  |  |  |  |  |  | 003 |
| A126180 |  | Foundation detail for Compact substation | 1d | 2017-08-10 A | 2017-08-18 A |  | 100% |  | 2017-08-01 | 2017-08-01 |  |  |  |  |  |  | 003 |
|  | 3 | **Material Take Off (MTO)** |  | 2017-08-11 | 2018-08-14 |  |  |  |  |  |  |  |  |  |  |  |  |
| 103240 |  | MTO for Structural steel | 20d | 2017-08-11 A | 2018-08-14 | 100530, 100620, 100970 FF, 103180 | 50% | 10d | 2017-12-15 | 2018-01-11 | 52173.9d |  |  | MH-Wtg [163.04 h] | 73,368 | 72,634 | 003 |
| 103230 |  | MTO for Cement & reinforcement steel | 25d | 2018-06-01 A | 2018-08-14 | 100480, 100570, 101770, 102410, 100740, 101570, 101240.8 | 60% | 10d | 2017-12-06 | 2018-01-09 | 52173.9d |  |  | MH-Wtg [244.56 h] | 110,052 | 109,148 | 003 |
|  | 4 | **Enquiry/Tenders** |  | 2016-10-25 | 2017-08-02 |  |  |  |  |  |  |  |  |  |  |  |  |
| 103249 |  | Tender for Soil testing | 1d | 2016-10-25 A | 2016-10-25 A | 103410 | 100% |  | 2017-06-02 | 2017-06-02 |  |  | start on 2016-10-25 | MH-Wtg [81.52 h] | 36,684 | 36,684 | 003 |
| 103251 |  | Tender for Boundary wall | 27d | 2016-10-28 A | 2016-12-05 A | 103249 | 100% |  | 2017-06-05 | 2017-07-11 |  |  | start on 2016-10-28 | MH-Wtg [81.52 h] | 36,684 | 36,684 | 003 |
| 103250 |  | Tender for Piling work | 58d | 2016-11-10 A | 2017-01-30 A | 100030 | 100% |  | 2017-07-11 | 2017-09-28 |  |  | start on 2016-11-10 | MH-Wtg [203.8 h] | 91,710 | 91,710 | 003 |
| 103252 |  | Enquiry for Pre-fabricated structure | 3d | 2016-12-29 A | 2017-01-02 A |  | 100% |  | 2017-03-01 | 2017-03-03 |  |  | start on 2016-12-29 | MH-Wtg [40.76 h] | 18,342 | 18,342 | 003 |
| 103252.1 |  | Tender for Civil & structural work (Part-I) | 10d | 2017-03-23 A | 2017-03-23 A |  | 100% |  | 2017-05-01 | 2017-05-12 |  |  | finish on 2017-02-28 | MH-Wtg [81.52 h] | 36,684 | 36,684 | 003 |
| 103261 |  | Tender for Roads & Drains (Covered in Part I & II) | 10d | 2017-03-23 A | 2017-08-02 A | 103190, 103260 FF | 100% |  | 2017-05-11 | 2017-05-24 |  |  | finish on or after 2017-03-30 | MH-Wtg [81.52 h] | 36,684 | 36,684 | 003 |
| 103260 |  | Tender for Civil & structural work (Part-II) | 14d | 2017-06-30 A | 2017-08-02 A | 103660, 105240, 105510, 104040, 104400, 109510, 106691 FF+5d | 100% |  | 2017-06-13 | 2017-06-30 |  |  |  | MH-Wtg [122.28 h] | 55,026 | 55,026 | 003 |
| 103270 |  | Tender for Architectural work (Covered in Part I & II) | 10d | 2017-06-30 A | 2017-08-02 A | 102340 | 100% |  | 2017-08-14 | 2017-08-28 |  |  |  | MH-Wtg [40.76 h] | 18,342 | 18,342 | 003 |
| 103280 |  | Tender for Acid resistant tiling (Covered in Part-II) | 10d | 2017-06-30 A | 2017-08-02 A | 103270 | 100% |  | 2017-08-16 | 2017-08-29 |  |  |  | MH-Wtg [40.76 h] | 18,342 | 18,342 | 003 |
| 103290 |  | Tender for Industrial painting (Covered in Part I & II) | 10d | 2017-06-30 A | 2017-08-02 A | 103280 | 100% |  | 2017-09-12 | 2017-09-25 |  |  |  | MH-Wtg [40.76 h] | 18,342 | 18,342 | 003 |
| 114330 |  | Enquiry for Rolling shutter | 1d | 2017-08-01 A | 2017-08-01 A |  | 100% |  |  |  |  |  |  |  |  |  | 003 |

| ID | WBS | Activity | Duration | Start | Finish | Predecessors | Complete | Planned start | Planned finish | Constraint | Resources | Cost | Actual cost | UNIT DESCRIPTION |
| --- | --- | --- | --- | --- | --- | --- | --- | --- | --- | --- | --- | --- | --- | --- |
|  | 3 | **Mechanical** |  | 2016-10-17 | 2018-04-27 |  |  |  |  |  |  |  |  |  |
|  | 1 | **Basic Documents** |  | 2016-10-17 | 2017-01-30 |  |  |  |  |  |  |  |  |  |
| 103300 |  | Design basis | 1d | 2016-10-17 A | 2016-10-17 A | 100050 SS | 100% | 2017-03-01 | 2017-03-01 | start on 2016-10-17 | MH-Wtg [275.13 h] | 123,809 | 123,809 | 003 |
| 103310 |  | Standard drawings | 10d | 2017-01-30 A | 2017-01-30 A | 103350 FF | 100% | 2017-05-26 | 2017-06-08 |  | MH-Wtg [30.57 h] | 13,757 | 13,757 | 003 |
|  | 2 | **Detail Documents** |  | 2016-11-11 | 2018-01-23 |  |  |  |  |  |  |  |  |  |
| 103340 |  | Design calculations for Absorber | 13d | 2016-11-11 A | 2016-11-29 A | 103330 FF | 100% | 2017-05-29 | 2017-06-14 |  | MH-Wtg [1039.38 h] | 467,721 | 467,721 | 001 |
| 103330 |  | EGD & EDD WNA Plant equipments | 71d | 2016-12-23 A | 2017-09-13 A | 100100 FF+10d | 100% | 2017-03-08 | 2017-06-14 |  | MH-Wtg [1039.38 h] | 467,721 | 467,721 | 001 |
| 103320 |  | EGD & EDD for OSBL equipments | 89d | 2017-01-30 A | 2017-08-31 A | 100091 FF+15d | 100% | 2017-05-11 | 2017-09-13 |  | MH-Wtg [3118.15 h] | 1,403,168 | 1,403,168 | 003 |
| 103330.1 |  | EGD & EDD for additional scope (MOM-078) equipments | 15d | 2017-12-18 A | 2018-01-23 A |  | 100% | 2017-12-01 | 2017-12-21 |  |  |  |  | 003 |
|  | 3 | **Enquiry/Tenders** |  | 2016-12-23 | 2018-04-27 |  |  |  |  |  |  |  |  |  |
| 103360 |  | Enquiry for WNA Plant equipments | 76d | 2016-12-23 A | 2017-09-18 A | 103330 SS | 100% | 2017-06-01 | 2017-09-15 |  | MH-Wtg [183.42 h] | 82,539 | 82,539 | 001 |
| 103370 |  | Enquiry for CNA Plant equipments | 26d | 2017-01-17 A | 2017-03-02 A | 100020 | 100% | 2017-03-08 | 2017-04-12 |  | MH-Wtg [122.28 h] | 55,026 | 55,026 | 002 |
| 103350 |  | Enquiry for OSBL equipments | 89d | 2017-01-30 A | 2017-09-18 A | 103320 SS | 100% | 2017-05-11 | 2017-09-13 |  | MH-Wtg [122.28 h] | 55,026 | 55,026 | 003 |
| 103371 |  | Enquiry for Absorber foundation bolts & template | 10d | 2017-05-02 A | 2017-07-15 A |  | 100% | 2017-05-22 | 2017-06-02 | start on or after 2017-05-20 |  |  |  | 001 |
| 103380 |  | Tender for Mechanical erection & piping | 12d | 2017-08-31 A | 2017-09-26 A | 103480, 103700, 105810, 105280 | 100% | 2017-10-06 | 2017-10-23 |  | MH-Wtg [122.28 h] | 55,026 | 55,026 | 003 |
| 103370.1 |  | Enquiry for additional scope (MOM-078) equipments | 10d | 2017-12-28 A | 2018-01-23 A | 103330.1 SS+5d | 100% | 2018-01-01 | 2018-01-12 |  |  |  |  | 003 |
| A126730 |  | Enquiry for Heat train gaskets | 1d | 2018-01-09 A | 2018-01-09 A |  | 100% | 2018-02-01 | 2018-02-01 |  | MH-Wtg [16 h] | 7,200 | 7,200 | 001 |
| A127480 |  | Enquiry for Foundation bolts of existing equipments | 1d | 2018-02-19 A | 2018-02-19 A |  | 100% | 2018-03-01 | 2018-03-01 |  |  |  |  | 001 |
| 103390 |  | Tender for Insulation | 10d | 2018-04-27 A | 2018-04-27 A |  | 100% | 2018-05-01 | 2018-05-14 | finish on or after 2017-11-28 | MH-Wtg [61.14 h] | 27,513 | 27,513 | 003 |
|  | 4 | **Piping & Plant Design** |  | 2016-10-06 | 2018-10-09 |  |  |  |  |  |  |  |  |  |
|  | 1 | **Basic Documents** |  | 2016-10-06 | 2018-03-12 |  |  |  |  |  |  |  |  |  |
| 103410 |  | Plot plan | 67d | 2016-10-06 A | 2017-01-06 A | 000001 | 100% | 2017-03-01 | 2017-06-01 |  | MH-Wtg [713.3 h] | 320,985 | 320,985 | 003 |
| 103400 |  | Design basis | 1d | 2016-10-17 A | 2016-10-17 A | 000001 | 100% | 2017-03-01 | 2017-03-01 |  | MH-Wtg [101.9 h] | 45,855 | 45,855 | 003 |
| 103411 |  | Piping Material Specifications | 20d | 2017-02-27 A | 2017-07-11 A | 100122 | 100% | 2017-03-06 | 2017-03-31 |  | MH-Wtg [76.43 h] | 34,394 | 34,394 | 003 |
| 103420 |  | Drawings for statutory approval | 15d | 2017-06-21 A | 2018-03-01 A | 106200, 105910 FF, 113190 FF-10d | 100% | 2017-06-22 | 2017-07-12 |  | MH-Wtg [76.43 h] | 34,394 | 34,394 | 003 |
| 103430 |  | Standard drawings | 25d | 2018-03-12 A | 2018-03-12 A | 105930 SF | 100% | 2018-03-01 | 2018-04-04 | finish on or after 2017-12-01 | MH-Wtg [50.95 h] | 22,928 | 22,928 | 003 |

| ID | WBS | Activity | Duration | Start | Finish | Predecessors | Complete | Planned start | Planned finish | Constraint | Resources | Cost | Actual cost | UNIT DESCRIPTION |
| --- | --- | --- | --- | --- | --- | --- | --- | --- | --- | --- | --- | --- | --- | --- |
|  | 2 | **Modelling** |  | 2016-11-11 | 2018-10-09 |  |  |  |  |  |  |  |  |  |
|  | 1 | **B101- WNA Plant** |  | 2016-11-24 | 2018-07-20 |  |  |  |  |  |  |  |  |  |
|  | 1 | **30% Modelling** |  | 2016-11-24 | 2018-05-31 |  |  |  |  |  |  |  |  |  |
| 103440 |  | Preliminary layout | 74d | 2016-11-24 A | 2017-02-13 A | 103410, 100060 | 100% | 2017-06-02 | 2017-09-13 | start on 2016-11-24 | MH-Wtg [258.63 h] | 116,384 | 116,384 | 001 |
| 103450 |  | Modelling of structure | 84d | 2016-11-24 A | 2017-09-18 A | 103440 SS+15d | 100% | 2017-06-23 | 2017-10-19 | start on 2016-11-24 | MH-Wtg [25.86 h] | 11,637 | 11,637 | 001 |
| 103460 |  | Modelling of equipments | 104d | 2016-11-24 A | 2018-01-20 A | 103450, 113100.8 FF+15d, 113100.4 FF+15d | 100% | 2017-10-19 | 2018-03-14 | start on 2016-11-24 | MH-Wtg [77.59 h] | 34,916 | 34,916 | 001 |
| 103480 |  | Basic pipe routing | 87d | 2017-01-30 A | 2017-08-04 A | 103460 | 100% | 2018-03-14 | 2018-07-12 | start on 2017-01-30 | MH-Wtg [77.59 h] | 34,916 | 34,916 | 001 |
| 103470 |  | Modelling of pits & trenches | 1d | 2017-01-31 A | 2017-01-31 A | 103440 | 100% | 2017-09-14 | 2017-09-14 | start on 2017-01-31 | MH-Wtg [12.93 h] | 5,819 | 5,819 | 001 |
| 103500 |  | Nozzle orientations | 25d | 2017-06-22 A | 2018-05-31 A | 103480 | 100% | 2017-06-22 | 2017-07-26 |  | MH-Wtg [12.93 h] | 5,819 | 5,819 | 001 |
| 103520 |  | Safety shower locations | 5d | 2017-06-28 A | 2017-08-04 A | 103510 SS | 100% | 2017-06-22 | 2017-06-28 |  | MH-Wtg [12.93 h] | 5,819 | 5,819 | 001 |
| 103490 |  | Preliminary stress analysis | 15d | 2017-10-05 A | 2018-03-08 A | 103480 | 100% | 2017-10-02 | 2017-10-20 |  | MH-Wtg [25.86 h] | 11,637 | 11,637 | 001 |
| 103510 |  | Utility station locations | 5d | 2017-12-14 A | 2017-12-16 A | 103480 | 100% | 2017-12-01 | 2017-12-07 |  | MH-Wtg [12.93 h] | 5,819 | 5,819 | 001 |
|  | 2 | **60% Modelling** |  | 2017-05-03 | 2018-03-20 |  |  |  |  |  |  |  |  |  |
| 103570 |  | Instrument locations | 20d | 2017-05-03 A | 2017-05-03 A | 103530 FF | 100% | 2017-10-13 | 2017-11-09 |  | MH-Wtg [21.55 h] | 9,698 | 9,698 | 001 |
| 103530 |  | Modelling of piping & inline instruments | 50d | 2017-05-10 A | 2017-05-31 A | 103480 | 100% | 2017-05-22 | 2017-07-28 |  | MH-Wtg [344.85 h] | 155,183 | 155,183 | 001 |
| 103540 |  | Modelling of instrument cable trays | 25d | 2017-08-10 A | 2017-10-31 A | 103530 FF | 100% | 2017-10-06 | 2017-11-09 |  | MH-Wtg [172.42 h] | 77,589 | 77,589 | 001 |
| 103550 |  | Modelling of electrical cable trays | 25d | 2017-08-10 A | 2017-10-31 A | 103540 SS | 100% | 2017-10-06 | 2017-11-09 |  | MH-Wtg [172.42 h] | 77,589 | 77,589 | 001 |
| 103610 |  | Preliminary MTO for piping materials | 5d | 2017-08-30 A | 2017-08-30 A | 103530 | 100% | 2017-11-10 | 2017-11-16 | finish on or after 2017-11-15 | MH-Wtg [43.11 h] | 19,400 | 19,400 | 001 |
| 103580 |  | Motor start button locations | 10d | 2017-08-31 A | 2017-08-31 A | 103550 | 100% | 2017-11-10 | 2017-11-23 |  | MH-Wtg [21.55 h] | 9,698 | 9,698 | 001 |
| 103560 |  | Instrument JB locations | 5d | 2017-09-28 A | 2017-09-28 A | 103530 | 100% | 2017-10-23 | 2017-10-27 |  | MH-Wtg [21.55 h] | 9,698 | 9,698 | 001 |
| 103600 |  | Floor/wall cut out locations | 20d | 2017-10-02 A | 2017-10-31 A | 103530 FF | 100% | 2017-10-02 | 2017-10-27 |  | MH-Wtg [21.55 h] | 9,698 | 9,698 | 001 |
| 103590 |  | Modelling of operating platforms | 10d | 2017-11-01 A | 2018-03-20 A | 103530 | 100% | 2017-11-15 | 2017-11-28 |  | MH-Wtg [21.55 h] | 9,698 | 9,698 | 001 |
| 103620 |  | Preliminary MTO for insulation | 3d | 2017-11-03 A | 2017-11-10 A | 103610, 103390 FF-10d | 100% | 2017-11-10 | 2017-11-15 |  | MH-Wtg [21.55 h] | 9,698 | 9,698 | 001 |
|  | 3 | **90% Modelling** |  | 2017-11-02 | 2018-07-20 |  |  |  |  |  |  |  |  |  |
| 103630 |  | Modelling of pipe supports | 30d | 2017-11-02 A | 2018-05-31 A | 103530 | 100% | 2017-11-15 | 2017-12-26 |  | MH-Wtg [275.88 h] | 124,146 | 124,146 | 001 |
| 103640 |  | Updation of vendor data | 20d | 2017-11-29 A | 2018-07-20 A | 103630 FF, 112930 FS+10d, 113260 FF+15d, 113250 FF+15d, 113100.5 FF+10d | 100% | 2018-02-20 | 2018-03-19 |  | MH-Wtg [34.48 h] | 15,516 | 15,516 | 001 |
| 103650 |  | Final stress analysis | 20d | 2017-12-06 A | 2018-07-10 A | 103630 | 100% | 2018-01-12 | 2018-02-09 |  | MH-Wtg [34.48 h] | 15,516 | 15,516 | 001 |

| ID | WBS | Activity | Duration | Start | Finish | Predecessors | Complete | Planned start | Planned finish | Total float | Constraint | Resources | Cost | Actual cost | UNIT DESCRIPTION |
| --- | --- | --- | --- | --- | --- | --- | --- | --- | --- | --- | --- | --- | --- | --- | --- |
|  | 2 | **B103A- WNA Storage Tanks** |  | 2016-11-30 | 2018-08-03 |  |  |  |  |  |  |  |  |  |  |
|  | 1 | **30% Modelling** |  | 2016-11-30 | 2017-08-12 |  |  |  |  |  |  |  |  |  |  |
| 103660 |  | Preliminary layout | 3d | 2016-11-30 A | 2016-12-02 A | 103440 | 100% | 2017-09-14 | 2017-09-18 |  | start on 2016-11-30 | MH-Wtg [77.27 h] | 34,772 | 34,772 | 003 |
| 103670 |  | Modelling of equipments | 8d | 2017-03-06 A | 2017-03-15 A | 103660 | 100% | 2017-05-15 | 2017-05-24 |  |  | MH-Wtg [30.91 h] | 13,910 | 13,910 | 003 |
| 103680 |  | Modelling of structure | 5d | 2017-03-10 A | 2017-03-17 A | 103670 | 100% | 2017-05-25 | 2017-05-31 |  |  | MH-Wtg [7.73 h] | 3,479 | 3,479 | 003 |
| 103690 |  | Modelling of pits & trenches | 5d | 2017-03-14 A | 2017-03-17 A | 103660 | 100% | 2017-05-15 | 2017-05-19 |  |  | MH-Wtg [3.86 h] | 1,737 | 1,737 | 003 |
| 103700 |  | Basic pipe routing | 15d | 2017-04-03 A | 2017-04-29 A | 103670, 100090 FF | 100% | 2017-04-03 | 2017-04-21 |  |  | MH-Wtg [23.18 h] | 10,431 | 10,431 | 003 |
| 103710 |  | Nozzle orientations | 10d | 2017-05-01 A | 2017-05-12 A | 103700 | 100% |  |  |  |  | MH-Wtg [3.86 h] | 1,737 | 1,737 | 003 |
| 103730 |  | Safety shower locations | 2d | 2017-07-20 A | 2017-07-22 A | 103720 SS | 100% | 2017-08-01 | 2017-08-02 |  |  | MH-Wtg [3.86 h] | 1,737 | 1,737 | 003 |
| 103720 |  | Utility station locations | 2d | 2017-08-12 A | 2017-08-12 A | 103700 | 100% | 2017-09-01 | 2017-09-04 |  |  | MH-Wtg [3.86 h] | 1,737 | 1,737 | 003 |
|  | 2 | **60% Modelling** |  | 2017-06-23 | 2018-08-03 |  |  |  |  |  |  |  |  |  |  |
| 103740 |  | Modelling of piping & inline instruments | 20d | 2017-06-23 A | 2017-09-20 A | 100090, 103700 | 100% | 2017-07-06 | 2017-08-02 |  |  | MH-Wtg [103.02 h] | 46,359 | 46,359 | 003 |
| 103810 |  | Floor/wall cut out locations | 8d | 2017-06-23 A | 2017-09-20 A | 103740 FF | 100% | 2017-07-24 | 2017-08-02 |  |  | MH-Wtg [6.44 h] | 2,898 | 2,898 | 003 |
| 103750 |  | Modelling of instrument cable trays | 10d | 2017-07-15 A | 2017-10-31 A | 103740 FF | 100% | 2017-08-16 | 2017-08-29 |  |  | MH-Wtg [51.51 h] | 23,180 | 23,180 | 003 |
| 103760 |  | Modelling of electrical cable trays | 10d | 2017-07-15 A | 2017-10-31 A | 103750 SS | 100% | 2017-08-16 | 2017-08-29 |  |  | MH-Wtg [51.51 h] | 23,180 | 23,180 | 003 |
| 103800 |  | Modelling of operating platforms | 5d | 2017-07-15 A | 2017-09-20 A | 103740 | 100% | 2017-08-30 | 2017-09-05 |  |  | MH-Wtg [6.44 h] | 2,898 | 2,898 | 003 |
| 103770 |  | Instrument JB locations | 3d | 2017-07-25 A | 2017-09-20 A | 103740 | 100% | 2017-08-30 | 2017-09-01 |  |  | MH-Wtg [6.44 h] | 2,898 | 2,898 | 003 |
| 103780 |  | Instrument locations | 5d | 2017-07-25 A | 2017-09-20 A | 103740 FF | 100% | 2017-08-23 | 2017-08-29 |  |  | MH-Wtg [6.44 h] | 2,898 | 2,898 | 003 |
| 103790 |  | Motor start button locations | 5d | 2017-07-25 A | 2017-09-20 A | 103760 | 100% | 2017-08-30 | 2017-09-05 |  |  | MH-Wtg [6.44 h] | 2,898 | 2,898 | 003 |
| 103820 |  | Preliminary MTO for piping materials | 3d | 2017-08-30 A | 2017-08-30 A | 103740 | 100% | 2017-09-29 | 2017-10-03 |  |  | MH-Wtg [0.24 h] | 5,777 | 5,777 | 003 |
| 103830 |  | Preliminary MTO for insulation (Deleted) | 3d | 2018-08-01 | 2018-08-03 | 103820 |  |  |  | 52180.9d |  | MH-Wtg |  |  | 003 |
|  | 3 | **90% Modelling** |  | 2017-07-20 | 2018-05-25 |  |  |  |  |  |  |  |  |  |  |
| 103840 |  | Modelling of pipe supports | 15d | 2017-07-20 A | 2017-08-10 A | 103740 | 100% | 2017-08-30 | 2017-09-19 |  |  | MH-Wtg [92.72 h] | 41,724 | 41,724 | 003 |
| 103850 |  | Updation of vendor data | 10d | 2017-11-10 A | 2018-05-25 A | 103840 FF, 112940 FS+10d, 113250 FF+15d | 100% | 2018-01-18 | 2018-02-01 |  |  | MH-Wtg [10.3 h] | 4,635 | 4,635 | 003 |

| ID | WBS | Activity | Duration | Start | Finish | Predecessors | Complete | Planned start | Planned finish | Constraint | Resources | Cost | Actual cost | UNIT DESCRIPTION |
| --- | --- | --- | --- | --- | --- | --- | --- | --- | --- | --- | --- | --- | --- | --- |
|  | 16 | **B103B- CNA Storage Tanks** |  | 2016-11-11 | 2018-05-25 |  |  |  |  |  |  |  |  |  |
|  | 1 | **30% Modelling** |  | 2016-11-11 | 2017-08-12 |  |  |  |  |  |  |  |  |  |
| 105240 |  | Preliminary layout | 93d | 2016-11-11 A | 2017-02-10 A | 103660 | 100% | 2017-09-19 | 2018-01-25 | start on 2016-11-11 | MH-Wtg [77.27 h] | 34,772 | 34,772 | 003 |
| 105250 |  | Modelling of equipments | 72d | 2016-12-15 A | 2017-02-10 A | 105240 | 100% | 2018-01-26 | 2018-05-07 | start on 2016-12-15 | MH-Wtg [30.91 h] | 13,910 | 13,910 | 003 |
| 105260 |  | Modelling of structure | 74d | 2016-12-15 A | 2017-03-03 A | 105250 | 100% | 2018-05-08 | 2018-08-17 | start on 2016-12-15 | MH-Wtg [7.73 h] | 3,479 | 3,479 | 003 |
| 105270 |  | Modelling of pits & trenches | 5d | 2017-03-01 A | 2017-03-03 A | 105240 | 100% | 2017-05-15 | 2017-05-19 |  | MH-Wtg [3.86 h] | 1,737 | 1,737 | 003 |
| 105290 |  | Nozzle orientations | 10d | 2017-06-16 A | 2017-08-04 A | 105280 | 100% | 2017-07-06 | 2017-07-19 |  | MH-Wtg [3.86 h] | 1,737 | 1,737 | 003 |
| 105280 |  | Basic pipe routing | 15d | 2017-06-24 A | 2017-08-04 A | 105250, 100090 FF | 100% | 2017-06-15 | 2017-07-05 |  | MH-Wtg [23.18 h] | 10,431 | 10,431 | 003 |
| 105310 |  | Safety shower locations | 2d | 2017-07-20 A | 2017-07-22 A | 105300 SS | 100% | 2017-09-06 | 2017-09-07 |  | MH-Wtg [3.86 h] | 1,737 | 1,737 | 003 |
| 105300 |  | Utility station locations | 2d | 2017-08-12 A | 2017-08-12 A | 105280 | 100% | 2017-10-06 | 2017-10-09 |  | MH-Wtg [3.86 h] | 1,737 | 1,737 | 003 |
|  | 2 | **60% Modelling** |  | 2017-06-27 | 2017-11-10 |  |  |  |  |  |  |  |  |  |
| 105320 |  | Modelling of piping & inline instruments | 20d | 2017-06-27 A | 2017-09-20 A | 100090, 105280 | 100% | 2017-07-06 | 2017-08-02 |  | MH-Wtg [103.02 h] | 46,359 | 46,359 | 003 |
| 105380 |  | Modelling of operating platforms | 5d | 2017-07-12 A | 2017-09-20 A | 105320 | 100% | 2017-08-30 | 2017-09-05 |  | MH-Wtg [6.44 h] | 2,898 | 2,898 | 003 |
| 105330 |  | Modelling of instrument cable trays | 10d | 2017-07-18 A | 2017-10-31 A | 105320 FF | 100% | 2017-08-16 | 2017-08-29 |  | MH-Wtg [51.51 h] | 23,180 | 23,180 | 003 |
| 105340 |  | Modelling of electrical cable trays | 10d | 2017-07-18 A | 2017-10-31 A | 105330 SS | 100% | 2017-08-16 | 2017-08-29 |  | MH-Wtg [51.51 h] | 23,180 | 23,180 | 003 |
| 105350 |  | Instrument JB locations | 3d | 2017-07-18 A | 2017-09-20 A | 105320 | 100% | 2017-08-30 | 2017-09-01 |  | MH-Wtg [6.44 h] | 2,898 | 2,898 | 003 |
| 105360 |  | Instrument locations | 5d | 2017-07-18 A | 2017-09-20 A | 105320 FF | 100% | 2017-08-23 | 2017-08-29 |  | MH-Wtg [6.44 h] | 2,898 | 2,898 | 003 |
| 105370 |  | Motor start button locations | 5d | 2017-07-18 A | 2017-09-20 A | 105340 | 100% | 2017-08-30 | 2017-09-05 |  | MH-Wtg [6.44 h] | 2,898 | 2,898 | 003 |
| 105390 |  | Floor/wall cut out locations | 8d | 2017-07-25 A | 2017-09-20 A | 105320 FF | 100% | 2017-08-18 | 2017-08-29 |  | MH-Wtg [6.44 h] | 2,898 | 2,898 | 003 |
| 105400 |  | Preliminary MTO for piping materials | 3d | 2017-08-30 A | 2017-08-30 A | 105320 | 100% | 2017-09-29 | 2017-10-03 |  | MH-Wtg [12.88 h] | 5,796 | 5,796 | 003 |
| 105480 |  | Preliminary MTO for insulation | 3d | 2017-11-03 A | 2017-11-10 A | 105400, 103390 FF-10d | 100% | 2017-11-10 | 2017-11-15 |  | MH-Wtg [6 h] | 2,700 | 2,700 | 003 |
|  | 3 | **90% Modelling** |  | 2017-07-22 | 2018-05-25 |  |  |  |  |  |  |  |  |  |
| 105490 |  | Modelling of pipe supports | 15d | 2017-07-22 A | 2017-08-31 A | 105320 | 100% | 2017-08-30 | 2017-09-19 |  | MH-Wtg [92.72 h] | 41,724 | 41,724 | 003 |
| 105500 |  | Updation of vendor data | 10d | 2017-11-16 A | 2018-05-25 A | 105490 FF, 112940 FS+10d, 113250 FF+15d | 100% | 2018-01-18 | 2018-02-01 |  | MH-Wtg [10.3 h] | 4,635 | 4,635 | 003 |

| ID | WBS | Activity | Duration | Start | Finish | Predecessors | Complete | Planned start | Planned finish | Total float | Constraint | Resources | Cost | Actual cost | UNIT DESCRIPTION |
| --- | --- | --- | --- | --- | --- | --- | --- | --- | --- | --- | --- | --- | --- | --- | --- |
|  | 13 | **B103C- WWS Storage Tanks** |  | 2017-03-09 | 2018-08-03 |  |  |  |  |  |  |  |  |  |  |
|  | 1 | **30% Modelling** |  | 2017-03-09 | 2017-08-12 |  |  |  |  |  |  |  |  |  |  |
| 105510 |  | Preliminary layout | 8d | 2017-03-09 A | 2017-03-09 A | 104400 | 100% | 2017-06-12 | 2017-06-21 |  |  | MH-Wtg [25.76 h] | 11,592 | 11,592 | 003 |
| 105520 |  | Modelling of equipments | 5d | 2017-05-11 A | 2017-05-17 A | 105510 | 100% |  |  |  |  | MH-Wtg [10.3 h] | 4,635 | 4,635 | 003 |
| 105580 |  | Safety shower locations | 2d | 2017-05-25 A | 2017-08-04 A | 105570 SS | 100% | 2017-09-06 | 2017-09-07 |  |  | MH-Wtg [1.29 h] | 581 | 581 | 003 |
| 105530 |  | Modelling of structure | 3d | 2017-06-09 A | 2017-08-04 A | 105520 | 100% | 2017-06-01 | 2017-06-05 |  |  | MH-Wtg [2.58 h] | 1,161 | 1,161 | 003 |
| 105540 |  | Modelling of pits & trenches | 5d | 2017-06-09 A | 2017-08-04 A | 105510 | 100% | 2017-06-13 | 2017-06-19 |  |  | MH-Wtg [1.29 h] | 581 | 581 | 003 |
| 105560 |  | Nozzle orientations | 8d | 2017-06-16 A | 2017-08-04 A | 105550 | 100% | 2017-07-06 | 2017-07-17 |  |  | MH-Wtg [1.29 h] | 581 | 581 | 003 |
| 105550 |  | Basic pipe routing | 10d | 2017-06-23 A | 2017-08-04 A | 105520, 100090 FF | 100% | 2017-06-22 | 2017-07-05 |  |  | MH-Wtg [7.73 h] | 3,479 | 3,479 | 003 |
| 105570 |  | Utility station locations | 2d | 2017-08-12 A | 2017-08-12 A | 105550 | 100% | 2017-10-06 | 2017-10-09 |  |  | MH-Wtg [1.29 h] | 581 | 581 | 003 |
|  | 2 | **60% Modelling** |  | 2017-06-23 | 2018-08-03 |  |  |  |  |  |  |  |  |  |  |
| 105590 |  | Modelling of piping & inline instruments | 15d | 2017-06-23 A | 2017-09-20 A | 100090, 105550 | 100% | 2017-07-06 | 2017-07-26 |  |  | MH-Wtg [34.34 h] | 15,453 | 15,453 | 003 |
| 106420 |  | Floor/wall cut out locations | 5d | 2017-06-23 A | 2017-09-20 A | 105590 FF | 100% | 2017-07-20 | 2017-07-26 |  |  | MH-Wtg [2.15 h] | 968 | 968 | 003 |
| 105600 |  | Modelling of instrument cable trays | 8d | 2017-07-20 A | 2017-10-31 A | 105590 FF | 100% | 2017-08-10 | 2017-08-22 |  |  | MH-Wtg [17.17 h] | 7,727 | 7,727 | 003 |
| 105610 |  | Modelling of electrical cable trays | 8d | 2017-07-20 A | 2017-10-31 A | 105600 SS | 100% | 2017-08-10 | 2017-08-22 |  |  | MH-Wtg [17.17 h] | 7,727 | 7,727 | 003 |
| 105620 |  | Instrument JB locations | 3d | 2017-07-20 A | 2017-09-20 A | 105590 | 100% | 2017-08-23 | 2017-08-25 |  |  | MH-Wtg [2.15 h] | 968 | 968 | 003 |
| 105630 |  | Instrument locations | 5d | 2017-07-20 A | 2017-09-20 A | 105590 FF | 100% | 2017-08-16 | 2017-08-22 |  |  | MH-Wtg [2.15 h] | 968 | 968 | 003 |
| 106400 |  | Motor start button locations | 3d | 2017-07-20 A | 2017-09-20 A | 105610 | 100% | 2017-08-23 | 2017-08-25 |  |  | MH-Wtg [2.15 h] | 968 | 968 | 003 |
| 106410 |  | Modelling of operating platforms | 3d | 2017-08-15 A | 2017-09-20 A | 105590 | 100% | 2017-08-23 | 2017-08-25 |  |  | MH-Wtg [2.15 h] | 968 | 968 | 003 |
| 106430 |  | Preliminary MTO for piping materials | 3d | 2017-08-30 A | 2017-08-30 A | 105590 | 100% | 2017-09-22 | 2017-09-26 |  |  | MH-Wtg [4.29 h] | 1,931 | 1,931 | 003 |
| 106470 |  | Preliminary MTO for insulation (Deleted) | 3d | 2018-08-01 | 2018-08-03 | 106430 |  |  |  | 52180.9d | finish on or after 2017-11-10 | MH-Wtg |  |  | 003 |
|  | 3 | **90% Modelling** |  | 2017-08-20 | 2018-06-28 |  |  |  |  |  |  |  |  |  |  |
| 106480 |  | Modelling of pipe supports | 10d | 2017-08-20 A | 2017-08-26 A | 105590 | 100% | 2017-09-22 | 2017-10-05 |  |  | MH-Wtg [30.91 h] | 13,910 | 13,910 | 003 |
| 106490 |  | Updation of vendor data | 10d | 2017-11-16 A | 2018-06-28 A | 106480 FF, 112940 FS+10d, 113250 FF+15d | 100% | 2018-01-18 | 2018-02-01 |  |  | MH-Wtg [3.43 h] | 1,544 | 1,544 | 003 |

| ID | WBS | Activity | Duration | Start | Finish | Predecessors | Complete | Planned start | Planned finish | Total float | Constraint | Resources | Cost | Actual cost | UNIT DESCRIPTION |
| --- | --- | --- | --- | --- | --- | --- | --- | --- | --- | --- | --- | --- | --- | --- | --- |
|  | 3 | **B103D- WNA Tanker Loading Bays** |  | 2016-11-30 | 2018-08-07 |  |  |  |  |  |  |  |  |  |  |
|  | 1 | **30% Modelling** |  | 2016-11-30 | 2017-09-26 |  |  |  |  |  |  |  |  |  |  |
| 103860 |  | Preliminary layout | 3d | 2016-11-30 A | 2016-12-02 A | 103660 FS+66d | 100% | 2017-12-20 | 2017-12-22 |  | start on 2016-11-30 | MH-Wtg [19.32 h] | 8,694 | 8,694 | 003 |
| 103870 |  | Modelling of structure | 5d | 2017-06-23 A | 2017-08-04 A | 103860 | 100% | 2017-06-01 | 2017-06-07 |  |  | MH-Wtg [7.73 h] | 3,479 | 3,479 | 003 |
| 103890 |  | Modelling of pits & trenches | 3d | 2017-07-27 A | 2017-08-04 A | 103860 | 100% | 2017-08-01 | 2017-08-03 |  |  | MH-Wtg [1.93 h] | 869 | 869 | 003 |
| 103900 |  | Basic pipe routing | 8d | 2017-07-27 A | 2017-08-04 A | 103870, 103740 | 100% | 2017-08-30 | 2017-09-08 |  |  | MH-Wtg [5.8 h] | 2,610 | 2,610 | 003 |
| 103920 |  | Safety shower locations | 2d | 2017-07-27 A | 2017-08-04 A | 103910 SS | 100% | 2017-09-11 | 2017-09-12 |  |  | MH-Wtg [0.97 h] | 437 | 437 | 003 |
| 103880 |  | Modelling of equipments | 2d | 2017-08-01 A | 2017-08-04 A | 103870 | 100% | 2017-09-08 | 2017-09-11 |  |  | MH-Wtg [1.93 h] | 869 | 869 | 003 |
| 103910 |  | Utility station locations | 2d | 2017-09-25 A | 2017-09-26 A | 103900 | 100% |  |  |  |  | MH-Wtg [0.97 h] | 437 | 437 | 003 |
|  | 2 | **60% Modelling** |  | 2017-07-21 | 2018-08-07 |  |  |  |  |  |  |  |  |  |  |
| 103950 |  | Modelling of electrical cable trays | 5d | 2017-07-21 A | 2017-10-31 A |  | 100% | 2017-09-18 | 2017-09-22 |  |  | MH-Wtg [12.88 h] | 5,796 | 5,796 | 003 |
| 103960 |  | Instrument JB locations | 2d | 2017-07-21 A | 2017-09-20 A | 103930 | 100% | 2017-09-25 | 2017-09-26 |  |  | MH-Wtg [1.61 h] | 725 | 725 | 003 |
| 103970 |  | Instrument locations | 3d | 2017-07-21 A | 2017-09-20 A | 103930 FF | 100% | 2017-09-20 | 2017-09-22 |  |  | MH-Wtg [1.61 h] | 725 | 725 | 003 |
| 103980 |  | Modelling of operating platforms | 3d | 2017-07-26 A | 2017-09-20 A | 103930 | 100% | 2017-09-25 | 2017-09-27 |  |  | MH-Wtg [3.22 h] | 1,449 | 1,449 | 003 |
| 103990 |  | Floor/wall cut out locations | 5d | 2017-07-26 A | 2017-09-20 A | 103930 FF | 100% | 2017-09-18 | 2017-09-22 |  |  | MH-Wtg [1.61 h] | 725 | 725 | 003 |
| 103930 |  | Modelling of piping & inline instruments | 10d | 2017-07-27 A | 2017-09-20 A | 103900 | 100% | 2017-09-11 | 2017-09-22 |  |  | MH-Wtg [25.76 h] | 11,592 | 11,592 | 003 |
| 104000 |  | Preliminary MTO for piping materials | 3d | 2017-08-30 A | 2017-08-30 A | 103930 | 100% | 2017-09-15 | 2017-09-19 |  |  | MH-Wtg [3.22 h] | 1,449 | 1,449 | 003 |
| 103940 |  | Modelling of instrument cable trays (Deleted) | 5d | 2018-08-01 | 2018-08-07 | 103930 FF |  |  |  | 52178.9d |  | MH-Wtg |  |  | 003 |
| 104010 |  | Preliminary MTO for insulation (Deleted) | 3d | 2018-08-01 | 2018-08-03 | 104000 |  |  |  | 52180.9d | finish on or after 2017-11-10 | MH-Wtg |  |  | 003 |
|  | 3 | **90% Modelling** |  | 2017-08-20 | 2018-03-19 |  |  |  |  |  |  |  |  |  |  |
| 104020 |  | Modelling of pipe supports | 8d | 2017-08-20 A | 2017-08-26 A | 103930 | 100% | 2017-09-15 | 2017-09-26 |  |  | MH-Wtg [23.18 h] | 10,431 | 10,431 | 003 |
| 104030 |  | Updation of vendor data | 5d | 2018-02-19 A | 2018-03-19 A | 104020 FF, 113050 FS+10d | 100% | 2018-03-08 | 2018-03-14 |  |  | MH-Wtg [2.58 h] | 1,161 | 1,161 | 003 |
|  | 18 | **B103E- CNA Tanker Loading Bays** |  | 2016-11-11 | 2018-08-07 |  |  |  |  |  |  |  |  |  |  |
|  | 1 | **30% Modelling** |  | 2016-11-11 | 2017-08-12 |  |  |  |  |  |  |  |  |  |  |
| 106500 |  | Preliminary layout | 12d | 2016-11-11 A | 2016-11-28 A | 105240 FS+56d | 100% | 2018-04-16 | 2018-05-01 |  | start on 2016-11-11 | MH-Wtg [19.32 h] | 8,694 | 8,694 | 003 |
| 107360 |  | Modelling of structure | 5d | 2017-06-23 A | 2017-08-04 A | 106500 | 100% | 2017-06-01 | 2017-06-07 |  |  | MH-Wtg [7.73 h] | 3,479 | 3,479 | 003 |
| 107380 |  | Modelling of pits & trenches | 3d | 2017-07-27 A | 2017-08-04 A | 106500 | 100% | 2017-08-01 | 2017-08-03 |  |  | MH-Wtg [1.93 h] | 869 | 869 | 003 |
| 107390 |  | Basic pipe routing | 8d | 2017-07-27 A | 2017-08-04 A | 107360, 105320 | 100% | 2017-08-30 | 2017-09-08 |  |  | MH-Wtg [5.8 h] | 2,610 | 2,610 | 003 |
| 107410 |  | Safety shower locations | 2d | 2017-07-27 A | 2017-08-04 A | 107400 SS | 100% | 2017-09-11 | 2017-09-12 |  |  | MH-Wtg [0.97 h] | 437 | 437 | 003 |
| 107370 |  | Modelling of equipments | 2d | 2017-08-01 A | 2017-08-04 A | 107360 | 100% | 2017-09-08 | 2017-09-11 |  |  | MH-Wtg [1.93 h] | 869 | 869 | 003 |
| 107400 |  | Utility station locations | 2d | 2017-08-12 A | 2017-08-12 A | 107390 | 100% | 2017-09-13 | 2017-09-14 |  |  | MH-Wtg [0.97 h] | 437 | 437 | 003 |

| ID | WBS | Activity | Duration | Start | Finish | Predecessors | Complete | Planned start | Planned finish | Total float | Constraint | Resources | Cost | Actual cost | UNIT DESCRIPTION |
| --- | --- | --- | --- | --- | --- | --- | --- | --- | --- | --- | --- | --- | --- | --- | --- |
|  | 2 | **60% Modelling** |  | 2017-07-20 | 2018-08-07 |  |  |  |  |  |  |  |  |  |  |
| 107660 |  | Modelling of operating platforms | 3d | 2017-07-20 A | 2017-09-20 A | 107460 | 100% | 2017-09-25 | 2017-09-27 |  |  | MH-Wtg [3.22 h] | 1,449 | 1,449 | 003 |
| 107670 |  | Floor/wall cut out locations | 5d | 2017-07-20 A | 2017-09-20 A | 107460 FF | 100% | 2017-09-18 | 2017-09-22 |  |  | MH-Wtg [1.61 h] | 725 | 725 | 003 |
| 107480 |  | Modelling of electrical cable trays | 5d | 2017-07-21 A | 2017-10-31 A |  | 100% | 2017-09-18 | 2017-09-22 |  |  | MH-Wtg [12.88 h] | 5,796 | 5,796 | 003 |
| 107640 |  | Instrument JB locations | 2d | 2017-07-21 A | 2017-09-20 A | 107460 | 100% | 2017-09-25 | 2017-09-26 |  |  | MH-Wtg [1.61 h] | 725 | 725 | 003 |
| 107650 |  | Instrument locations | 3d | 2017-07-21 A | 2017-09-20 A | 107460 FF | 100% | 2017-09-20 | 2017-09-22 |  |  | MH-Wtg [1.61 h] | 725 | 725 | 003 |
| 107460 |  | Modelling of piping & inline instruments | 10d | 2017-07-27 A | 2017-09-20 A | 107390 | 100% | 2017-09-11 | 2017-09-22 |  |  | MH-Wtg [25.76 h] | 11,592 | 11,592 | 003 |
| 107770 |  | Preliminary MTO for piping materials | 3d | 2017-08-30 A | 2017-08-30 A | 107460 | 100% | 2017-09-15 | 2017-09-19 |  |  | MH-Wtg [3.22 h] | 1,449 | 1,449 | 003 |
| 107470 |  | Modelling of instrument cable trays (Deleted) | 5d | 2018-08-01 | 2018-08-07 | 107460 FF |  |  |  | 52178.9d |  | MH-Wtg |  |  | 003 |
| 107780 |  | Preliminary MTO for insulation (Deleted) | 3d | 2018-08-01 | 2018-08-03 | 107770 |  |  |  | 52180.9d | finish on or after 2017-11-10 | MH-Wtg |  |  | 003 |
|  | 3 | **90% Modelling** |  | 2017-09-25 | 2018-02-19 |  |  |  |  |  |  |  |  |  |  |
| 107790 |  | Modelling of pipe supports | 8d | 2017-09-25 A | 2017-09-28 A | 107460 | 100% | 2017-09-25 | 2017-10-04 |  |  | MH-Wtg [23.18 h] | 10,431 | 10,431 | 003 |
| 107800 |  | Updation of vendor data | 5d | 2018-02-19 A | 2018-02-19 A | 107790 FF, 113050 FS+10d | 100% | 2018-03-08 | 2018-03-14 |  |  | MH-Wtg [2.58 h] | 1,161 | 1,161 | 003 |
|  | 4 | **B104A- Caustic, Sulphuric Storage** |  | 2017-04-14 | 2018-08-03 |  |  |  |  |  |  |  |  |  |  |
|  | 1 | **30% Modelling** |  | 2017-04-14 | 2017-08-12 |  |  |  |  |  |  |  |  |  |  |
| 104040 |  | Preliminary layout | 10d | 2017-04-14 A | 2017-04-14 A | 105240 | 100% | 2017-04-03 | 2017-04-14 |  |  | MH-Wtg [57.95 h] | 26,078 | 26,078 | 003 |
| 104060 |  | Modelling of pits & trenches | 5d | 2017-04-15 A | 2017-04-18 A | 104040 | 100% | 2017-04-17 | 2017-04-21 |  |  | MH-Wtg [5.8 h] | 2,610 | 2,610 | 003 |
| 104050 |  | Modelling of equipments | 8d | 2017-05-01 A | 2017-05-10 A | 104040 | 100% |  |  |  |  | MH-Wtg [23.18 h] | 10,431 | 10,431 | 003 |
| 104080 |  | Nozzle orientations | 10d | 2017-06-16 A | 2017-08-04 A | 104070 | 100% | 2017-07-06 | 2017-07-19 |  |  | MH-Wtg [5.8 h] | 2,610 | 2,610 | 003 |
| 104070 |  | Basic pipe routing | 15d | 2017-06-23 A | 2017-08-04 A | 104050, 100090 FF | 100% | 2017-06-15 | 2017-07-05 |  |  | MH-Wtg [17.39 h] | 7,826 | 7,826 | 003 |
| 104100 |  | Safety shower locations | 2d | 2017-07-27 A | 2017-08-04 A | 104090 SS | 100% | 2017-09-06 | 2017-09-07 |  |  | MH-Wtg [2.9 h] | 1,305 | 1,305 | 003 |
| 104090 |  | Utility station locations | 2d | 2017-08-12 A | 2017-08-12 A | 104070 | 100% | 2017-10-06 | 2017-10-09 |  |  | MH-Wtg [2.9 h] | 1,305 | 1,305 | 003 |
|  | 2 | **60% Modelling** |  | 2017-06-23 | 2018-08-03 |  |  |  |  |  |  |  |  |  |  |
| 104110 |  | Modelling of piping & inline instruments | 20d | 2017-06-23 A | 2017-09-20 A | 104070, 100090 | 100% | 2017-07-06 | 2017-08-02 |  |  | MH-Wtg [77.27 h] | 34,772 | 34,772 | 003 |
| 104180 |  | Floor/wall cut out locations | 8d | 2017-06-23 A | 2017-09-20 A | 104110 FF | 100% | 2017-07-24 | 2017-08-02 |  |  | MH-Wtg [4.83 h] | 2,174 | 2,174 | 003 |
| 104120 |  | Modelling of instrument cable trays | 12d | 2017-07-21 A | 2017-10-31 A | 104110 FF | 100% | 2017-08-11 | 2017-08-29 |  |  | MH-Wtg [38.63 h] | 17,384 | 17,384 | 003 |
| 104130 |  | Modelling of electrical cable trays | 12d | 2017-07-21 A | 2017-10-31 A | 104120 SS | 100% | 2017-08-11 | 2017-08-29 |  |  | MH-Wtg [38.63 h] | 17,384 | 17,384 | 003 |
| 104140 |  | Instrument JB locations | 3d | 2017-07-21 A | 2017-09-20 A | 104110 | 100% | 2017-08-30 | 2017-09-01 |  |  | MH-Wtg [4.83 h] | 2,174 | 2,174 | 003 |
| 104150 |  | Instrument locations | 5d | 2017-07-21 A | 2017-09-20 A | 104110 FF | 100% | 2017-08-23 | 2017-08-29 |  |  | MH-Wtg [4.83 h] | 2,174 | 2,174 | 003 |
| 104160 |  | Motor start button locations | 5d | 2017-07-21 A | 2017-09-20 A | 104130 | 100% | 2017-08-30 | 2017-09-05 |  |  | MH-Wtg [4.83 h] | 2,174 | 2,174 | 003 |
| 104170 |  | Modelling of operating platforms | 5d | 2017-07-21 A | 2017-09-20 A | 104110 | 100% | 2017-08-30 | 2017-09-05 |  |  | MH-Wtg [4.83 h] | 2,174 | 2,174 | 003 |
| 104190 |  | Preliminary MTO for piping materials | 3d | 2017-08-30 A | 2017-08-30 A | 104110 | 100% | 2017-09-29 | 2017-10-03 |  |  | MH-Wtg [9.66 h] | 4,347 | 4,347 | 003 |
| 104200 |  | Preliminary MTO for insulation (Deleted) | 3d | 2018-08-01 | 2018-08-03 | 104190 |  |  |  | 52180.9d | finish on or after 2017-11-10 | MH-Wtg |  |  | 003 |

| ID | WBS | Activity | Duration | Start | Finish | Predecessors | Complete | Planned start | Planned finish | Total float | Resources | Cost | Actual cost | UNIT DESCRIPTION |
| --- | --- | --- | --- | --- | --- | --- | --- | --- | --- | --- | --- | --- | --- | --- |
|  | 3 | **90% Modelling** |  | 2017-08-20 | 2018-05-25 |  |  |  |  |  |  |  |  |  |
| 104210 |  | Modelling of pipe supports | 15d | 2017-08-20 A | 2017-08-26 A | 104110 | 100% | 2017-09-29 | 2017-10-19 |  | MH-Wtg [69.54 h] | 31,293 | 31,293 | 003 |
| 104220 |  | Updation of vendor data | 10d | 2017-11-16 A | 2018-05-25 A | 104210 FF, 112940 FS+10d, 113250 FF+15d | 100% | 2018-01-18 | 2018-02-01 |  | MH-Wtg [7.73 h] | 3,479 | 3,479 | 003 |
|  | 5 | **B104B- HSD Storage (Deleted)** |  | 2017-04-14 | 2018-08-21 |  |  |  |  |  |  |  |  |  |
|  | 1 | **30% Modelling** |  | 2017-04-14 | 2018-08-07 |  |  |  |  |  |  |  |  |  |
| 104230 |  | Preliminary layout (Deleted) | 5d | 2017-04-14 A | 2017-04-14 A | 105510 | 100% | 2017-04-13 | 2017-04-19 |  | MH-Wtg |  |  | 003 |
| 104240 |  | Modelling of equipments (Deleted) | 5d | 2018-08-01 | 2018-08-07 | 104070 |  |  |  | 52178.9d | MH-Wtg |  |  | 003 |
| 104250 |  | Modelling of pits & trenches (Deleted) | 3d | 2018-08-01 | 2018-08-03 |  |  |  |  | 52180.9d | MH-Wtg |  |  | 003 |
| 104260 |  | Basic pipe routing (Deleted) | 5d | 2018-08-01 | 2018-08-07 |  |  |  |  | 52178.9d | MH-Wtg |  |  | 003 |
| 104270 |  | Nozzle orientations (Deleted) | 3d | 2018-08-01 | 2018-08-03 |  |  |  |  | 52180.9d | MH-Wtg |  |  | 003 |
| 104280 |  | Utility station locations (Deleted) | 1d | 2018-08-01 | 2018-08-01 |  |  |  |  | 52182.9d | MH-Wtg |  |  | 003 |
|  | 2 | **60% Modelling** |  | 2018-08-01 | 2018-08-21 |  |  |  |  |  |  |  |  |  |
| 104290 |  | Modelling of piping & inline instruments (Deleted) | 15d | 2018-08-01 | 2018-08-21 |  |  |  |  | 52168.9d | MH-Wtg |  |  | 003 |
| 104300 |  | Modelling of instrument cable trays (Deleted) | 3d | 2018-08-01 | 2018-08-03 |  |  |  |  | 52180.9d | MH-Wtg |  |  | 003 |
| 104310 |  | Modelling of electrical cable trays (Deleted) | 3d | 2018-08-01 | 2018-08-03 |  |  |  |  | 52180.9d | MH-Wtg |  |  | 003 |
| 104320 |  | Instrument JB locations (Deleted) | 2d | 2018-08-01 | 2018-08-02 |  |  |  |  | 52181.9d | MH-Wtg |  |  | 003 |
| 104330 |  | Instrument locations (Deleted) | 2d | 2018-08-01 | 2018-08-02 |  |  |  |  | 52181.9d | MH-Wtg |  |  | 003 |
| 104340 |  | Motor start button locations (Deleted) | 2d | 2018-08-01 | 2018-08-02 |  |  |  |  | 52181.9d | MH-Wtg |  |  | 003 |
| 104350 |  | Modelling of operating platforms (Deleted) | 2d | 2018-08-01 | 2018-08-02 |  |  |  |  | 52181.9d | MH-Wtg |  |  | 003 |
| 104360 |  | Floor/wall cut out locations (Deleted) | 3d | 2018-08-01 | 2018-08-03 |  |  |  |  | 52180.9d | MH-Wtg |  |  | 003 |
| 104370 |  | Preliminary MTO for piping materials (Deleted) | 3d | 2018-08-01 | 2018-08-03 |  |  |  |  | 52180.9d | MH-Wtg |  |  | 003 |
|  | 3 | **90% Modelling** |  | 2018-08-01 | 2018-08-14 |  |  |  |  |  |  |  |  |  |
| 104380 |  | Modelling of pipe supports (Deleted) | 10d | 2018-08-01 | 2018-08-14 |  |  |  |  | 52173.9d | MH-Wtg |  |  | 003 |
| 104390 |  | Updation of vendor data (Deleted) | 5d | 2018-08-01 | 2018-08-07 | 112940 FS+10d |  |  |  | 52178.9d | MH-Wtg |  |  | 003 |

| ID | WBS | Activity | Duration | Start | Finish | Predecessors | Complete | Planned start | Planned finish | Resources | Cost | Actual cost | UNIT DESCRIPTION |
| --- | --- | --- | --- | --- | --- | --- | --- | --- | --- | --- | --- | --- | --- |
|  | 6 | **B104C-Liquid NH3 Storage** |  | 2017-03-31 | 2018-05-25 |  |  |  |  |  |  |  |  |
|  | 1 | **30% Modelling** |  | 2017-03-31 | 2017-12-05 |  |  |  |  |  |  |  |  |
| 104400 |  | Preliminary layout | 10d | 2017-03-31 A | 2017-04-12 A | 104040, 100050.2 FF | 100% | 2017-04-17 | 2017-04-28 | MH-Wtg [32.2 h] | 14,490 | 14,490 | 003 |
| 104410 |  | Modelling of equipments | 10d | 2017-05-01 A | 2017-05-12 A | 104400 | 100% |  |  | MH-Wtg [12.88 h] | 5,796 | 5,796 | 003 |
| 104420 |  | Modelling of pits & trenches | 5d | 2017-07-25 A | 2017-08-04 A | 104400 | 100% | 2017-08-01 | 2017-08-07 | MH-Wtg [3.22 h] | 1,449 | 1,449 | 003 |
| 104440 |  | Nozzle orientations | 10d | 2017-07-25 A | 2017-08-04 A | 104430 | 100% | 2017-09-06 | 2017-09-19 | MH-Wtg [3.22 h] | 1,449 | 1,449 | 003 |
| 104460 |  | Safety shower locations | 2d | 2017-07-27 A | 2017-08-04 A | 104450 SS | 100% | 2017-09-06 | 2017-09-07 | MH-Wtg [1.61 h] | 725 | 725 | 003 |
| 104430 |  | Basic pipe routing | 10d | 2017-08-10 A | 2017-08-14 A | 104410, 100090 FF | 100% | 2017-09-22 | 2017-10-05 | MH-Wtg [9.66 h] | 4,347 | 4,347 | 003 |
| 104450 |  | Utility station locations | 2d | 2017-12-01 A | 2017-12-05 A | 104430 | 100% | 2017-12-01 | 2017-12-04 | MH-Wtg [1.61 h] | 725 | 725 | 003 |
|  | 2 | **60% Modelling** |  | 2017-07-22 | 2017-11-10 |  |  |  |  |  |  |  |  |
| 104530 |  | Modelling of operating platforms | 5d | 2017-07-22 A | 2017-09-20 A | 104470 | 100% | 2017-09-27 | 2017-10-03 | MH-Wtg [2.68 h] | 1,206 | 1,206 | 003 |
| 104540 |  | Floor/wall cut out locations | 8d | 2017-07-22 A | 2017-09-20 A | 104470 FF | 100% | 2017-09-15 | 2017-09-26 | MH-Wtg [2.68 h] | 1,206 | 1,206 | 003 |
| 104480 |  | Modelling of instrument cable trays | 10d | 2017-07-25 A | 2017-10-31 A | 104470 FF | 100% | 2017-09-13 | 2017-09-26 | MH-Wtg [21.46 h] | 9,657 | 9,657 | 003 |
| 104490 |  | Modelling of electrical cable trays | 10d | 2017-07-25 A | 2017-10-31 A | 104480 SS | 100% | 2017-09-13 | 2017-09-26 | MH-Wtg [21.46 h] | 9,657 | 9,657 | 003 |
| 104500 |  | Instrument JB locations | 2d | 2017-07-25 A | 2017-09-20 A | 104470 | 100% | 2017-09-27 | 2017-09-28 | MH-Wtg [2.68 h] | 1,206 | 1,206 | 003 |
| 104510 |  | Instrument locations | 5d | 2017-07-25 A | 2017-09-20 A | 104470 FF | 100% | 2017-09-20 | 2017-09-26 | MH-Wtg [2.68 h] | 1,206 | 1,206 | 003 |
| 104520 |  | Motor start button locations | 5d | 2017-07-25 A | 2017-09-20 A | 104490 | 100% | 2017-09-27 | 2017-10-03 | MH-Wtg [2.68 h] | 1,206 | 1,206 | 003 |
| 104470 |  | Modelling of piping & inline instruments | 15d | 2017-08-16 A | 2017-10-25 A | 104430, 100090 | 100% | 2017-10-06 | 2017-10-26 | MH-Wtg [42.93 h] | 19,319 | 19,319 | 003 |
| 104550 |  | Preliminary MTO for piping materials | 3d | 2017-08-30 A | 2017-08-30 A | 104470 | 100% | 2017-10-27 | 2017-10-31 | MH-Wtg [5.37 h] | 2,417 | 2,417 | 003 |
| 104560 |  | Preliminary MTO for insulation | 3d | 2017-11-03 A | 2017-11-10 A | 104550, 103390 FF-10d | 100% | 2017-11-10 | 2017-11-15 | MH-Wtg [2.68 h] | 1,206 | 1,206 | 003 |
|  | 3 | **90% Modelling** |  | 2017-11-28 | 2018-05-25 |  |  |  |  |  |  |  |  |
| 104570 |  | Modelling of pipe supports | 15d | 2017-11-28 A | 2017-12-12 A | 104470 | 100% | 2017-12-01 | 2017-12-21 | MH-Wtg [38.63 h] | 17,384 | 17,384 | 003 |
| 104580 |  | Updation of vendor data | 10d | 2018-03-09 A | 2018-05-25 A | 104570 FF, 113250 FF+15d, 113101.1, 113101.9.3 FF+15d, 113101.9.2 FF+15d | 100% | 2018-05-25 | 2018-06-07 | MH-Wtg [4.29 h] | 1,931 | 1,931 | 003 |
|  | 19 | **B104E- SNA** |  | 2017-04-15 | 2018-08-03 |  |  |  |  |  |  |  |  |
|  | 1 | **30% Modelling** |  | 2017-04-15 | 2017-08-12 |  |  |  |  |  |  |  |  |
| 113750 |  | Preliminary layout | 8d | 2017-04-15 A | 2017-04-15 A | 104040 | 100% | 2017-05-01 | 2017-05-10 | MH-Wtg [25.76 h] | 11,592 | 11,592 | 003 |
| 113760 |  | Modelling of equipments | 5d | 2017-06-16 A | 2017-08-04 A | 113750 | 100% | 2017-06-01 | 2017-06-07 | MH-Wtg [10.3 h] | 4,635 | 4,635 | 003 |
| 113770 |  | Modelling of structure | 3d | 2017-06-16 A | 2017-08-04 A | 113760 | 100% | 2017-06-08 | 2017-06-12 | MH-Wtg [2.58 h] | 1,161 | 1,161 | 003 |
| 113780 |  | Modelling of pits & trenches | 5d | 2017-06-16 A | 2017-08-04 A | 113750 | 100% | 2017-06-01 | 2017-06-07 | MH-Wtg [1.29 h] | 581 | 581 | 003 |
| 113790 |  | Basic pipe routing | 10d | 2017-06-23 A | 2017-08-04 A | 113760, 100090 FF | 100% | 2017-06-22 | 2017-07-05 | MH-Wtg [7.73 h] | 3,479 | 3,479 | 003 |
| 113800 |  | Nozzle orientations | 8d | 2017-06-23 A | 2017-08-04 A | 113790 | 100% | 2017-07-06 | 2017-07-17 | MH-Wtg [1.29 h] | 581 | 581 | 003 |
| 113830 |  | Safety shower locations | 2d | 2017-07-27 A | 2017-08-04 A | 113820 SS | 100% | 2017-09-06 | 2017-09-07 | MH-Wtg [1.29 h] | 581 | 581 | 003 |
| 113820 |  | Utility station locations | 2d | 2017-08-12 A | 2017-08-12 A | 113790 | 100% | 2017-10-06 | 2017-10-09 | MH-Wtg [1.29 h] | 581 | 581 | 003 |

| ID | WBS | Activity | Duration | Start | Finish | Predecessors | Complete | Planned start | Planned finish | Total float | Constraint | Resources | Cost | Actual cost | UNIT DESCRIPTION |
| --- | --- | --- | --- | --- | --- | --- | --- | --- | --- | --- | --- | --- | --- | --- | --- |
|  | 2 | **60% Modelling** |  | 2017-06-23 | 2018-08-03 |  |  |  |  |  |  |  |  |  |  |
| 113840 |  | Modelling of piping & inline instruments | 15d | 2017-06-23 A | 2017-09-20 A | 100090, 113790 | 100% | 2017-07-06 | 2017-07-26 |  |  | MH-Wtg [34.34 h] | 15,453 | 15,453 | 003 |
| 113910 |  | Modelling of operating platforms | 3d | 2017-07-12 A | 2017-09-20 A | 113840 | 100% | 2017-08-23 | 2017-08-25 |  |  | MH-Wtg [2.15 h] | 968 | 968 | 003 |
| 113920 |  | Floor/wall cut out locations | 5d | 2017-07-12 A | 2017-09-20 A | 113840 FF | 100% | 2017-08-16 | 2017-08-22 |  |  | MH-Wtg [2.15 h] | 968 | 968 | 003 |
| 113850 |  | Modelling of instrument cable trays | 8d | 2017-07-20 A | 2017-10-31 A | 113840 FF | 100% | 2017-08-10 | 2017-08-22 |  |  | MH-Wtg [17.17 h] | 7,727 | 7,727 | 003 |
| 113860 |  | Modelling of electrical cable trays | 8d | 2017-07-20 A | 2017-10-31 A | 113850 SS | 100% | 2017-08-10 | 2017-08-22 |  |  | MH-Wtg [17.17 h] | 7,727 | 7,727 | 003 |
| 113870 |  | Instrument JB locations | 3d | 2017-07-20 A | 2017-09-20 A | 113840 | 100% | 2017-08-23 | 2017-08-25 |  |  | MH-Wtg [2.15 h] | 968 | 968 | 003 |
| 113890 |  | Instrument locations | 5d | 2017-07-20 A | 2017-09-20 A | 113840 FF | 100% | 2017-08-16 | 2017-08-22 |  |  | MH-Wtg [2.15 h] | 968 | 968 | 003 |
| 113900 |  | Motor start button locations | 3d | 2017-07-20 A | 2017-09-20 A | 113860 | 100% | 2017-08-23 | 2017-08-25 |  |  | MH-Wtg [2.15 h] | 968 | 968 | 003 |
| 113930 |  | Preliminary MTO for piping materials | 3d | 2017-08-30 A | 2017-08-30 A | 113840 | 100% | 2017-09-22 | 2017-09-26 |  |  | MH-Wtg [4.29 h] | 1,931 | 1,931 | 003 |
| 113940 |  | Preliminary MTO for insulation (Deleted) | 3d | 2018-08-01 | 2018-08-03 | 113930 |  |  |  | 52180.9d | finish on or after 2017-11-10 | MH-Wtg |  |  | 003 |
|  | 3 | **90% Modelling** |  | 2017-07-20 | 2018-05-25 |  |  |  |  |  |  |  |  |  |  |
| 113960 |  | Modelling of pipe supports | 10d | 2017-07-20 A | 2017-08-31 A | 113840 | 100% | 2017-08-23 | 2017-09-05 |  |  | MH-Wtg [30.91 h] | 13,910 | 13,910 | 003 |
| 113970 |  | Updation of vendor data | 10d | 2017-11-16 A | 2018-05-25 A | 113960 FF, 112940 FS+10d, 113250 FF+15d | 100% | 2018-01-18 | 2018-02-01 |  |  | MH-Wtg [3.43 h] | 1,544 | 1,544 | 003 |
|  | 20 | **B104F- SNA Tanker Unloading** |  | 2017-04-15 | 2018-08-07 |  |  |  |  |  |  |  |  |  |  |
|  | 1 | **30% Modelling** |  | 2017-04-15 | 2017-08-18 |  |  |  |  |  |  |  |  |  |  |
| 113980 |  | Preliminary layout | 3d | 2017-04-15 A | 2017-04-15 A | 113750 | 100% | 2017-05-01 | 2017-05-03 |  |  | MH-Wtg [19.32 h] | 8,694 | 8,694 | 003 |
| 113990 |  | Modelling of structure | 5d | 2017-06-16 A | 2017-08-04 A | 113980 | 100% | 2017-06-01 | 2017-06-07 |  |  | MH-Wtg [7.73 h] | 3,479 | 3,479 | 003 |
| 114010 |  | Modelling of pits & trenches | 3d | 2017-07-15 A | 2017-08-04 A | 113980 | 100% | 2017-08-01 | 2017-08-03 |  |  | MH-Wtg [1.93 h] | 869 | 869 | 003 |
| 114050 |  | Safety shower locations | 2d | 2017-07-27 A | 2017-07-27 A | 114040 SS | 100% | 2017-09-04 | 2017-09-05 |  |  | MH-Wtg [0.97 h] | 437 | 437 | 003 |
| 114000 |  | Modelling of equipments | 2d | 2017-08-01 A | 2017-08-04 A | 113990 | 100% | 2017-09-08 | 2017-09-11 |  |  | MH-Wtg [1.93 h] | 869 | 869 | 003 |
| 114030 |  | Basic pipe routing | 8d | 2017-08-12 A | 2017-08-18 A | 113990, 113840 | 100% | 2017-09-22 | 2017-10-03 |  |  | MH-Wtg [5.8 h] | 2,610 | 2,610 | 003 |
| 114040 |  | Utility station locations | 2d | 2017-08-12 A | 2017-08-12 A | 114030 | 100% | 2017-10-04 | 2017-10-05 |  |  | MH-Wtg [0.97 h] | 437 | 437 | 003 |
|  | 2 | **60% Modelling** |  | 2017-07-13 | 2018-08-07 |  |  |  |  |  |  |  |  |  |  |
| 114110 |  | Modelling of operating platforms | 3d | 2017-07-13 A | 2017-09-20 A | 114060 | 100% | 2017-09-18 | 2017-09-20 |  |  | MH-Wtg [3.22 h] | 1,449 | 1,449 | 003 |
| 114120 |  | Floor/wall cut out locations | 5d | 2017-07-13 A | 2017-09-20 A | 114060 FF | 100% | 2017-07-13 | 2017-07-19 |  |  | MH-Wtg [1.61 h] | 725 | 725 | 003 |
| 114080 |  | Modelling of electrical cable trays | 5d | 2017-07-20 A | 2017-10-31 A |  | 100% | 2017-09-11 | 2017-09-15 |  |  | MH-Wtg [12.88 h] | 5,796 | 5,796 | 003 |
| 114090 |  | Instrument JB locations | 2d | 2017-07-20 A | 2017-09-20 A | 114060 | 100% | 2017-09-18 | 2017-09-19 |  |  | MH-Wtg [1.61 h] | 725 | 725 | 003 |
| 114100 |  | Instrument locations | 3d | 2017-07-20 A | 2017-09-20 A | 114060 FF | 100% | 2017-09-13 | 2017-09-15 |  |  | MH-Wtg [1.61 h] | 725 | 725 | 003 |
| 114060 |  | Modelling of piping & inline instruments | 10d | 2017-08-19 A | 2017-08-24 A | 114030 | 100% | 2017-10-04 | 2017-10-17 |  |  | MH-Wtg [25.76 h] | 11,592 | 11,592 | 003 |
| 114130 |  | Preliminary MTO for piping materials | 3d | 2017-08-30 A | 2017-08-30 A | 114060 | 100% | 2017-10-18 | 2017-10-20 |  |  | MH-Wtg [3.22 h] | 1,449 | 1,449 | 003 |
| 114070 |  | Modelling of instrument cable trays (Deleted) | 5d | 2018-08-01 | 2018-08-07 | 114060 FF |  |  |  | 52178.9d |  | MH-Wtg |  |  | 003 |
| 114140 |  | Preliminary MTO for insulation (Deleted) | 3d | 2018-08-01 | 2018-08-03 | 114130 |  |  |  | 52180.9d |  | MH-Wtg |  |  | 003 |

| ID | WBS | Activity | Duration | Start | Finish | Predecessors | Complete | Planned start | Planned finish | Resources | Cost | Actual cost | UNIT DESCRIPTION |
| --- | --- | --- | --- | --- | --- | --- | --- | --- | --- | --- | --- | --- | --- |
|  | 3 | **90% Modelling** |  | 2017-08-22 | 2018-02-19 |  |  |  |  |  |  |  |  |
| 114150 |  | Modelling of pipe supports | 8d | 2017-08-22 A | 2017-08-25 A | 114060 | 100% | 2017-10-18 | 2017-10-27 | MH-Wtg [23.18 h] | 10,431 | 10,431 | 003 |
| 114170 |  | Updation of vendor data | 5d | 2018-02-19 A | 2018-02-19 A | 114150 FF, 113050 FS+10d | 100% | 2018-03-08 | 2018-03-14 | MH-Wtg [2.58 h] | 1,161 | 1,161 | 003 |
|  | 7 | **B105A- Air Compressor** |  | 2017-08-01 | 2017-12-05 |  |  |  |  |  |  |  |  |
|  | 1 | **30% Modelling** |  | 2017-08-01 | 2017-12-05 |  |  |  |  |  |  |  |  |
| 104590 |  | Preliminary layout | 10d | 2017-08-01 A | 2017-08-31 A | 112990 FS+10d | 100% | 2017-09-01 | 2017-09-14 | MH-Wtg [77.27 h] | 34,772 | 34,772 | 003 |
| 104600 |  | Modelling of structure | 5d | 2017-08-01 A | 2017-08-05 A | 104590 | 100% | 2017-09-15 | 2017-09-21 | MH-Wtg [30.91 h] | 13,910 | 13,910 | 003 |
| 104610 |  | Modelling of equipments | 8d | 2017-08-01 A | 2017-08-31 A | 104600 | 100% | 2017-09-22 | 2017-10-03 | MH-Wtg [15.45 h] | 6,953 | 6,953 | 003 |
| 104620 |  | Modelling of pits & trenches | 2d | 2017-08-01 A | 2017-08-04 A | 104590 | 100% | 2017-09-15 | 2017-09-18 | MH-Wtg [3.86 h] | 1,737 | 1,737 | 003 |
| 104630 |  | Basic pipe routing | 8d | 2017-09-25 A | 2017-09-28 A | 104610, 100090 FF | 100% | 2017-09-25 | 2017-10-04 | MH-Wtg [23.18 h] | 10,431 | 10,431 | 003 |
| 104640 |  | Utility station locations | 2d | 2017-12-01 A | 2017-12-05 A | 104630 | 100% | 2017-12-01 | 2017-12-04 | MH-Wtg [3.86 h] | 1,737 | 1,737 | 003 |
|  | 2 | **60% Modelling** |  | 2017-09-12 | 2017-10-31 |  |  |  |  |  |  |  |  |
| 104660 |  | Modelling of instrument cable trays | 10d | 2017-09-12 A | 2017-10-31 A | 104650 FF | 100% | 2017-10-23 | 2017-11-03 | MH-Wtg [51.51 h] | 23,180 | 23,180 | 003 |
| 104670 |  | Modelling of electrical cable trays | 10d | 2017-09-12 A | 2017-10-31 A | 104660 SS | 100% | 2017-10-23 | 2017-11-03 | MH-Wtg [51.51 h] | 23,180 | 23,180 | 003 |
| 104650 |  | Modelling of piping & inline instruments | 15d | 2017-09-26 A | 2017-10-20 A | 104630, 100090 | 100% | 2017-10-05 | 2017-10-25 | MH-Wtg [103.02 h] | 46,359 | 46,359 | 003 |
| 104680 |  | Instrument JB locations | 2d | 2017-09-28 A | 2017-09-28 A | 104650 | 100% | 2017-11-06 | 2017-11-07 | MH-Wtg [12.88 h] | 5,796 | 5,796 | 003 |
| 104690 |  | Instrument locations | 3d | 2017-09-28 A | 2017-09-28 A | 104650 FF | 100% | 2017-10-23 | 2017-10-25 | MH-Wtg [12.88 h] | 5,796 | 5,796 | 003 |
| 104720 |  | Preliminary MTO for piping materials | 3d | 2017-09-28 A | 2017-09-28 A | 104650 | 100% | 2017-10-12 | 2017-10-16 | MH-Wtg [12.88 h] | 5,796 | 5,796 | 003 |
| 104700 |  | Modelling of operating platforms | 3d | 2017-10-31 A | 2017-10-31 A | 104650 | 100% | 2017-10-12 | 2017-10-16 | MH-Wtg [6.44 h] | 2,898 | 2,898 | 003 |
| 104710 |  | Floor/wall cut out locations | 3d | 2017-10-31 A | 2017-10-31 A | 104650 FF | 100% | 2017-10-09 | 2017-10-11 | MH-Wtg [6.44 h] | 2,898 | 2,898 | 003 |
|  | 3 | **90% Modelling** |  | 2017-11-01 | 2017-11-14 |  |  |  |  |  |  |  |  |
| 104730 |  | Modelling of pipe supports | 15d | 2017-11-01 A | 2017-11-14 A | 104650 | 100% | 2017-11-01 | 2017-11-21 | MH-Wtg [92.72 h] | 41,724 | 41,724 | 003 |
| 104740 |  | Updation of vendor data | 10d | 2017-11-03 A | 2017-11-08 A | 104730 FF, 112990 FS+10d | 100% | 2017-11-08 | 2017-11-21 | MH-Wtg [10.3 h] | 4,635 | 4,635 | 003 |
|  | 8 | **B105B- Air Drier** |  | 2017-08-01 | 2017-12-05 |  |  |  |  |  |  |  |  |
|  | 1 | **30% Modelling** |  | 2017-08-01 | 2017-12-05 |  |  |  |  |  |  |  |  |
| 104750 |  | Preliminary layout | 10d | 2017-08-01 A | 2017-08-31 A | 113000 FS+10d | 100% | 2017-09-01 | 2017-09-14 | MH-Wtg [25.76 h] | 11,592 | 11,592 | 003 |
| 104760 |  | Modelling of structure | 5d | 2017-08-01 A | 2017-08-05 A | 104750 | 100% | 2017-09-15 | 2017-09-21 | MH-Wtg [10.3 h] | 4,635 | 4,635 | 003 |
| 104770 |  | Modelling of equipments | 5d | 2017-08-01 A | 2017-08-31 A | 104760 | 100% | 2017-09-22 | 2017-09-28 | MH-Wtg [5.15 h] | 2,318 | 2,318 | 003 |
| 104780 |  | Modelling of pits & trenches | 2d | 2017-08-01 A | 2017-08-04 A | 104750 | 100% | 2017-09-15 | 2017-09-18 | MH-Wtg [1.29 h] | 581 | 581 | 003 |
| 104790 |  | Basic pipe routing | 5d | 2017-09-25 A | 2017-09-28 A | 104770, 100090 FF | 100% | 2017-09-25 | 2017-09-29 | MH-Wtg [7.73 h] | 3,479 | 3,479 | 003 |
| 104800 |  | Utility station locations | 2d | 2017-12-01 A | 2017-12-05 A | 104790 | 100% | 2017-12-01 | 2017-12-04 | MH-Wtg [1.29 h] | 581 | 581 | 003 |

| ID | WBS | Activity | Duration | Start | Finish | Predecessors | Complete | Planned start | Planned finish | Total float | Resources | Cost | Actual cost | UNIT DESCRIPTION |
| --- | --- | --- | --- | --- | --- | --- | --- | --- | --- | --- | --- | --- | --- | --- |
|  | 2 | **60% Modelling** |  | 2017-09-12 | 2017-10-31 |  |  |  |  |  |  |  |  |  |
| 104820 |  | Modelling of instrument cable trays | 5d | 2017-09-12 A | 2017-10-31 A | 104810 FF | 100% | 2017-10-20 | 2017-10-26 |  | MH-Wtg [17.17 h] | 7,727 | 7,727 | 003 |
| 104830 |  | Modelling of electrical cable trays | 5d | 2017-09-12 A | 2017-10-31 A | 104820 SS | 100% | 2017-10-20 | 2017-10-26 |  | MH-Wtg [17.17 h] | 7,727 | 7,727 | 003 |
| 104810 |  | Modelling of piping & inline instruments | 15d | 2017-09-25 A | 2017-10-20 A | 100090, 104790 | 100% | 2017-10-02 | 2017-10-20 |  | MH-Wtg [34.34 h] | 15,453 | 15,453 | 003 |
| 104840 |  | Instrument JB locations | 2d | 2017-09-28 A | 2017-09-28 A | 104810 | 100% | 2017-10-23 | 2017-10-24 |  | MH-Wtg [4.29 h] | 1,931 | 1,931 | 003 |
| 104850 |  | Instrument locations | 2d | 2017-09-28 A | 2017-09-28 A | 104810 FF | 100% | 2017-10-19 | 2017-10-20 |  | MH-Wtg [4.29 h] | 1,931 | 1,931 | 003 |
| 104880 |  | Preliminary MTO for piping materials | 2d | 2017-09-28 A | 2017-09-28 A | 104810 | 100% | 2017-10-12 | 2017-10-13 |  | MH-Wtg [4.29 h] | 1,931 | 1,931 | 003 |
| 104860 |  | Modelling of operating platforms | 2d | 2017-10-31 A | 2017-10-31 A | 104810 | 100% | 2017-10-12 | 2017-10-13 |  | MH-Wtg [2.15 h] | 968 | 968 | 003 |
| 104870 |  | Floor/wall cut out locations | 2d | 2017-10-31 A | 2017-10-31 A | 104810 FF | 100% | 2017-10-10 | 2017-10-11 |  | MH-Wtg [2.15 h] | 968 | 968 | 003 |
|  | 3 | **90% Modelling** |  | 2017-11-01 | 2017-11-08 |  |  |  |  |  |  |  |  |  |
| 104890 |  | Modelling of pipe supports | 8d | 2017-11-01 A | 2017-11-08 A | 104810 | 100% | 2017-11-01 | 2017-11-10 |  | MH-Wtg [30.91 h] | 13,910 | 13,910 | 003 |
| 104900 |  | Updation of vendor data | 5d | 2017-11-03 A | 2017-11-08 A | 104890 FF, 113000 FS+10d | 100% | 2017-11-06 | 2017-11-10 |  | MH-Wtg [3.43 h] | 1,544 | 1,544 | 003 |
|  | 9 | **B105C- VAM Unit (Package)** |  | 2018-08-01 | 2018-08-21 |  |  |  |  |  |  |  |  |  |
|  | 1 | **30% Modelling** |  | 2018-08-01 | 2018-08-14 |  |  |  |  |  |  |  |  |  |
| 104910 |  | Preliminary layout (Package vendor) | 10d | 2018-08-01 | 2018-08-14 | 113010 FS+10d |  |  |  | 52173.9d | MH-Wtg |  |  | 003 |
| 104920 |  | Modelling of structure (Package vendor) | 5d | 2018-08-01 | 2018-08-07 |  |  |  |  | 52178.9d | MH-Wtg |  |  | 003 |
| 104930 |  | Modelling of equipments (Package vendor) | 5d | 2018-08-01 | 2018-08-07 |  |  |  |  | 52178.9d | MH-Wtg |  |  | 003 |
| 104940 |  | Modelling of pits & trenches (Package vendor) | 3d | 2018-08-01 | 2018-08-03 |  |  |  |  | 52180.9d | MH-Wtg |  |  | 003 |
| 104950 |  | Basic pipe routing (Package vendor) | 8d | 2018-08-01 | 2018-08-10 | 100090 FF |  |  |  | 52175.9d | MH-Wtg |  |  | 003 |
| 104960 |  | Utility station locations (Package vendor) | 2d | 2018-08-01 | 2018-08-02 |  |  |  |  | 52181.9d | MH-Wtg |  |  | 003 |
|  | 2 | **60% Modelling** |  | 2018-08-01 | 2018-08-21 |  |  |  |  |  |  |  |  |  |
| 104970 |  | Modelling of piping & inline instruments (Package vendor) | 15d | 2018-08-01 | 2018-08-21 | 100090 |  |  |  | 52168.9d | MH-Wtg |  |  | 003 |
| 104980 |  | Modelling of instrument cable trays (Package vendor) | 5d | 2018-08-01 | 2018-08-07 |  |  |  |  | 52178.9d | MH-Wtg |  |  | 003 |
| 104990 |  | Modelling of electrical cable trays (Package vendor) | 5d | 2018-08-01 | 2018-08-07 |  |  |  |  | 52178.9d | MH-Wtg |  |  | 003 |
| 105000 |  | Instrument JB locations (Package vendor) | 2d | 2018-08-01 | 2018-08-02 |  |  |  |  | 52181.9d | MH-Wtg |  |  | 003 |
| 105010 |  | Instrument locations (Package vendor) | 3d | 2018-08-01 | 2018-08-03 |  |  |  |  | 52180.9d | MH-Wtg |  |  | 003 |
| 105020 |  | Modelling of operating platforms (Package vendor) | 3d | 2018-08-01 | 2018-08-03 |  |  |  |  | 52180.9d | MH-Wtg |  |  | 003 |
| 105030 |  | Floor/wall cut out locations (Package vendor) | 2d | 2018-08-01 | 2018-08-02 |  |  |  |  | 52181.9d | MH-Wtg |  |  | 003 |
| 105040 |  | Preliminary MTO for piping materials (Package vendor) | 3d | 2018-08-01 | 2018-08-03 |  |  |  |  | 52180.9d | MH-Wtg |  |  | 003 |
| 105050 |  | Preliminary MTO for insulation (Package vendor) | 2d | 2018-08-01 | 2018-08-02 |  |  |  |  | 52181.9d | MH-Wtg |  |  | 003 |

| ID | WBS | Activity | Duration | Start | Finish | Predecessors | Complete | Planned start | Planned finish | Total float | Resources | Cost | Actual cost | UNIT DESCRIPTION |
| --- | --- | --- | --- | --- | --- | --- | --- | --- | --- | --- | --- | --- | --- | --- |
|  | 3 | **90% Modelling** |  | 2018-08-01 | 2018-08-21 |  |  |  |  |  |  |  |  |  |
| 105060 |  | Modelling of pipe supports (Package vendor) | 15d | 2018-08-01 | 2018-08-21 |  |  |  |  | 52168.9d | MH-Wtg |  |  | 003 |
| 105070 |  | Updation of vendor data (Package vendor) | 10d | 2018-08-01 | 2018-08-14 | 113010 FS+10d |  |  |  | 52173.9d | MH-Wtg |  |  | 003 |
|  | 10 | **B105D- Hot Well/Cold Well, Pumps (Package)** |  | 2018-08-01 | 2018-08-21 |  |  |  |  |  |  |  |  |  |
|  | 1 | **30% Modelling** |  | 2018-08-01 | 2018-08-14 |  |  |  |  |  |  |  |  |  |
| 105080 |  | Preliminary layout (Package vendor) | 8d | 2018-08-01 | 2018-08-10 |  |  |  |  | 52175.9d | MH-Wtg |  |  | 003 |
| 105090 |  | Modelling of equipments (Package vendor) | 8d | 2018-08-01 | 2018-08-10 |  |  |  |  | 52175.9d | MH-Wtg |  |  | 003 |
| 105100 |  | Modelling of pits & trenches (Package vendor) | 5d | 2018-08-01 | 2018-08-07 |  |  |  |  | 52178.9d | MH-Wtg |  |  | 003 |
| 105110 |  | Basic pipe routing (Package vendor) | 10d | 2018-08-01 | 2018-08-14 | 100090 FF |  |  |  | 52173.9d | MH-Wtg |  |  | 003 |
| 105120 |  | Utility station locations (Package vendor) | 2d | 2018-08-01 | 2018-08-02 |  |  |  |  | 52181.9d | MH-Wtg |  |  | 003 |
|  | 2 | **60% Modelling** |  | 2018-08-01 | 2018-08-21 |  |  |  |  |  |  |  |  |  |
| 105130 |  | Modelling of piping & inline instruments (Package vendor) | 15d | 2018-08-01 | 2018-08-21 | 100090 |  |  |  | 52168.9d | MH-Wtg |  |  | 003 |
| 105140 |  | Modelling of instrument cable trays (Package vendor) | 8d | 2018-08-01 | 2018-08-10 |  |  |  |  | 52175.9d | MH-Wtg |  |  | 003 |
| 105150 |  | Modelling of electrical cable trays (Package vendor) | 8d | 2018-08-01 | 2018-08-10 |  |  |  |  | 52175.9d | MH-Wtg |  |  | 003 |
| 105160 |  | Instrument JB locations (Package vendor) | 3d | 2018-08-01 | 2018-08-03 |  |  |  |  | 52180.9d | MH-Wtg |  |  | 003 |
| 105170 |  | Instrument locations (Package vendor) | 5d | 2018-08-01 | 2018-08-07 |  |  |  |  | 52178.9d | MH-Wtg |  |  | 003 |
| 105180 |  | Modelling of operating platforms (Package vendor) | 3d | 2018-08-01 | 2018-08-03 |  |  |  |  | 52180.9d | MH-Wtg |  |  | 003 |
| 105190 |  | Floor/wall cut out locations (Package vendor) | 5d | 2018-08-01 | 2018-08-07 |  |  |  |  | 52178.9d | MH-Wtg |  |  | 003 |
| 105200 |  | Preliminary MTO for piping materials (Package vendor) | 3d | 2018-08-01 | 2018-08-03 |  |  |  |  | 52180.9d | MH-Wtg |  |  | 003 |
| 105210 |  | Preliminary MTO for insulation (Package vendor) | 2d | 2018-08-01 | 2018-08-02 |  |  |  |  | 52181.9d | MH-Wtg |  |  | 003 |
|  | 3 | **90% Modelling** |  | 2018-08-01 | 2018-08-21 |  |  |  |  |  |  |  |  |  |
| 105220 |  | Modelling of pipe supports (Package vendor) | 15d | 2018-08-01 | 2018-08-21 |  |  |  |  | 52168.9d | MH-Wtg |  |  | 003 |
| 105230 |  | Updation of vendor data (Package vendor) | 10d | 2018-08-01 | 2018-08-14 | 112940 FS+10d |  |  |  | 52173.9d | MH-Wtg |  |  | 003 |
|  | 21 | **B106D- Condensate Storage, Pumps** |  | 2017-09-28 | 2018-10-09 |  |  |  |  |  |  |  |  |  |
|  | 1 | **30% Modelling** |  | 2017-09-28 | 2018-10-09 |  |  |  |  |  |  |  |  |  |
| 114530 |  | Preliminary layout | 5d | 2017-09-28 A | 2017-09-28 A |  | 100% | 2017-10-02 | 2017-10-06 |  | MH-Wtg [15 h] | 6,750 | 6,750 | 003 |
| 114540 |  | Modelling of equipments | 8d | 2017-09-29 A | 2017-10-05 A | 114530 | 100% | 2017-10-09 | 2017-10-18 |  | MH-Wtg [10 h] | 4,500 | 4,500 | 003 |
| 114560 |  | Modelling of pits & trenches | 5d | 2017-10-05 A | 2017-10-05 A | 114530 | 100% | 2017-10-09 | 2017-10-13 |  | MH-Wtg [3 h] | 1,350 | 1,350 | 003 |
| 114570 |  | Basic pipe routing | 8d | 2017-10-10 A | 2017-10-15 A | 114540 | 100% | 2017-10-19 | 2017-10-30 |  | MH-Wtg [8 h] | 3,600 | 3,600 | 003 |
| 114590 |  | Nozzle orientations | 8d | 2017-11-10 A | 2017-11-21 A | 114570 | 100% | 2017-11-01 | 2017-11-10 |  | MH-Wtg [1 h] | 450 | 450 | 003 |
| 114600 |  | Utility station locations | 2d | 2017-12-01 A | 2017-12-07 A | 114570 | 100% | 2017-12-01 | 2017-12-04 |  | MH-Wtg [1 h] | 450 | 450 | 003 |
| 114470 |  | Preliminary layout (Package vendor) | 8d | 2018-08-01 | 2018-08-10 |  |  |  |  | 52175.9d | MH-Wtg |  |  | 003 |
| 114480 |  | Modelling of equipments (Package vendor) | 8d | 2018-08-01 | 2018-08-10 |  |  |  |  | 52175.9d | MH-Wtg |  |  | 003 |
| 114490 |  | Modelling of pits & trenches (Package vendor) | 5d | 2018-08-01 | 2018-08-07 |  |  |  |  | 52178.9d | MH-Wtg |  |  | 003 |
| 114500 |  | Basic pipe routing (Package vendor) | 10d | 2018-08-01 | 2018-08-14 |  |  |  |  | 52173.9d | MH-Wtg |  |  | 003 |
| 114520 |  | Utility station locations (Package vendor) | 2d | 2018-08-01 | 2018-08-02 |  |  |  |  | 52181.9d | MH-Wtg |  |  | 003 |
| 114550 |  | Modelling of structure (Deleted) | 50d | 2018-08-01 | 2018-10-09 | 114540 |  |  |  | 52133.9d | MH-Wtg |  |  | 003 |
| 114610 |  | Safety shower locations (Deleted) | 2d | 2018-08-01 | 2018-08-02 | 114600 SS |  |  |  | 52181.9d | MH-Wtg |  |  | 003 |

| ID | WBS | Activity | Duration | Start | Finish | Predecessors | Complete | Planned start | Planned finish | Total float | Resources | Cost | Actual cost | UNIT DESCRIPTION |
| --- | --- | --- | --- | --- | --- | --- | --- | --- | --- | --- | --- | --- | --- | --- |
|  | 2 | **60% Modelling** |  | 2017-10-20 | 2018-08-21 |  |  |  |  |  |  |  |  |  |
| 114630 |  | Modelling of instrument cable trays | 5d | 2017-10-20 A | 2017-10-31 A | 114620 FF | 100% | 2017-11-07 | 2017-11-13 |  | MH-Wtg [15 h] | 6,750 | 6,750 | 003 |
| 114640 |  | Modelling of electrical cable trays | 5d | 2017-10-20 A | 2017-10-31 A | 114630 SS | 100% | 2017-11-07 | 2017-11-13 |  | MH-Wtg [15 h] | 6,750 | 6,750 | 003 |
| 114620 |  | Modelling of piping & inline instruments | 10d | 2017-11-02 A | 2017-11-15 A | 114570 | 100% | 2017-11-01 | 2017-11-14 |  | MH-Wtg [30 h] | 13,500 | 13,500 | 003 |
| 114670 |  | Instrument locations | 2d | 2017-11-03 A | 2017-11-15 A | 114620 FF | 100% | 2017-11-13 | 2017-11-14 |  | MH-Wtg [2 h] | 900 | 900 | 003 |
| 114660 |  | Instrument JB locations | 2d | 2017-11-10 A | 2017-11-15 A | 114620 | 100% | 2017-11-15 | 2017-11-16 |  | MH-Wtg [2 h] | 900 | 900 | 003 |
| 114680 |  | Motor start button locations | 2d | 2017-11-10 A | 2017-11-15 A | 114640 | 100% | 2017-11-01 | 2017-11-02 |  | MH-Wtg [6.44 h] | 2,898 | 2,898 | 003 |
| 114710 |  | Preliminary MTO for piping materials | 3d | 2017-11-15 A | 2017-11-17 A | 114620 | 100% |  |  |  | MH-Wtg [3 h] | 1,350 | 1,350 | 003 |
| 114730 |  | Preliminary MTO for insulation | 2d | 2017-11-17 A | 2017-11-21 A | 114710 | 100% | 2017-11-20 | 2017-11-21 |  | MH-Wtg [3 h] | 1,350 | 1,350 | 003 |
| 114340 |  | Modelling of piping & inline instruments (Package vendor) | 15d | 2018-08-01 | 2018-08-21 |  |  |  |  | 52168.9d | MH-Wtg |  |  | 003 |
| 114350 |  | Modelling of instrument cable trays (Package vendor) | 8d | 2018-08-01 | 2018-08-10 |  |  |  |  | 52175.9d | MH-Wtg |  |  | 003 |
| 114360 |  | Modelling of electrical cable trays (Package vendor) | 8d | 2018-08-01 | 2018-08-10 |  |  |  |  | 52175.9d | MH-Wtg |  |  | 003 |
| 114380 |  | Instrument JB locations (Package vendor) | 3d | 2018-08-01 | 2018-08-03 |  |  |  |  | 52180.9d | MH-Wtg |  |  | 003 |
| 114390 |  | Instrument locations (Package vendor) | 5d | 2018-08-01 | 2018-08-07 |  |  |  |  | 52178.9d | MH-Wtg |  |  | 003 |
| 114400 |  | Modelling of operating platforms (Package vendor) | 3d | 2018-08-01 | 2018-08-03 |  |  |  |  | 52180.9d | MH-Wtg |  |  | 003 |
| 114410 |  | Floor/wall cut out locations (Package vendor) | 5d | 2018-08-01 | 2018-08-07 |  |  |  |  | 52178.9d | MH-Wtg |  |  | 003 |
| 114420 |  | Preliminary MTO for piping materials (Package vendor) | 3d | 2018-08-01 | 2018-08-03 |  |  |  |  | 52180.9d | MH-Wtg |  |  | 003 |
| 114430 |  | Preliminary MTO for insulation (Package vendor) | 2d | 2018-08-01 | 2018-08-02 |  |  |  |  | 52181.9d | MH-Wtg |  |  | 003 |
| 114690 |  | Modelling of operating platforms (Deleted) | 0d | 2018-08-01 | 2018-08-01 | 114620 |  |  |  | 52183.9d | MH-Wtg |  |  | 003 |
| 114700 |  | Floor/wall cut out locations (Deleted) | 0d | 2018-08-01 | 2018-08-01 | 114620 FF |  |  |  | 52183.9d | MH-Wtg |  |  | 003 |
|  | 3 | **90% Modelling** |  | 2017-12-05 | 2018-08-21 |  |  |  |  |  |  |  |  |  |
| 114740 |  | Modelling of pipe supports | 5d | 2017-12-05 A | 2017-12-13 A | 114620 | 100% | 2017-12-01 | 2017-12-07 |  | MH-Wtg [20 h] | 9,000 | 9,000 | 003 |
| 114750 |  | Updation of vendor data | 8d | 2018-02-26 A | 2018-02-26 A | 114740 FF, 113101.9.5 FF+15d | 100% | 2018-02-01 | 2018-02-12 |  | MH-Wtg [8 h] | 3,600 | 3,600 | 003 |
| 114450 |  | Modelling of pipe supports (Package vendor) | 15d | 2018-08-01 | 2018-08-21 |  |  |  |  | 52168.9d | MH-Wtg |  |  | 003 |
| 114460 |  | Updation of vendor data (Package vendor) | 10d | 2018-08-01 | 2018-08-14 |  |  |  |  | 52173.9d | MH-Wtg |  |  | 003 |

| ID | WBS | Activity | Duration | Start | Finish | Predecessors | Complete | Planned start | Planned finish | Constraint | Resources | Cost | Actual cost | UNIT DESCRIPTION |
| --- | --- | --- | --- | --- | --- | --- | --- | --- | --- | --- | --- | --- | --- | --- |
|  | 12 | **B107A- Raw Water Storage** |  | 2017-02-27 | 2018-02-10 |  |  |  |  |  |  |  |  |  |
|  | 1 | **30% Modelling** |  | 2017-02-27 | 2017-08-04 |  |  |  |  |  |  |  |  |  |
| 105410 |  | Preliminary layout | 8d | 2017-02-27 A | 2017-02-27 A | 100050.1 FF | 100% | 2017-03-01 | 2017-03-10 |  | MH-Wtg [25.76 h] | 11,592 | 11,592 | 003 |
| 105420 |  | Modelling of storage tank | 10d | 2017-03-06 A | 2017-03-10 A | 105410 | 100% | 2017-05-08 | 2017-05-19 |  | MH-Wtg [18.03 h] | 8,114 | 8,114 | 003 |
| 105430 |  | Basic pipe routing | 8d | 2017-06-23 A | 2017-08-04 A | 105420, 100090 FF | 100% | 2017-06-26 | 2017-07-05 |  | MH-Wtg [7.73 h] | 3,479 | 3,479 | 003 |
|  | 2 | **60% Modelling** |  | 2017-06-23 | 2017-11-08 |  |  |  |  |  |  |  |  |  |
| 105440 |  | Modelling of piping & inline instruments | 20d | 2017-06-23 A | 2017-09-20 A | 105430, 100090 | 100% | 2017-09-06 | 2017-10-03 |  | MH-Wtg [81.56 h] | 36,702 | 36,702 | 003 |
| 105450 |  | Preliminary MTO for piping materials | 3d | 2017-11-08 A | 2017-11-08 A | 105440 | 100% | 2017-11-01 | 2017-11-03 |  | MH-Wtg [4.29 h] | 1,931 | 1,931 | 003 |
|  | 3 | **90% Modelling** |  | 2017-12-02 | 2018-02-10 |  |  |  |  |  |  |  |  |  |
| 105460 |  | Modelling of pipe supports | 5d | 2017-12-02 A | 2017-12-15 A | 105440 | 100% | 2017-12-01 | 2017-12-07 |  | MH-Wtg [30.91 h] | 13,910 | 13,910 | 003 |
| 105470 |  | Updation of vendor data | 2d | 2018-02-10 A | 2018-02-10 A | 105460 FF | 100% | 2018-02-01 | 2018-02-02 |  | MH-Wtg [3.43 h] | 1,544 | 1,544 | 003 |
|  | 17 | **B107A- Pump Area** |  | 2017-06-23 | 2018-02-10 |  |  |  |  |  |  |  |  |  |
|  | 1 | **30% Modelling** |  | 2017-06-23 | 2017-12-08 |  |  |  |  |  |  |  |  |  |
| 107810 |  | Preliminary layout | 10d | 2017-06-23 A | 2017-07-05 A | 105410 | 100% | 2017-06-01 | 2017-06-14 | start on or after 2017-04-18 | MH-Wtg [77.27 h] | 34,772 | 34,772 | 003 |
| 107820 |  | Modelling of equipments | 8d | 2017-06-23 A | 2017-08-04 A | 107810 | 100% | 2017-06-15 | 2017-06-26 |  | MH-Wtg [30.91 h] | 13,910 | 13,910 | 003 |
| 108850 |  | Modelling of pits & trenches | 5d | 2017-06-23 A | 2017-08-04 A | 107810 | 100% | 2017-06-15 | 2017-06-21 |  | MH-Wtg [7.73 h] | 3,479 | 3,479 | 003 |
| 108860 |  | Basic pipe routing | 15d | 2017-06-23 A | 2017-08-04 A | 107820, 100090 FF | 100% | 2017-06-27 | 2017-07-17 |  | MH-Wtg [30.91 h] | 13,910 | 13,910 | 003 |
| 108870 |  | Utility station locations | 2d | 2017-12-01 A | 2017-12-08 A | 108860 | 100% | 2017-12-01 | 2017-12-04 |  | MH-Wtg [7.73 h] | 3,479 | 3,479 | 003 |
|  | 2 | **60% Modelling** |  | 2017-06-23 | 2017-10-31 |  |  |  |  |  |  |  |  |  |
| 108880 |  | Modelling of piping & inline instruments | 20d | 2017-06-23 A | 2017-09-20 A | 100090, 108860 | 100% | 2017-07-18 | 2017-08-14 |  | MH-Wtg [103.02 h] | 46,359 | 46,359 | 003 |
| 109440 |  | Instrument locations | 5d | 2017-06-23 A | 2017-09-20 A | 108880 FF | 100% | 2017-09-22 | 2017-09-28 |  | MH-Wtg [12.88 h] | 5,796 | 5,796 | 003 |
| 109460 |  | Floor/wall cut out locations | 5d | 2017-06-27 A | 2017-06-27 A | 108880 FF | 100% | 2017-07-05 | 2017-07-11 |  | MH-Wtg [6.44 h] | 2,898 | 2,898 | 003 |
| 108890 |  | Modelling of instrument cable trays | 12d | 2017-08-25 A | 2017-10-31 A | 108880 FF | 100% | 2017-09-13 | 2017-09-28 |  | MH-Wtg [51.51 h] | 23,180 | 23,180 | 003 |
| 108900 |  | Modelling of electrical cable trays | 12d | 2017-08-25 A | 2017-10-31 A | 108890 SS | 100% | 2017-09-13 | 2017-09-28 |  | MH-Wtg [51.51 h] | 23,180 | 23,180 | 003 |
| 109430 |  | Instrument JB locations | 3d | 2017-08-25 A | 2017-09-20 A | 108880 | 100% | 2017-09-29 | 2017-10-03 |  | MH-Wtg [12.88 h] | 5,796 | 5,796 | 003 |
| 109470 |  | Preliminary MTO for piping materials | 3d | 2017-09-28 A | 2017-09-28 A | 108880 | 100% | 2017-10-02 | 2017-10-04 |  | MH-Wtg [12.88 h] | 5,796 | 5,796 | 003 |
| 109450 |  | Modelling of operating platforms (Deleted) | 0d | 2017-10-31 A | 2017-10-31 A | 108880 | 100% | 2017-10-02 | 2017-10-02 |  | MH-Wtg |  |  | 003 |

| ID | WBS | Activity | Duration | Start | Finish | Predecessors | Complete | Planned start | Planned finish | Total float | Constraint | Resources | Cost | Actual cost | UNIT DESCRIPTION |
| --- | --- | --- | --- | --- | --- | --- | --- | --- | --- | --- | --- | --- | --- | --- | --- |
|  | 3 | **90% Modelling** |  | 2017-09-01 | 2018-02-10 |  |  |  |  |  |  |  |  |  |  |
| 109490 |  | Modelling of pipe supports | 15d | 2017-09-01 A | 2017-09-16 A | 108880 | 100% | 2017-09-29 | 2017-10-19 |  |  | MH-Wtg [92.72 h] | 41,724 | 41,724 | 003 |
| 109500 |  | Updation of vendor data | 10d | 2018-02-10 A | 2018-02-10 A | 109490 FF, 112970 FS+10d | 100% | 2018-02-09 | 2018-02-22 |  |  | MH-Wtg [10.3 h] | 4,635 | 4,635 | 003 |
|  | 11 | **B108D- DM Storage** |  | 2017-05-29 | 2018-08-10 |  |  |  |  |  |  |  |  |  |  |
|  | 1 | **30% Modelling** |  | 2017-05-29 | 2018-08-07 |  |  |  |  |  |  |  |  |  |  |
| 109510 |  | Preliminary layout | 10d | 2017-05-29 A | 2017-05-29 A | 105410 | 100% | 2017-05-01 | 2017-05-12 |  | finish on or after 2017-03-29 | MH-Wtg [25.76 h] | 11,592 | 11,592 | 003 |
| 109520 |  | Modelling of equipments | 8d | 2017-06-23 A | 2017-08-04 A | 109510 | 100% | 2017-06-01 | 2017-06-12 |  |  | MH-Wtg [10.3 h] | 4,635 | 4,635 | 003 |
| 109540 |  | Modelling of pits & trenches | 5d | 2017-07-07 A | 2017-08-04 A | 109510 | 100% | 2017-08-01 | 2017-08-07 |  |  | MH-Wtg [2.58 h] | 1,161 | 1,161 | 003 |
| 109550 |  | Basic pipe routing | 12d | 2017-07-07 A | 2017-08-04 A | 109520, 100090 FF | 100% | 2017-08-21 | 2017-09-05 |  |  | MH-Wtg [7.73 h] | 3,479 | 3,479 | 003 |
| 109560 |  | Nozzle orientations | 10d | 2017-07-07 A | 2017-08-04 A | 109550 | 100% | 2017-09-06 | 2017-09-19 |  |  | MH-Wtg [1.29 h] | 581 | 581 | 003 |
| 109570 |  | Utility station locations | 2d | 2017-08-12 A | 2017-08-12 A | 109550 | 100% | 2017-10-06 | 2017-10-09 |  |  | MH-Wtg [1.29 h] | 581 | 581 | 003 |
| 109530 |  | Modelling of structure (Deleted) | 5d | 2018-08-01 | 2018-08-07 | 109520 |  |  |  | 52178.9d |  | MH-Wtg |  |  | 003 |
|  | 2 | **60% Modelling** |  | 2017-07-07 | 2018-08-10 |  |  |  |  |  |  |  |  |  |  |
| 109590 |  | Modelling of piping & inline instruments | 20d | 2017-07-07 A | 2017-09-20 A | 100090, 109550 | 100% | 2017-09-06 | 2017-10-03 |  |  | MH-Wtg [34.34 h] | 15,453 | 15,453 | 003 |
| 109600 |  | Modelling of instrument cable trays | 10d | 2017-07-25 A | 2017-10-31 A | 109590 FF | 100% | 2017-09-20 | 2017-10-03 |  |  | MH-Wtg [17.17 h] | 7,727 | 7,727 | 003 |
| 109610 |  | Modelling of electrical cable trays | 10d | 2017-07-25 A | 2017-10-31 A | 109600 SS | 100% | 2017-09-20 | 2017-10-03 |  |  | MH-Wtg [17.17 h] | 7,727 | 7,727 | 003 |
| 109620 |  | Instrument JB locations | 3d | 2017-07-25 A | 2017-09-20 A | 109590 | 100% | 2017-10-04 | 2017-10-06 |  |  | MH-Wtg [2.15 h] | 968 | 968 | 003 |
| 109630 |  | Instrument locations | 5d | 2017-07-25 A | 2017-09-20 A | 109590 FF | 100% | 2017-09-27 | 2017-10-03 |  |  | MH-Wtg [2.15 h] | 968 | 968 | 003 |
| 109640 |  | Motor start button locations | 5d | 2017-07-25 A | 2017-09-20 A | 109610 | 100% | 2017-10-04 | 2017-10-10 |  |  | MH-Wtg [2.15 h] | 968 | 968 | 003 |
| 109670 |  | Preliminary MTO for piping materials | 3d | 2017-08-30 A | 2017-08-30 A | 109590 | 100% | 2017-09-29 | 2017-10-03 |  |  | MH-Wtg [4.29 h] | 1,931 | 1,931 | 003 |
| 109650 |  | Modelling of operating platforms (Deleted) | 5d | 2018-08-01 | 2018-08-07 | 109590 |  |  |  | 52178.9d |  | MH-Wtg |  |  | 003 |
| 109660 |  | Floor/wall cut out locations (Deleted) | 8d | 2018-08-01 | 2018-08-10 | 109590 FF |  |  |  | 52175.9d |  | MH-Wtg |  |  | 003 |
|  | 3 | **90% Modelling** |  | 2017-07-25 | 2018-05-25 |  |  |  |  |  |  |  |  |  |  |
| 109690 |  | Modelling of pipe supports | 15d | 2017-07-25 A | 2017-08-31 A | 109590 | 100% | 2017-10-04 | 2017-10-24 |  |  | MH-Wtg [30.91 h] | 13,910 | 13,910 | 003 |
| 109700 |  | Updation of vendor data | 10d | 2018-02-06 A | 2018-05-25 A | 109690 FF, 112940 FS+10d, 113250 FF+15d | 100% | 2018-02-20 | 2018-03-05 |  |  | MH-Wtg [3.43 h] | 1,544 | 1,544 | 003 |

| ID | WBS | Activity | Duration | Start | Finish | Predecessors | Complete | Planned start | Planned finish | Constraint | Resources | Cost | Actual cost | UNIT DESCRIPTION |
| --- | --- | --- | --- | --- | --- | --- | --- | --- | --- | --- | --- | --- | --- | --- |
|  | 14 | **B109- Cooling Tower with Pumps** |  | 2017-08-10 | 2018-05-25 |  |  |  |  |  |  |  |  |  |
|  | 1 | **30% Modelling** |  | 2017-08-10 | 2017-09-08 |  |  |  |  |  |  |  |  |  |
| 105650 |  | Modelling of equipments | 10d | 2017-08-10 A | 2017-08-16 A | 105640 | 100% | 2017-09-15 | 2017-09-28 |  | MH-Wtg [41.21 h] | 18,545 | 18,545 | 003 |
| 105670 |  | Basic pipe routing | 20d | 2017-08-10 A | 2017-09-05 A | 105650, 100090 FF | 100% | 2017-09-29 | 2017-10-26 |  | MH-Wtg [30.91 h] | 13,910 | 13,910 | 003 |
| 105660 |  | Modelling of pits & trenches | 8d | 2017-08-12 A | 2017-08-18 A | 105640 | 100% | 2017-09-15 | 2017-09-26 |  | MH-Wtg [20.6 h] | 9,270 | 9,270 | 003 |
| 105640 |  | Preliminary layout | 10d | 2017-08-31 A | 2017-08-31 A | 112850 FS+10d | 100% | 2017-09-01 | 2017-09-14 |  | MH-Wtg [103.02 h] | 46,359 | 46,359 | 003 |
| 105680 |  | Utility station locations | 2d | 2017-09-05 A | 2017-09-08 A | 105670 | 100% | 2017-10-27 | 2017-10-30 |  | MH-Wtg [5.15 h] | 4,636 | 4,636 | 003 |
|  | 2 | **60% Modelling** |  | 2017-08-31 | 2017-10-31 |  |  |  |  |  |  |  |  |  |
| 105750 |  | Floor/wall cut out locations | 5d | 2017-08-31 A | 2017-08-31 A | 105690 FF | 100% | 2017-10-02 | 2017-10-06 |  | MH-Wtg [0.86 h] | 3,870 | 3,870 | 003 |
| 105690 |  | Modelling of piping & inline instruments | 30d | 2017-09-05 A | 2017-09-20 A | 100090, 105670 | 100% | 2017-10-27 | 2017-12-07 |  | MH-Wtg [154.54 h] | 69,543 | 69,543 | 003 |
| 105730 |  | Instrument locations | 5d | 2017-09-20 A | 2017-09-20 A | 105690 FF | 100% | 2017-10-02 | 2017-10-06 |  | MH-Wtg [8.59 h] | 3,866 | 3,866 | 003 |
| 105700 |  | Modelling of instrument cable trays | 10d | 2017-09-28 A | 2017-10-31 A | 105690 FF | 100% | 2017-09-25 | 2017-10-06 |  | MH-Wtg [68.68 h] | 30,906 | 30,906 | 003 |
| 105710 |  | Modelling of electrical cable trays | 10d | 2017-09-28 A | 2017-10-31 A | 105700 SS | 100% | 2017-09-25 | 2017-10-06 |  | MH-Wtg [68.68 h] | 30,906 | 30,906 | 003 |
| 105760 |  | Preliminary MTO for piping materials | 3d | 2017-09-28 A | 2017-09-28 A | 105690 | 100% | 2017-10-02 | 2017-10-04 |  | MH-Wtg [17.17 h] | 7,727 | 7,727 | 003 |
| 105720 |  | Instrument JB locations | 2d | 2017-09-29 A | 2017-09-29 A | 105690 | 100% | 2017-09-25 | 2017-09-26 |  | MH-Wtg [8.59 h] | 3,866 | 3,866 | 003 |
| 105740 |  | Modelling of operating platforms | 3d | 2017-10-31 A | 2017-10-31 A | 105690 | 100% | 2017-10-02 | 2017-10-04 |  | MH-Wtg [8.59 h] | 3,866 | 3,866 | 003 |
|  | 3 | **90% Modelling** |  | 2017-10-20 | 2018-05-25 |  |  |  |  |  |  |  |  |  |
| 105770 |  | Modelling of pipe supports | 8d | 2017-10-20 A | 2017-10-31 A | 105690 | 100% | 2017-10-02 | 2017-10-11 |  | MH-Wtg [123.63 h] | 55,634 | 55,634 | 003 |
| 105780 |  | Updation of vendor data | 5d | 2018-02-06 A | 2018-05-25 A | 105770 FF, 112950 FS+10d, 113250 FF+15d | 100% | 2018-02-27 | 2018-03-05 |  | MH-Wtg [13.74 h] | 6,183 | 6,183 | 003 |
|  | 15 | **B117- Piperack** |  | 2016-12-15 | 2018-06-28 |  |  |  |  |  |  |  |  |  |
|  | 1 | **30% Modelling** |  | 2016-12-15 | 2017-09-15 |  |  |  |  |  |  |  |  |  |
| 105790 |  | Preliminary layout | 69d | 2016-12-15 A | 2017-04-26 A | 103440, 100090 FF | 100% | 2017-09-14 | 2017-12-19 | start on 2016-12-15 | MH-Wtg [103.02 h] | 46,359 | 46,359 | 003 |
| 105800 |  | Modelling of structure | 89d | 2016-12-15 A | 2017-04-13 A | 105790 | 100% | 2017-12-20 | 2018-04-24 | start on 2016-12-15 | MH-Wtg [41.21 h] | 18,545 | 18,545 | 003 |
| 105810 |  | Basic pipe routing | 25d | 2017-04-20 A | 2017-08-04 A | 105800, 100090 FF | 100% | 2017-05-29 | 2017-06-30 |  | MH-Wtg [30.91 h] | 13,910 | 13,910 | 003 |
| 105830 |  | Utility station locations | 2d | 2017-08-12 A | 2017-08-12 A | 105810 | 100% | 2017-10-06 | 2017-10-09 |  | MH-Wtg [10.3 h] | 4,635 | 4,635 | 003 |
| 105820 |  | Preliminary stress analysis | 20d | 2017-09-01 A | 2017-09-15 A | 105810 | 100% | 2017-10-06 | 2017-11-02 |  | MH-Wtg [20.6 h] | 9,270 | 9,270 | 003 |

| ID | WBS | Activity | Duration | Start | Finish | Predecessors | Complete | Planned start | Planned finish | Total float | Constraint | Resources | Cost | Actual cost | UNIT DESCRIPTION |
| --- | --- | --- | --- | --- | --- | --- | --- | --- | --- | --- | --- | --- | --- | --- | --- |
|  | 2 | **60% Modelling** |  | 2017-04-20 | 2017-11-09 |  |  |  |  |  |  |  |  |  |  |
| 105840 |  | Modelling of piping | 20d | 2017-04-20 A | 2017-08-20 A | 100090, 105810 | 100% | 2017-09-06 | 2017-10-03 |  |  | MH-Wtg [137.37 h] | 61,817 | 61,817 | 003 |
| 105850 |  | Modelling of instrument cable trays | 15d | 2017-07-18 A | 2017-10-31 A | 105840 FF | 100% | 2017-09-13 | 2017-10-03 |  |  | MH-Wtg [85.85 h] | 38,633 | 38,633 | 003 |
| 105860 |  | Modelling of electrical cable trays | 15d | 2017-07-18 A | 2017-10-31 A | 105850 SS | 100% | 2017-09-13 | 2017-10-03 |  |  | MH-Wtg [85.85 h] | 38,633 | 38,633 | 003 |
| 105870 |  | Preliminary MTO for piping materials | 3d | 2017-08-30 A | 2017-08-30 A | 105840 | 100% | 2017-09-29 | 2017-10-03 |  |  | MH-Wtg [17.17 h] | 7,727 | 7,727 | 003 |
| 105880 |  | Preliminary MTO for insulation | 2d | 2017-11-03 A | 2017-11-09 A | 105870, 103390 FF-10d | 100% | 2017-11-13 | 2017-11-15 |  |  | MH-Wtg [17.17 h] | 7,727 | 7,727 | 003 |
|  | 3 | **90% Modelling** |  | 2017-08-10 | 2018-06-28 |  |  |  |  |  |  |  |  |  |  |
| 105890 |  | Modelling of pipe supports | 20d | 2017-08-10 A | 2017-08-25 A | 105840 | 100% | 2017-09-29 | 2017-10-26 |  |  | MH-Wtg [109.89 h] | 49,451 | 49,451 | 003 |
| 105910 |  | Final stress analysis | 20d | 2017-12-06 A | 2018-01-20 A | 105890 | 100% | 2017-12-01 | 2017-12-28 |  |  | MH-Wtg [13.74 h] | 6,183 | 6,183 | 003 |
| 105900 |  | Updation of vendor data | 10d | 2018-06-28 A | 2018-06-28 A | 105890, 113260 FF+15d | 100% | 2018-06-29 | 2018-07-12 |  |  | MH-Wtg [13.74 h] | 6,183 | 6,183 | 003 |
|  | 3 | **Detail Documents** |  | 2016-11-11 | 2018-09-11 |  |  |  |  |  |  |  |  |  |  |
|  | 1 | **B101- WNA Plant** |  | 2017-02-13 | 2018-07-31 |  |  |  |  |  |  |  |  |  |  |
| 105920 |  | General Arrangement Drawing (GAD) | 20d | 2017-02-13 A | 2017-06-22 A | 103520 | 100% | 2018-07-20 | 2018-08-16 |  |  | MH-Wtg [59.42 h] | 26,739 | 26,739 | 001 |
| 105930 |  | Piping Arrangement Drawing (PAD) | 30d | 2017-12-20 A | 2018-07-14 A | 103630, 105940 FF | 100% | 2018-02-12 | 2018-03-23 |  |  | MH-Wtg [39.62 h] | 17,829 | 17,829 | 001 |
| 105940 |  | Piping Isometric Drawing (PIS) | 55d | 2018-01-29 A | 2018-06-14 A | 113310.1 FF+20d, 103630, 103640 FF | 100% | 2018-02-22 | 2018-05-09 |  |  | MH-Wtg [79.23 h] | 35,654 | 35,654 | 001 |
| 105950 |  | Secondary Support Details (SSD) | 25d | 2018-07-20 A | 2018-07-31 A | 103650, 113310 FF+15d | 100% | 2018-07-30 | 2018-08-31 |  |  | MH-Wtg [19.81 h] | 8,915 | 8,915 | 001 |
|  | 2 | **B102A- CNA Plant-1** |  | 2016-11-11 | 2018-09-11 |  |  |  |  |  |  |  |  |  |  |
| 105960 |  | Updating existing GAD | 1d | 2016-11-11 A | 2016-11-11 A | 105920 SF | 100% | 2018-07-19 | 2018-07-20 |  | start on 2016-11-11 | MH-Wtg [29.71 h] | 13,370 | 13,370 | 002 |
| 105970 |  | Updating existing PAD (Deleted) | 15d | 2018-08-01 | 2018-08-21 | 105930 SF |  |  |  | 52168.9d |  | MH-Wtg |  |  | 002 |
| 105980 |  | Updating existing PIS (Deleted) | 30d | 2018-08-01 | 2018-09-11 |  |  |  |  | 52153.9d |  | MH-Wtg |  |  | 002 |
| 105990 |  | Updating existing SSD (Deleted) | 15d | 2018-08-01 | 2018-08-21 | 105950 SF |  |  |  | 52168.9d |  | MH-Wtg |  |  | 002 |
|  | 3 | **B102B- CNA Plant-2** |  | 2016-11-11 | 2018-09-11 |  |  |  |  |  |  |  |  |  |  |
| 106000 |  | Updating existing GAD | 1d | 2016-11-11 A | 2016-11-11 A | 105960 SS | 100% | 2018-07-19 | 2018-07-20 |  | start on 2016-11-11 | MH-Wtg [29.71 h] | 13,370 | 13,370 | 002 |
| 106010 |  | Updating existing PAD (Deleted) | 15d | 2018-08-01 | 2018-08-21 |  |  |  |  | 52168.9d |  | MH-Wtg |  |  | 002 |
| 106020 |  | Updating existing PIS (Deleted) | 30d | 2018-08-01 | 2018-09-11 |  |  |  |  | 52153.9d |  | MH-Wtg |  |  | 002 |
| 106030 |  | Updating existing SSD (Deleted) | 15d | 2018-08-01 | 2018-08-21 |  |  |  |  | 52168.9d |  | MH-Wtg |  |  | 002 |

| ID | WBS | Activity | Duration | Start | Finish | Predecessors | Complete | Planned start | Planned finish | Resources | Cost | Actual cost | UNIT DESCRIPTION |
| --- | --- | --- | --- | --- | --- | --- | --- | --- | --- | --- | --- | --- | --- |
|  | 4 | **B103A- WNA Storage Tanks** |  | 2016-12-02 | 2018-06-18 |  |  |  |  |  |  |  |  |
| 106040 |  | General Arrangement Drawing (GAD) | 15d | 2016-12-02 A | 2017-02-16 A | 103730 | 100% | 2017-10-24 | 2017-11-13 | MH-Wtg [17.77 h] | 7,997 | 7,997 | 003 |
| 106060 |  | Piping Isometric Drawing (PIS) | 25d | 2018-04-16 A | 2018-05-10 A | 103850 FF | 100% | 2018-06-01 | 2018-07-05 | MH-Wtg [23.69 h] | 10,661 | 10,661 | 003 |
| 106050 |  | Piping Arrangement Drawing (PAD) | 20d | 2018-06-18 A | 2018-06-18 A | 103840, 106060 FF | 100% | 2018-06-08 | 2018-07-05 | MH-Wtg [11.84 h] | 5,328 | 5,328 | 003 |
| 106070 |  | Secondary Support Details (SSD) | 15d | 2018-06-18 A | 2018-06-18 A | 106060 | 100% | 2018-07-06 | 2018-07-26 | MH-Wtg [5.92 h] | 2,664 | 2,664 | 003 |
|  | 18 | **B103B- CNA Storage Tanks** |  | 2016-12-07 | 2018-06-04 |  |  |  |  |  |  |  |  |
| 109580 |  | General Arrangement Drawing (GAD) | 15d | 2016-12-07 A | 2017-04-12 A | 105310 | 100% | 2018-05-31 | 2018-06-20 | MH-Wtg [17.77 h] | 7,997 | 7,997 | 003 |
| 110330 |  | Piping Isometric Drawing (PIS) | 25d | 2018-02-23 A | 2018-05-07 A | 105500 FF | 100% | 2018-03-30 | 2018-05-03 | MH-Wtg [23.69 h] | 10,661 | 10,661 | 003 |
| 110320 |  | Piping Arrangement Drawing (PAD) | 20d | 2018-06-04 A | 2018-06-04 A | 105490, 110330 FF | 100% | 2018-06-08 | 2018-07-05 | MH-Wtg [11.84 h] | 5,328 | 5,328 | 003 |
| 110340 |  | Secondary Support Details (SSD) | 15d | 2018-06-04 A | 2018-06-04 A | 110330 | 100% | 2018-07-06 | 2018-07-26 | MH-Wtg [5.92 h] | 2,664 | 2,664 | 003 |
|  | 19 | **B103C- WWS Storage Tanks** |  | 2017-03-09 | 2018-05-22 |  |  |  |  |  |  |  |  |
| 110350 |  | General Arrangement Drawing (GAD) | 15d | 2017-03-09 A | 2017-03-09 A | 105580 | 100% | 2017-07-17 | 2017-08-04 | MH-Wtg [5.82 h] | 2,619 | 2,619 | 003 |
| 110520 |  | Piping Isometric Drawing (PIS) | 25d | 2018-04-04 A | 2018-05-04 A | 106490 FF | 100% | 2018-06-01 | 2018-07-05 | MH-Wtg [7.76 h] | 3,492 | 3,492 | 003 |
| 110360 |  | Piping Arrangement Drawing (PAD) | 20d | 2018-05-22 A | 2018-05-22 A | 106480, 110520 FF | 100% | 2018-06-08 | 2018-07-05 | MH-Wtg [3.88 h] | 1,746 | 1,746 | 003 |
| 110530 |  | Secondary Support Details (SSD) | 15d | 2018-05-22 A | 2018-05-22 A | 110520 | 100% | 2018-07-06 | 2018-07-26 | MH-Wtg [1.94 h] | 873 | 873 | 003 |
|  | 5 | **B103D- WNA Tanker Loading Bays** |  | 2016-12-02 | 2018-06-14 |  |  |  |  |  |  |  |  |
| 106080 |  | General Arrangement Drawing (GAD) | 10d | 2016-12-02 A | 2017-02-16 A | 103920 | 100% | 2018-01-15 | 2018-01-29 | MH-Wtg [4.59 h] | 2,066 | 2,066 | 003 |
| 106100 |  | Piping Isometric Drawing (PIS) | 20d | 2018-04-05 A | 2018-05-10 A | 104030 | 100% | 2018-06-01 | 2018-06-28 | MH-Wtg [6.13 h] | 2,759 | 2,759 | 003 |
| 106090 |  | Piping Arrangement Drawing (PAD) | 15d | 2018-06-14 A | 2018-06-14 A | 104020, 106100 FF | 100% | 2018-06-08 | 2018-06-28 | MH-Wtg [3.06 h] | 1,377 | 1,377 | 003 |
| 106110 |  | Secondary Support Details (SSD) | 10d | 2018-06-14 A | 2018-06-14 A | 106100 | 100% | 2018-06-29 | 2018-07-12 | MH-Wtg [1.53 h] | 689 | 689 | 003 |
|  | 20 | **B103E- CNA Tanker Loading Bays** |  | 2016-12-07 | 2018-06-14 |  |  |  |  |  |  |  |  |
| 110540 |  | General Arrangement Drawing (GAD) | 10d | 2016-12-07 A | 2017-04-12 A | 107410 | 100% | 2018-05-23 | 2018-06-05 | MH-Wtg [4.59 h] | 2,066 | 2,066 | 003 |
| 110560 |  | Piping Isometric Drawing (PIS) | 20d | 2018-04-05 A | 2018-05-10 A | 107800 | 100% | 2018-06-01 | 2018-06-28 | MH-Wtg [6.13 h] | 2,759 | 2,759 | 003 |
| 110550 |  | Piping Arrangement Drawing (PAD) | 15d | 2018-06-14 A | 2018-06-14 A | 107790, 110560 FF | 100% | 2018-06-08 | 2018-06-28 | MH-Wtg [3.06 h] | 1,377 | 1,377 | 003 |
| 110780 |  | Secondary Support Details (SSD) | 10d | 2018-06-14 A | 2018-06-14 A | 110560 | 100% | 2018-06-29 | 2018-07-12 | MH-Wtg [1.53 h] | 689 | 689 | 003 |

| ID | WBS | Activity | Duration | Start | Finish | Predecessors | Complete | Remaining | Planned start | Planned finish | Total float | Resources | Cost | Actual cost | UNIT DESCRIPTION |
| --- | --- | --- | --- | --- | --- | --- | --- | --- | --- | --- | --- | --- | --- | --- | --- |
|  | 6 | **B104A- Caustic, Sulphuric Storage** |  | 2017-04-14 | 2018-06-04 |  |  |  |  |  |  |  |  |  |  |
| 106120 |  | General Arrangement Drawing (GAD) | 15d | 2017-04-14 A | 2017-04-14 A | 104100 | 100% |  | 2017-04-26 | 2017-05-16 |  | MH-Wtg [13.48 h] | 6,066 | 6,066 | 003 |
| 106140 |  | Piping Isometric Drawing (PIS) | 40d | 2018-03-29 A | 2018-05-14 A | 104220 FF | 100% |  | 2018-03-27 | 2018-05-21 |  | MH-Wtg [17.97 h] | 8,087 | 8,087 | 003 |
| 106130 |  | Piping Arrangement Drawing (PAD) | 20d | 2018-06-04 A | 2018-06-04 A | 104210, 106140 FF | 100% |  | 2018-06-29 | 2018-07-26 |  | MH-Wtg [8.99 h] | 4,046 | 4,046 | 003 |
| 106150 |  | Secondary Support Details (SSD) | 15d | 2018-06-04 A | 2018-06-04 A | 106140 | 100% |  | 2018-07-27 | 2018-08-16 |  | MH-Wtg [4.49 h] | 2,021 | 2,021 | 003 |
|  | 7 | **B104B- HSD Storage (Deleted)** |  | 2017-04-14 | 2018-09-11 |  |  |  |  |  |  |  |  |  |  |
| 106160 |  | General Arrangement Drawing (GAD) (Deleted) | 10d | 2017-04-14 A | 2018-08-14 |  |  | 10d | 2017-05-08 | 2017-05-19 | 52173.9d | MH-Wtg [3.06 h] | 1,377 | 1,377 | 003 |
| 106170 |  | Piping Arrangement Drawing (PAD) (Deleted) | 15d | 2018-08-01 | 2018-08-21 |  |  |  |  |  | 52168.9d | MH-Wtg [2.04 h] | 918 |  | 003 |
| 106180 |  | Piping Isometric Drawing (PIS) (Deleted) | 30d | 2018-08-01 | 2018-09-11 |  |  |  |  |  | 52153.9d | MH-Wtg [4.08 h] | 1,836 |  | 003 |
| 106190 |  | Secondary Support Details (SSD) (Deleted) | 10d | 2018-08-01 | 2018-08-14 |  |  |  |  |  | 52173.9d | MH-Wtg [1.02 h] | 459 |  | 003 |
|  | 8 | **B104C-Liquid NH3 Storage** |  | 2017-04-12 | 2018-06-07 |  |  |  |  |  |  |  |  |  |  |
| 106200 |  | General Arrangement Drawing (GAD) | 15d | 2017-04-12 A | 2017-04-12 A | 104460 | 100% |  | 2017-05-03 | 2017-05-23 |  | MH-Wtg [7.35 h] | 3,308 | 3,308 | 003 |
| 106220 |  | Piping Isometric Drawing (PIS) | 40d | 2018-04-12 A | 2018-05-16 A | 104580 FF | 100% |  | 2018-06-01 | 2018-07-26 |  | MH-Wtg [9.8 h] | 4,410 | 4,410 | 003 |
| 106210 |  | Piping Arrangement Drawing (PAD) | 20d | 2018-06-07 A | 2018-06-07 A | 104570, 106220 FF | 100% |  | 2018-06-29 | 2018-07-26 |  | MH-Wtg [4.9 h] | 2,205 | 2,205 | 003 |
| 106230 |  | Secondary Support Details (SSD) | 15d | 2018-06-07 A | 2018-06-07 A | 106220 | 100% |  | 2018-07-27 | 2018-08-16 |  | MH-Wtg [2.45 h] | 1,103 | 1,103 | 003 |
|  | 21 | **B104E- SNA** |  | 2017-04-15 | 2018-06-20 |  |  |  |  |  |  |  |  |  |  |
| 114180 |  | General Arrangement Drawing (GAD) | 15d | 2017-04-15 A | 2017-04-15 A | 113830 | 100% |  | 2017-07-17 | 2017-08-04 |  | MH-Wtg [5.82 h] | 2,619 | 2,619 | 003 |
| 114200 |  | Piping Isometric Drawing (PIS) | 25d | 2018-03-27 A | 2018-05-16 A | 113970 FF | 100% |  | 2018-04-17 | 2018-05-21 |  | MH-Wtg [7.76 h] | 3,492 | 3,492 | 003 |
| 114190 |  | Piping Arrangement Drawing (PAD) | 20d | 2018-06-20 A | 2018-06-20 A | 113960, 114200 FF | 100% |  | 2018-06-08 | 2018-07-05 |  | MH-Wtg [3.88 h] | 1,746 | 1,746 | 003 |
| 114210 |  | Secondary Support Details (SSD) | 15d | 2018-06-20 A | 2018-06-20 A | 114200 | 100% |  | 2018-07-06 | 2018-07-26 |  | MH-Wtg [1.94 h] | 873 | 873 | 003 |
|  | 22 | **B104F- SNA Tanker Unloading** |  | 2017-04-15 | 2018-06-14 |  |  |  |  |  |  |  |  |  |  |
| 114220 |  | General Arrangement Drawing (GAD) | 10d | 2017-04-15 A | 2017-04-15 A | 114050 | 100% |  | 2018-01-15 | 2018-01-29 |  | MH-Wtg [4.59 h] | 2,066 | 2,066 | 003 |
| 114250 |  | Piping Isometric Drawing (PIS) | 15d | 2018-04-05 A | 2018-05-10 A | 114170 | 100% |  | 2018-06-01 | 2018-06-21 |  | MH-Wtg [6.13 h] | 2,759 | 2,759 | 003 |
| 114240 |  | Piping Arrangement Drawing (PAD) | 10d | 2018-06-14 A | 2018-06-14 A | 114150, 114250 FF | 100% |  | 2018-06-08 | 2018-06-21 |  | MH-Wtg [3.06 h] | 1,377 | 1,377 | 003 |
| 114260 |  | Secondary Support Details (SSD) | 10d | 2018-06-14 A | 2018-06-14 A | 114250 | 100% |  | 2018-06-22 | 2018-07-05 |  | MH-Wtg [1.53 h] | 689 | 689 | 003 |

| ID | WBS | Activity | Duration | Start | Finish | Predecessors | Complete | Planned start | Planned finish | Total float | Constraint | Resources | Cost | Actual cost | UNIT DESCRIPTION |
| --- | --- | --- | --- | --- | --- | --- | --- | --- | --- | --- | --- | --- | --- | --- | --- |
|  | 9 | **B105A- Air Compressor** |  | 2017-08-31 | 2018-05-10 |  |  |  |  |  |  |  |  |  |  |
| 106240 |  | General Arrangement Drawing (GAD) | 15d | 2017-08-31 A | 2017-08-31 A | 104640 | 100% | 2017-10-18 | 2017-11-07 |  |  | MH-Wtg [17.77 h] | 7,997 | 7,997 | 003 |
| 106260 |  | Piping Isometric Drawing (PIS) | 30d | 2018-02-27 A | 2018-05-09 A | 104740 | 100% | 2018-03-01 | 2018-04-11 |  | start on or after 2018-02-01 | MH-Wtg [23.69 h] | 10,661 | 10,661 | 003 |
| 106270 |  | Secondary Support Details (SSD) | 15d | 2018-05-09 A | 2018-05-09 A | 106260 | 100% | 2018-07-13 | 2018-08-02 |  |  | MH-Wtg [5.92 h] | 2,664 | 2,664 | 003 |
| 106250 |  | Piping Arrangement Drawing (PAD) | 20d | 2018-05-10 A | 2018-05-10 A | 104730, 106260 FF | 100% | 2018-06-15 | 2018-07-12 |  |  | MH-Wtg [11.84 h] | 5,328 | 5,328 | 003 |
|  | 10 | **B105B- Air Drier** |  | 2017-08-31 | 2018-05-10 |  |  |  |  |  |  |  |  |  |  |
| 106280 |  | General Arrangement Drawing (GAD) | 15d | 2017-08-31 A | 2017-08-31 A | 104800 | 100% | 2017-10-10 | 2017-10-30 |  |  | MH-Wtg [5.82 h] | 2,619 | 2,619 | 003 |
| 106300 |  | Piping Isometric Drawing (PIS) | 30d | 2018-02-27 A | 2018-05-09 A | 104900 | 100% | 2018-03-01 | 2018-04-11 |  | start on or after 2018-02-01 | MH-Wtg [7.76 h] | 3,492 | 3,492 | 003 |
| 106310 |  | Secondary Support Details (SSD) | 15d | 2018-05-09 A | 2018-05-09 A | 106300 | 100% | 2018-07-13 | 2018-08-02 |  |  | MH-Wtg [1.94 h] | 873 | 873 | 003 |
| 106290 |  | Piping Arrangement Drawing (PAD) | 20d | 2018-05-10 A | 2018-05-10 A | 104890, 106300 FF | 100% | 2018-06-15 | 2018-07-12 |  |  | MH-Wtg [3.88 h] | 1,746 | 1,746 | 003 |
|  | 11 | **B105C- VAM Unit (Package)** |  | 2018-08-01 | 2018-09-11 |  |  |  |  |  |  |  |  |  |  |
| 106320 |  | General Arrangement Drawing (GAD) (Package vendor) | 15d | 2018-08-01 | 2018-08-21 |  |  |  |  | 52168.9d |  | MH-Wtg |  |  | 003 |
| 106330 |  | Piping Arrangement Drawing (PAD) (Package vendor) | 20d | 2018-08-01 | 2018-08-28 |  |  |  |  | 52163.9d |  | MH-Wtg |  |  | 003 |
| 106340 |  | Piping Isometric Drawing (PIS) (Package vendor) | 30d | 2018-08-01 | 2018-09-11 |  |  |  |  | 52153.9d |  | MH-Wtg |  |  | 003 |
| 106350 |  | Secondary Support Details (SSD) (Package vendor) | 15d | 2018-08-01 | 2018-08-21 |  |  |  |  | 52168.9d |  | MH-Wtg |  |  | 003 |
|  | 12 | **B105D- Hot Well/Cold Well, Pumps (Package)** |  | 2018-08-01 | 2018-09-11 |  |  |  |  |  |  |  |  |  |  |
| 106360 |  | General Arrangement Drawing (GAD) (Package vendor) | 15d | 2018-08-01 | 2018-08-21 |  |  |  |  | 52168.9d |  | MH-Wtg |  |  | 003 |
| 106370 |  | Piping Arrangement Drawing (PAD) (Package vendor) | 20d | 2018-08-01 | 2018-08-28 |  |  |  |  | 52163.9d |  | MH-Wtg |  |  | 003 |
| 106380 |  | Piping Isometric Drawing (PIS) (Package vendor) | 30d | 2018-08-01 | 2018-09-11 |  |  |  |  | 52153.9d |  | MH-Wtg |  |  | 003 |
| 106390 |  | Secondary Support Details (SSD) (Package vendor) | 15d | 2018-08-01 | 2018-08-21 |  |  |  |  | 52168.9d |  | MH-Wtg |  |  | 003 |
|  | 23 | **B106D- Condensate Storage, Pumps** |  | 2017-09-28 | 2018-06-22 |  |  |  |  |  |  |  |  |  |  |
| 114760 |  | General Arrangement Drawing (GAD) | 0d | 2017-09-28 A | 2017-09-28 A | 114600 | 100% | 2017-11-02 | 2017-11-02 |  |  | MH-Wtg [5.82 h] | 2,619 | 2,619 | 003 |
| 114780 |  | Piping Isometric Drawing (PIS) | 15d | 2018-04-13 A | 2018-05-09 A | 114750 FF | 100% | 2018-06-01 | 2018-06-21 |  |  | MH-Wtg [7.76 h] | 3,492 | 3,492 | 003 |
| 114770 |  | Piping Arrangement Drawing (PAD) | 15d | 2018-06-22 A | 2018-06-22 A | 114780 FF, 114740 | 100% | 2018-06-01 | 2018-06-21 |  |  | MH-Wtg [3.88 h] | 1,746 | 1,746 | 003 |
| 114800 |  | Secondary Support Details (SSD) | 10d | 2018-06-22 A | 2018-06-22 A | 114780 | 100% | 2018-07-06 | 2018-07-19 |  |  | MH-Wtg [1.94 h] | 873 | 873 | 003 |

| ID | WBS | Activity | Duration | Start | Finish | Predecessors | Complete | Planned start | Planned finish | Constraint | Resources | Cost | Actual cost | UNIT DESCRIPTION |
| --- | --- | --- | --- | --- | --- | --- | --- | --- | --- | --- | --- | --- | --- | --- |
|  | 14 | **B107A- Raw Water Storage** |  | 2017-02-27 | 2018-04-19 |  |  |  |  |  |  |  |  |  |
| 106440 |  | General Arrangement Drawing (GAD) | 10d | 2017-02-27 A | 2017-06-27 A | 105430 | 100% | 2017-04-06 | 2017-04-19 |  | MH-Wtg [5.82 h] | 2,619 | 2,619 | 003 |
| 106450 |  | Piping Arrangement Drawing (PAD) | 15d | 2018-04-13 A | 2018-04-13 A | 105460, 106460 FF | 100% | 2018-06-08 | 2018-06-28 |  | MH-Wtg [3.88 h] | 1,746 | 1,746 | 003 |
| 106460 |  | Piping Isometric Drawing (PIS) | 20d | 2018-04-19 A | 2018-04-19 A | 105470 | 100% | 2018-06-01 | 2018-06-28 | start on or after 2017-12-20 | MH-Wtg [9.7 h] | 4,365 | 4,365 | 003 |
|  | 15 | **B107A- Pump Area** |  | 2017-06-24 | 2018-06-20 |  |  |  |  |  |  |  |  |  |
| 110790 |  | General Arrangement Drawing (GAD) | 15d | 2017-06-24 A | 2017-06-27 A | 108870 | 100% | 2017-09-08 | 2017-09-28 |  | MH-Wtg [17.77 h] | 7,997 | 7,997 | 003 |
| 110810 |  | Piping Isometric Drawing (PIS) | 30d | 2018-03-14 A | 2018-05-08 A | 109500 | 100% | 2018-03-01 | 2018-04-11 |  | MH-Wtg [23.69 h] | 10,661 | 10,661 | 003 |
| 110800 |  | Piping Arrangement Drawing (PAD) | 20d | 2018-06-20 A | 2018-06-20 A | 109490, 110810 FF | 100% | 2018-06-15 | 2018-07-12 |  | MH-Wtg [11.84 h] | 5,328 | 5,328 | 003 |
| 110820 |  | Secondary Support Details (SSD) | 15d | 2018-06-20 A | 2018-06-20 A | 110810 | 100% | 2018-07-13 | 2018-08-02 |  | MH-Wtg [5.92 h] | 2,664 | 2,664 | 003 |
|  | 13 | **B107D- DM Storage** |  | 2017-05-29 | 2018-06-13 |  |  |  |  |  |  |  |  |  |
| 110830 |  | General Arrangement Drawing (GAD) | 10d | 2017-05-29 A | 2017-05-29 A | 109570 | 100% | 2017-06-14 | 2017-06-27 |  | MH-Wtg [5.82 h] | 2,619 | 2,619 | 003 |
| 110850 |  | Piping Isometric Drawing (PIS) | 20d | 2018-03-29 A | 2018-05-22 A | 109700 FF | 100% | 2018-04-24 | 2018-05-21 |  | MH-Wtg [7.76 h] | 3,492 | 3,492 | 003 |
| 110840 |  | Piping Arrangement Drawing (PAD) | 15d | 2018-06-13 A | 2018-06-13 A | 109690, 110850 FF | 100% | 2018-06-08 | 2018-06-28 |  | MH-Wtg [3.88 h] | 1,746 | 1,746 | 003 |
| 110860 |  | Secondary Support Details (SSD) | 10d | 2018-06-13 A | 2018-06-13 A | 110850 | 100% | 2018-06-29 | 2018-07-12 |  | MH-Wtg [1.94 h] | 873 | 873 | 003 |
|  | 16 | **B109- Cooling Tower with Pumps** |  | 2017-08-31 | 2018-05-31 |  |  |  |  |  |  |  |  |  |
| 106510 |  | General Arrangement Drawing (GAD) | 15d | 2017-08-31 A | 2017-08-31 A | 105680 | 100% | 2017-10-31 | 2017-11-20 |  | MH-Wtg [23.89 h] | 10,751 | 10,751 | 003 |
| 106520 |  | Piping Arrangement Drawing (PAD) | 20d | 2018-01-18 A | 2018-05-31 A | 105770, 106530 FF | 100% | 2018-04-06 | 2018-05-03 |  | MH-Wtg [15.93 h] | 7,169 | 7,169 | 003 |
| 106530 |  | Piping Isometric Drawing (PIS) | 30d | 2018-02-21 A | 2018-05-09 A | 105780 FF | 100% | 2018-03-23 | 2018-05-03 |  | MH-Wtg [39.82 h] | 17,919 | 17,919 | 003 |
|  | 17 | **B117- Piperack** |  | 2018-02-19 | 2018-07-13 |  |  |  |  |  |  |  |  |  |
| 106540 |  | Piping Arrangement Drawing (PAD) | 25d | 2018-02-19 A | 2018-03-16 A | 105890, 106550 FF | 100% | 2018-03-22 | 2018-04-25 |  | MH-Wtg [31.86 h] | 14,337 | 14,337 | 003 |
| 106550 |  | Piping Isometric Drawing (PIS) | 40d | 2018-02-27 A | 2018-07-13 A | 105900 FF, 105890 | 100% | 2018-03-01 | 2018-04-25 |  | MH-Wtg [47.78 h] | 21,501 | 21,501 | 003 |
|  | 4 | **Material Take Off (MTO)** |  | 2017-08-18 | 2018-07-20 |  |  |  |  |  |  |  |  |  |
| 106560 |  | MTO for piping materials | 15d | 2017-08-18 A | 2018-07-13 A | 103610, 103820, 104000, 104190, 104550, 104720, 104880, 105450, 105760, 105870, 105400, 106430, 107770, 109470, 109670, 103640 FF+10d | 100% | 2017-12-13 | 2018-01-02 |  | MH-Wtg [458.55 h] | 206,348 | 206,348 | 003 |
| 106570 |  | MTO for pipe supports | 10d | 2018-04-26 A | 2018-07-20 A | 103630, 103840, 104020, 104210, 104730, 104890, 105460, 105770, 105890, 105490, 106480, 107790, 104570, 109490, 109690 | 100% | 2018-05-22 | 2018-06-04 | finish on or after 2017-11-20 | MH-Wtg [50.95 h] | 22,928 | 22,928 | 003 |

| ID | WBS | Activity | Duration | Start | Finish | Predecessors | Complete | Planned start | Planned finish | Total float | Free float | Constraint | Resources | Cost | Actual cost | UNIT DESCRIPTION |
| --- | --- | --- | --- | --- | --- | --- | --- | --- | --- | --- | --- | --- | --- | --- | --- | --- |
|  | 5 | **Enquiry/Tenders** |  | 2017-08-31 | 2018-08-07 |  |  |  |  |  |  |  |  |  |  |  |
| 106610 |  | Enquiry for Valves | 10d | 2017-08-31 A | 2017-09-19 A | 106580 | 100% | 2017-11-24 | 2017-12-07 |  |  |  | MH-Wtg [100.89 h] | 45,401 | 45,401 | 003 |
| 106580 |  | Enquiry for Pipes | 5d | 2017-09-28 A | 2017-09-28 A | 103610 | 100% | 2017-11-17 | 2017-11-23 |  |  |  | MH-Wtg [75.67 h] | 34,052 | 34,052 | 003 |
| 106600 |  | Enquiry for Flanges | 5d | 2017-10-03 A | 2017-10-03 A | 106590 | 100% | 2017-12-01 | 2017-12-07 |  |  |  | MH-Wtg [75.67 h] | 34,052 | 34,052 | 003 |
| 106590 |  | Enquiry for Fittings | 5d | 2017-10-04 A | 2017-10-04 A | 106580 | 100% | 2017-11-24 | 2017-11-30 |  |  |  | MH-Wtg [75.67 h] | 34,052 | 34,052 | 003 |
| 106680.2 |  | Enquiry for GIDC water line | 1d | 2017-11-08 A | 2017-12-15 A |  | 100% | 2017-12-01 | 2017-12-01 |  |  |  |  |  |  | 003 |
| 106680.1 |  | Enquiry for Expansion bellows | 10d | 2017-12-14 A | 2018-01-29 A | 103490 | 100% | 2017-12-08 | 2017-12-21 |  |  |  | MH-Wtg [20.18 h] | 9,081 | 9,081 | 003 |
| 106630 |  | Enquiry for Steam traps | 8d | 2017-12-19 A | 2017-12-25 A | 106620 | 100% | 2017-12-13 | 2017-12-22 |  |  |  | MH-Wtg [50.45 h] | 22,703 | 22,703 | 003 |
| 106660 |  | Enquiry for Stud bolts | 5d | 2018-01-30 A | 2018-01-30 A |  | 100% | 2018-02-01 | 2018-02-07 |  |  | finish on or after 2018-01-10 | MH-Wtg [25.22 h] | 11,349 | 11,349 | 003 |
| 106620 |  | Enquiry for Strainers | 8d | 2018-02-12 A | 2018-02-12 A | 106610 | 100% | 2018-02-01 | 2018-02-12 |  |  |  | MH-Wtg [25.22 h] | 11,349 | 11,349 | 003 |
| A126910 |  | Enquiry for Excess flow check valves | 1d | 2018-03-05 A | 2018-03-05 A |  | 100% | 2018-03-01 | 2018-03-01 |  |  |  |  |  |  | 003 |
| 106680 |  | Enquiry for Special supports | 10d | 2018-03-08 A | 2018-03-08 A |  | 100% | 2018-03-01 | 2018-03-14 |  |  | finish on or after 2018-01-20 | MH-Wtg [15.13 h] | 6,809 | 6,809 | 003 |
| 106650 |  | Enquiry for Gaskets | 5d | 2018-03-12 A | 2018-03-12 A | 106660 | 100% | 2018-03-01 | 2018-03-07 |  |  |  | MH-Wtg [25.22 h] | 11,349 | 11,349 | 003 |
| A126920 |  | Enquiry for Spectacle blind | 1d | 2018-03-27 A | 2018-03-27 A |  | 100% | 2018-03-01 | 2018-03-01 |  |  |  |  |  |  | 003 |
| A126930 |  | Enquiry for Flexible hoses | 1d | 2018-03-28 A | 2018-03-28 A |  | 100% | 2018-03-01 | 2018-03-01 |  |  |  |  |  |  | 003 |
| A127310 |  | Enquiry for PTFE package | 1d | 2018-04-05 A | 2018-04-05 A |  | 100% | 2018-03-01 | 2018-03-01 |  |  |  |  |  |  | 003 |
| 106640 |  | Enquiry for Sight glass | 5d | 2018-04-19 A | 2018-04-19 A | 106630 | 100% | 2018-05-01 | 2018-05-07 |  |  |  | MH-Wtg [12.61 h] | 5,675 | 5,675 | 003 |
| A126940 |  | Enquiry for Sluice gate | 1d | 2018-05-15 A | 2018-05-15 A |  | 100% | 2018-06-01 | 2018-06-01 |  |  |  |  |  |  | 003 |
| A126950 |  | Enquiry for Flange guards | 1d | 2018-05-24 A | 2018-05-24 A |  | 100% | 2018-06-01 | 2018-06-01 |  |  |  |  |  |  | 003 |
| 106670 |  | Enquiry for Primary supports (Deleted) | 5d | 2018-08-01 | 2018-08-07 | 106570 FS-10d |  |  |  | 52083.9d | 0d |  | MH-Wtg |  |  | 003 |
|  | 5 | **Electrical** |  | 2016-10-14 | 2018-10-25 |  |  |  |  |  |  |  |  |  |  |  |
|  | 1 | **Basic Documents** |  | 2016-10-14 | 2018-08-10 |  |  |  |  |  |  |  |  |  |  |  |
| 106710 |  | Overall single line diagram | 118d | 2016-10-14 A | 2017-05-16 A | 106700 | 100% | 2017-06-01 | 2017-11-14 |  |  | start on 2016-10-14 | MH-Wtg [152.85 h] | 68,783 | 68,783 | 003 |
| 106690 |  | Design basis | 33d | 2016-10-17 A | 2016-11-30 A | 100050 SS | 100% | 2017-03-01 | 2017-04-14 |  |  | start on 2016-10-17 | MH-Wtg [91.71 h] | 41,270 | 41,270 | 003 |
| 106700 |  | Electrical load list | 10d | 2017-03-29 A | 2017-09-20 A | 100070, 100190 | 100% | 2017-04-17 | 2017-04-28 |  |  |  | MH-Wtg [91.71 h] | 41,270 | 41,270 | 003 |
| 106691 |  | Electrical room/Substation layout | 10d | 2017-05-23 A | 2017-05-30 A | 106700 | 100% | 2017-05-15 | 2017-05-26 |  |  |  | MH-Wtg [122.28 h] | 55,026 | 55,026 | 003 |
| 106730 |  | Overall earthing layout | 10d | 2017-06-02 A | 2017-06-02 A | 106720 | 100% | 2017-06-12 | 2017-06-23 |  |  |  | MH-Wtg [48.91 h] | 22,010 | 22,010 | 003 |
| 106692 |  | Layout for Construction power | 1d | 2017-06-19 A | 2017-06-19 A |  | 100% | 2017-06-01 | 2017-06-01 |  |  |  |  |  |  | 003 |
| 106740 |  | Standard drawings | 15d | 2017-09-21 A | 2017-09-21 A | 106920 FF | 100% | 2017-09-22 | 2017-10-12 |  |  |  | MH-Wtg [30.57 h] | 13,757 | 13,757 | 003 |
| 106720 |  | Electrical plot plan | 5d | 2017-09-29 A | 2017-10-03 A | 106710, 103410, 106930 | 100% | 2017-10-02 | 2017-10-06 |  |  |  | MH-Wtg [30.57 h] | 13,757 | 13,757 | 003 |
| 106730.1 |  | Cable trench layout (Deleted) | 8d | 2018-08-01 | 2018-08-10 | 106691 |  |  |  | 52175.9d |  |  | MH-Wtg |  |  | 003 |

| ID | WBS | Activity | Duration | Start | Finish | Predecessors | Complete | Planned start | Planned finish | Constraint | Resources | Cost | Actual cost | UNIT DESCRIPTION |
| --- | --- | --- | --- | --- | --- | --- | --- | --- | --- | --- | --- | --- | --- | --- |
|  | 2 | **Detail Documents** |  | 2017-04-21 | 2018-10-25 |  |  |  |  |  |  |  |  |  |
|  | 1 | **Design Calculations** |  | 2017-04-21 | 2018-03-08 |  |  |  |  |  |  |  |  |  |
| 106790 |  | Design calculations for MCC | 8d | 2017-04-21 A | 2017-09-20 A | 106780 FF | 100% | 2017-06-28 | 2017-07-07 |  | MH-Wtg [48.91 h] | 22,010 | 22,010 | 003 |
| 106750 |  | Design calculations for Transformers | 8d | 2017-05-03 A | 2017-05-17 A | 106700 | 100% | 2017-05-15 | 2017-05-24 |  | MH-Wtg [65.22 h] | 29,349 | 29,349 | 003 |
| 106760 |  | Design calculations for HT Panel | 8d | 2017-05-03 A | 2017-05-19 A | 106750 | 100% | 2017-05-01 | 2017-05-10 |  | MH-Wtg [48.91 h] | 22,010 | 22,010 | 003 |
| 106770 |  | Design calculations for HT PCC | 8d | 2017-05-03 A | 2017-05-19 A | 106760 FF | 100% | 2017-05-01 | 2017-05-10 |  | MH-Wtg [48.91 h] | 22,010 | 22,010 | 003 |
| 106780 |  | Design calculations for LT PCC | 8d | 2017-05-26 A | 2017-05-26 A | 106770 | 100% | 2017-05-11 | 2017-05-22 |  | MH-Wtg [48.91 h] | 22,010 | 22,010 | 003 |
| 106800 |  | Design calculations for APFC Panel | 5d | 2017-05-31 A | 2017-08-23 A | 106790 | 100% | 2017-05-23 | 2017-05-29 |  | MH-Wtg [16.3 h] | 7,335 | 7,335 | 003 |
| 106810 |  | Design calculations for DG | 5d | 2017-06-02 A | 2017-07-04 A | 106760 | 100% | 2017-05-29 | 2017-06-02 | start on or after 2017-05-27 | MH-Wtg [32.61 h] | 14,675 | 14,675 | 003 |
| 106820 |  | Design calculations for Misc. Panels | 5d | 2018-03-08 A | 2018-03-08 A | 106720 | 100% | 2018-03-01 | 2018-03-07 |  | MH-Wtg [16.3 h] | 7,335 | 7,335 | 003 |
|  | 2 | **Single Line Diagrams** |  | 2017-04-21 | 2018-03-08 |  |  |  |  |  |  |  |  |  |
| 106860 |  | Single line diagram for MCC | 8d | 2017-04-21 A | 2017-09-20 A | 106790 FF | 100% | 2017-07-10 | 2017-07-19 |  | MH-Wtg [81.52 h] | 36,684 | 36,684 | 003 |
| 106830 |  | Single line diagram for HT Panel | 5d | 2017-05-03 A | 2017-05-19 A | 106760 FF | 100% | 2017-05-04 | 2017-05-10 |  | MH-Wtg [81.52 h] | 36,684 | 36,684 | 003 |
| 106840 |  | Single line diagram for HT PCC | 5d | 2017-05-03 A | 2017-05-19 A | 106770 FF | 100% | 2017-05-04 | 2017-05-10 |  | MH-Wtg [81.52 h] | 36,684 | 36,684 | 003 |
| 106850 |  | Single line diagram for LT PCC | 8d | 2017-05-26 A | 2017-05-26 A | 106780 FF | 100% | 2017-05-11 | 2017-05-22 |  | MH-Wtg [81.52 h] | 36,684 | 36,684 | 003 |
| 106870 |  | Single line diagram for APFC Panel | 5d | 2017-05-31 A | 2017-08-23 A | 106800 FF | 100% | 2017-05-23 | 2017-05-29 |  | MH-Wtg [20.38 h] | 9,171 | 9,171 | 003 |
| 106880 |  | Single line diagram for DG | 5d | 2017-06-14 A | 2017-07-04 A | 106810 | 100% | 2017-06-08 | 2017-06-14 |  | MH-Wtg [40.76 h] | 18,342 | 18,342 | 003 |
| 106890 |  | Single line diagram for Misc. Panels | 5d | 2018-03-08 A | 2018-03-08 A | 106820 FF | 100% | 2018-03-01 | 2018-03-07 |  | MH-Wtg [20.38 h] | 9,171 | 9,171 | 003 |
|  | 3 | **Construction Drawings** |  | 2017-06-02 | 2018-10-25 |  |  |  |  |  |  |  |  |  |
|  | 1 | **B101- WNA Plant** |  | 2017-06-22 | 2018-07-17 |  |  |  |  |  |  |  |  |  |
| 106900 |  | Electrical area classification basis & drawings | 15d | 2017-06-22 A | 2017-06-22 A | 105920 | 100% | 2017-07-17 | 2017-08-04 | start on or after 2017-07-15 | MH-Wtg [86 h] | 38,700 | 38,700 | 001 |
| 106920 |  | Earthing layout & calculations | 15d | 2017-08-31 A | 2017-08-31 A | 106900 | 100% | 2017-09-22 | 2017-10-12 |  | MH-Wtg [27.3 h] | 12,285 | 12,285 | 001 |
| 106940 |  | Lightening protection drawings | 10d | 2017-09-18 A | 2017-09-18 A | 106910 | 100% | 2017-12-08 | 2017-12-21 |  | MH-Wtg [10.92 h] | 4,914 | 4,914 | 001 |
| 106930 |  | Lighting layout & calculations | 5d | 2017-09-28 A | 2017-09-28 A | 106920 | 100% | 2017-09-25 | 2017-09-29 |  | MH-Wtg [27.3 h] | 12,285 | 12,285 | 001 |
| 106910 |  | Cable tray layout | 20d | 2018-07-17 A | 2018-07-17 A | 103550 | 100% | 2018-07-02 | 2018-07-27 | finish on or after 2017-12-29 | MH-Wtg [16.38 h] | 7,371 | 7,371 | 001 |

| ID | WBS | Activity | Duration | Start | Finish | Predecessors | Complete | Planned start | Planned finish | Total float | Free float | Constraint | Resources | Cost | Actual cost | UNIT DESCRIPTION |
| --- | --- | --- | --- | --- | --- | --- | --- | --- | --- | --- | --- | --- | --- | --- | --- | --- |
|  | 2 | **B102A- CNA Plant-1** |  | 2017-08-31 | 2018-08-14 |  |  |  |  |  |  |  |  |  |  |  |
| 106970 |  | Updation of Earthing layout & calculations | 5d | 2017-08-31 A | 2017-08-31 A | 106950 | 100% | 2017-09-22 | 2017-09-28 |  |  |  | MH-Wtg [13.65 h] | 6,143 | 6,143 | 002 |
| 106990 |  | Updation of Lightening protection drawings | 5d | 2017-09-18 A | 2017-09-18 A | 106960 | 100% | 2017-10-20 | 2017-10-26 |  |  |  | MH-Wtg [5.46 h] | 2,457 | 2,457 | 002 |
| 106980 |  | Updation of Lighting layout & calculations | 5d | 2017-12-07 A | 2017-12-07 A | 106970 | 100% | 2017-12-01 | 2017-12-07 |  |  |  | MH-Wtg [13.65 h] | 6,143 | 6,143 | 002 |
| 106950 |  | Upation of Electrical area classification drawings (Safe area) | 8d | 2018-08-01 | 2018-08-10 | 106900 FF |  |  |  | 52175.9d | 0d |  | MH-Wtg |  |  | 002 |
| 106960 |  | Updation of Cable tray layout (Deleted) | 10d | 2018-08-01 | 2018-08-14 | 106980 |  |  |  | 52173.9d |  | finish on or after 2017-12-29 | MH-Wtg |  |  | 002 |
|  | 3 | **B102B- CNA Plant-2** |  | 2017-08-31 | 2018-08-14 |  |  |  |  |  |  |  |  |  |  |  |
| 107020 |  | Updation of Earthing layout & calculations | 5d | 2017-08-31 A | 2017-08-31 A | 107000 | 100% | 2017-09-22 | 2017-09-28 |  |  |  | MH-Wtg [13.65 h] | 6,143 | 6,143 | 002 |
| 107040 |  | Updation of Lightening protection drawings | 5d | 2017-09-18 A | 2017-09-18 A | 107010 | 100% | 2017-10-20 | 2017-10-26 |  |  |  | MH-Wtg [5.46 h] | 2,457 | 2,457 | 002 |
| 107030 |  | Updation of Lighting layout & calculations | 5d | 2017-12-07 A | 2017-12-07 A | 107020 | 100% | 2017-12-01 | 2017-12-07 |  |  |  | MH-Wtg [13.65 h] | 6,143 | 6,143 | 002 |
| 107000 |  | Upation of Electrical area classification drawings (Safe area) | 8d | 2018-08-01 | 2018-08-10 | 106950 SS |  |  |  | 52175.9d |  |  | MH-Wtg |  |  | 002 |
| 107010 |  | Updation of Cable tray layout (Deleted) | 10d | 2018-08-01 | 2018-08-14 | 107030 |  |  |  | 52173.9d |  | finish on or after 2017-12-29 | MH-Wtg |  |  | 002 |
|  | 4 | **B103A- WNA Storage Tanks** |  | 2017-08-24 | 2018-08-10 |  |  |  |  |  |  |  |  |  |  |  |
| 107070 |  | Earthing layout & calculations | 10d | 2017-08-24 A | 2017-08-24 A | 107050 | 100% | 2017-09-20 | 2017-10-03 |  |  |  | MH-Wtg [8.28 h] | 3,726 | 3,726 | 003 |
| 107080 |  | Lighting layout & calculations | 10d | 2017-08-28 A | 2017-08-28 A | 107070 | 100% | 2017-10-04 | 2017-10-17 |  |  |  | MH-Wtg [8.28 h] | 3,726 | 3,726 | 003 |
| 107080.1 |  | Lightening protection drawings | 1d | 2017-09-18 A | 2017-09-18 A |  | 100% | 2017-09-01 | 2017-09-01 |  |  |  |  |  |  | 001 |
| 107060 |  | Cable tray layout | 15d | 2018-06-26 A | 2018-06-26 A | 103760 | 100% | 2018-06-01 | 2018-06-21 |  |  | finish on or after 2017-12-29 | MH-Wtg [8.28 h] | 3,726 | 3,726 | 003 |
| 107050 |  | Electrical area classification drawings (Safe area) | 8d | 2018-08-01 | 2018-08-10 | 106040 |  |  |  | 52175.9d |  | start on or after 2017-07-20 | MH-Wtg |  |  | 003 |
|  | 36 | **B103B- CNA Storage Tanks** |  | 2017-08-29 | 2018-08-10 |  |  |  |  |  |  |  |  |  |  |  |
| 107084 |  | Lighting layout & calculations | 10d | 2017-08-29 A | 2017-08-29 A | 107083 | 100% | 2017-10-04 | 2017-10-17 |  |  |  | MH-Wtg [8.28 h] | 3,726 | 3,726 | 003 |
| 107083 |  | Earthing layout & calculations | 10d | 2017-08-30 A | 2017-08-30 A | 107081 | 100% | 2017-09-20 | 2017-10-03 |  |  |  | MH-Wtg [8.28 h] | 3,726 | 3,726 | 003 |
| 107084.1 |  | Lightening protection drawings | 1d | 2017-09-18 A | 2017-09-18 A |  | 100% | 2017-09-01 | 2017-09-01 |  |  |  |  |  |  | 002 |
| 107082 |  | Cable tray layout | 15d | 2018-06-28 A | 2018-06-28 A | 105340 | 100% | 2018-06-01 | 2018-06-21 |  |  | finish on or after 2017-12-29 | MH-Wtg [8.28 h] | 3,726 | 3,726 | 003 |
| 107081 |  | Electrical area classification drawings (Safe area) | 8d | 2018-08-01 | 2018-08-10 | 109580 |  |  |  | 52175.9d |  | start on or after 2017-07-20 | MH-Wtg |  |  | 003 |

| ID | WBS | Activity | Duration | Start | Finish | Predecessors | Complete | Planned start | Planned finish | Total float | Constraint | Resources | Cost | Actual cost | UNIT DESCRIPTION |
| --- | --- | --- | --- | --- | --- | --- | --- | --- | --- | --- | --- | --- | --- | --- | --- |
|  | 37 | **B103C- WWS Storage Tanks** |  | 2017-08-24 | 2018-08-08 |  |  |  |  |  |  |  |  |  |  |
| 107087 |  | Earthing layout & calculations | 8d | 2017-08-24 A | 2017-08-24 A | 107085 | 100% | 2017-10-02 | 2017-10-11 |  |  | MH-Wtg [2.68 h] | 1,206 | 1,206 | 003 |
| 107088 |  | Lighting layout & calculations | 8d | 2017-08-29 A | 2017-08-29 A | 107087 | 100% | 2017-10-12 | 2017-10-23 |  |  | MH-Wtg [2.68 h] | 1,206 | 1,206 | 003 |
| 107086 |  | Cable tray layout | 12d | 2018-07-05 A | 2018-07-05 A | 105610 | 100% | 2018-06-01 | 2018-06-18 |  | finish on or after 2017-12-29 | MH-Wtg [2.68 h] | 1,206 | 1,206 | 003 |
| 107085 |  | Electrical area classification drawings (Safe area) | 6d | 2018-08-01 | 2018-08-08 | 110350 |  |  |  | 52177.9d | start on or after 2017-07-20 | MH-Wtg |  |  | 003 |
|  | 5 | **B103D- WNA/CNA Tanker Loading Bays** |  | 2017-08-25 | 2018-07-03 |  |  |  |  |  |  |  |  |  |  |
| 107100 |  | Earthing layout & calculations | 5d | 2017-08-25 A | 2017-08-25 A | 106080 | 100% | 2017-09-08 | 2017-09-14 |  |  | MH-Wtg [4.83 h] | 2,174 | 2,174 | 003 |
| 107110 |  | Lighting layout & calculations | 5d | 2017-08-28 A | 2017-08-28 A | 107100 | 100% | 2017-09-15 | 2017-09-21 |  |  | MH-Wtg [4.83 h] | 2,174 | 2,174 | 003 |
| 107090 |  | Cable tray layout | 8d | 2018-07-03 A | 2018-07-03 A | 103950 | 100% | 2018-06-01 | 2018-06-12 |  | finish on or after 2017-12-29 | MH-Wtg [6.44 h] | 2,898 | 2,898 | 003 |
|  | 6 | **B104A- Caustic, Sulphuric Storage** |  | 2017-08-25 | 2018-08-10 |  |  |  |  |  |  |  |  |  |  |
| 107140 |  | Earthing layout & calculations | 10d | 2017-08-25 A | 2017-08-25 A | 107120 | 100% | 2017-10-04 | 2017-10-17 |  |  | MH-Wtg [6.26 h] | 2,817 | 2,817 | 003 |
| 107150 |  | Lighting layout & calculations | 10d | 2017-08-28 A | 2017-08-28 A | 107140 | 100% | 2017-10-18 | 2017-10-31 |  |  | MH-Wtg [6.26 h] | 2,817 | 2,817 | 003 |
| 107130 |  | Cable tray layout | 15d | 2018-07-05 A | 2018-07-05 A | 104130 | 100% | 2018-06-01 | 2018-06-21 |  | finish on or after 2017-12-29 | MH-Wtg [6.26 h] | 2,817 | 2,817 | 003 |
| 107120 |  | Electrical area classification drawings (Safe area) | 8d | 2018-08-01 | 2018-08-10 | 106120 |  |  |  | 52175.9d | start on or after 2017-07-20 | MH-Wtg |  |  | 003 |
|  | 7 | **B104B- HSD Storage (Deleted)** |  | 2018-08-01 | 2018-08-07 |  |  |  |  |  |  |  |  |  |  |
| 107160 |  | Electrical area classification drawings (Deleted) | 5d | 2018-08-01 | 2018-08-07 |  |  |  |  | 52178.9d |  | MH-Wtg |  |  | 003 |
| 107170 |  | Cable tray layout (Deleted) | 5d | 2018-08-01 | 2018-08-07 |  |  |  |  | 52178.9d |  | MH-Wtg |  |  | 003 |
| 107180 |  | Earthing layout & calculations (Deleted) | 5d | 2018-08-01 | 2018-08-07 |  |  |  |  | 52178.9d |  | MH-Wtg |  |  | 003 |
| 107190 |  | Lighting layout & calculations (Deleted) | 5d | 2018-08-01 | 2018-08-07 |  |  |  |  | 52178.9d |  | MH-Wtg |  |  | 003 |
|  | 8 | **B104C-Liquid NH3 Storage** |  | 2017-08-30 | 2018-08-10 |  |  |  |  |  |  |  |  |  |  |
| 107230 |  | Lighting layout & calculations | 10d | 2017-08-30 A | 2017-08-30 A | 107220 | 100% | 2017-10-18 | 2017-10-31 |  |  | MH-Wtg [2.68 h] | 1,206 | 1,206 | 003 |
| 107220 |  | Earthing layout & calculations | 10d | 2017-08-31 A | 2017-08-31 A | 107200 | 100% | 2017-10-04 | 2017-10-17 |  |  | MH-Wtg [2.68 h] | 1,206 | 1,206 | 003 |
| 107210 |  | Cable tray layout | 15d | 2018-07-03 A | 2018-07-03 A | 104490 | 100% | 2018-06-01 | 2018-06-21 |  | finish on or after 2017-12-29 | MH-Wtg [2.68 h] | 1,206 | 1,206 | 003 |
| 107200 |  | Electrical area classification drawings (Safe area) | 8d | 2018-08-01 | 2018-08-10 | 106200 |  |  |  | 52175.9d | start on or after 2017-07-20 | MH-Wtg |  |  | 003 |

| ID | WBS | Activity | Duration | Start | Finish | Predecessors | Complete | Planned start | Planned finish | Total float | Constraint | Resources | Cost | Actual cost | UNIT DESCRIPTION |
| --- | --- | --- | --- | --- | --- | --- | --- | --- | --- | --- | --- | --- | --- | --- | --- |
|  | 40 | **B104E- SNA** |  | 2017-08-25 | 2018-08-08 |  |  |  |  |  |  |  |  |  |  |
| 107097 |  | Earthing layout & calculations | 8d | 2017-08-25 A | 2017-08-25 A | 107095 | 100% | 2017-10-02 | 2017-10-11 |  |  | MH-Wtg [2.68 h] | 1,206 | 1,206 | 003 |
| 107098 |  | Lighting layout & calculations | 8d | 2017-08-28 A | 2017-08-28 A | 107097 | 100% | 2017-10-12 | 2017-10-23 |  |  | MH-Wtg [2.68 h] | 1,206 | 1,206 | 003 |
| 107096 |  | Cable tray layout | 12d | 2018-06-26 A | 2018-06-26 A | 113860 | 100% | 2018-06-01 | 2018-06-18 |  | finish on or after 2017-12-29 | MH-Wtg [2.68 h] | 1,206 | 1,206 | 003 |
| 107095 |  | Electrical area classification drawings (Safe area) | 6d | 2018-08-01 | 2018-08-08 | 114180 |  |  |  | 52177.9d | start on or after 2017-07-20 | MH-Wtg |  |  | 003 |
|  | 41 | **B104F- SNA Tanker Unloading** |  | 2017-08-25 | 2018-07-03 |  |  |  |  |  |  |  |  |  |  |
| 114280 |  | Earthing layout & calculations | 5d | 2017-08-25 A | 2017-08-25 A | 107097 | 100% | 2017-10-12 | 2017-10-18 |  |  | MH-Wtg [4.83 h] | 2,174 | 2,174 | 003 |
| 114290 |  | Lighting layout & calculations | 5d | 2017-08-28 A | 2017-08-28 A | 114280 | 100% | 2017-10-19 | 2017-10-25 |  |  | MH-Wtg [4.83 h] | 2,174 | 2,174 | 003 |
| 114270 |  | Cable tray layout | 8d | 2018-07-03 A | 2018-07-03 A | 114080 | 100% | 2018-06-01 | 2018-06-12 |  | finish on or after 2017-12-29 | MH-Wtg [6.44 h] | 2,898 | 2,898 | 003 |
|  | 9 | **B105A- Air Compressor** |  | 2017-09-28 | 2018-05-17 |  |  |  |  |  |  |  |  |  |  |
| 107250 |  | Earthing layout & calculations | 8d | 2017-09-28 A | 2017-09-28 A | 106240 | 100% | 2017-09-25 | 2017-10-04 |  |  | MH-Wtg [9.93 h] | 4,469 | 4,469 | 003 |
| 107260 |  | Lighting layout & calculations | 8d | 2017-09-28 A | 2017-09-28 A | 107250 | 100% | 2017-10-05 | 2017-10-16 |  |  | MH-Wtg [9.93 h] | 4,469 | 4,469 | 003 |
| 107240 |  | Cable tray layout | 10d | 2018-05-17 A | 2018-05-17 A | 104670 | 100% | 2018-06-01 | 2018-06-14 |  | finish on or after 2017-12-29 | MH-Wtg [13.25 h] | 5,963 | 5,963 | 003 |
|  | 10 | **B105B- Air Drier** |  | 2017-09-28 | 2018-05-17 |  |  |  |  |  |  |  |  |  |  |
| 107280 |  | Earthing layout & calculations | 5d | 2017-09-28 A | 2017-09-28 A | 106280 | 100% | 2017-09-25 | 2017-09-29 |  |  | MH-Wtg [3.22 h] | 1,449 | 1,449 | 003 |
| 107290 |  | Lighting layout & calculations | 5d | 2017-09-28 A | 2017-09-28 A | 107280 | 100% | 2017-10-02 | 2017-10-06 |  |  | MH-Wtg [3.22 h] | 1,449 | 1,449 | 003 |
| 107270 |  | Cable tray layout | 8d | 2018-05-17 A | 2018-05-17 A | 104830 | 100% | 2018-06-01 | 2018-06-12 |  | finish on or after 2017-12-29 | MH-Wtg [4.3 h] | 1,935 | 1,935 | 003 |
|  | 11 | **B105C- VAM Unit (Package)** |  | 2018-08-01 | 2018-08-10 |  |  |  |  |  |  |  |  |  |  |
| 107300 |  | Cable tray layout (Package vendor) | 8d | 2018-08-01 | 2018-08-10 |  |  |  |  | 52175.9d |  | MH-Wtg |  |  | 003 |
| 107310 |  | Earthing layout & calculations (Package vendor) | 5d | 2018-08-01 | 2018-08-07 |  |  |  |  | 52178.9d |  | MH-Wtg |  |  | 003 |
| 107320 |  | Lighting layout & calculations (Package vendor) | 5d | 2018-08-01 | 2018-08-07 |  |  |  |  | 52178.9d |  | MH-Wtg |  |  | 003 |
|  | 12 | **B105D- Hot Well/Cold Well, Pumps (Package)** |  | 2018-08-01 | 2018-08-16 |  |  |  |  |  |  |  |  |  |  |
| 107330 |  | Cable tray layout (Package vendor) | 12d | 2018-08-01 | 2018-08-16 |  |  |  |  | 52171.9d |  | MH-Wtg |  |  | 003 |
| 107340 |  | Earthing layout & calculations (Package vendor) | 8d | 2018-08-01 | 2018-08-10 |  |  |  |  | 52175.9d |  | MH-Wtg |  |  | 003 |
| 107350 |  | Lighting layout & calculations (Package vendor) | 8d | 2018-08-01 | 2018-08-10 |  |  |  |  | 52175.9d |  | MH-Wtg |  |  | 003 |

| ID | WBS | Activity | Duration | Start | Finish | Predecessors | Complete | Planned start | Planned finish | Total float | Constraint | Resources | Cost | Actual cost | UNIT DESCRIPTION |
| --- | --- | --- | --- | --- | --- | --- | --- | --- | --- | --- | --- | --- | --- | --- | --- |
|  | 42 | **B106D- Condensate Storage, Pumps** |  | 2017-12-22 | 2018-08-16 |  |  |  |  |  |  |  |  |  |  |
| 107462 |  | Earthing layout & calculations | 10d | 2017-12-22 A | 2017-12-22 A | 114760 | 100% | 2018-02-01 | 2018-02-14 |  |  | MH-Wtg [3.22 h] | 1,449 | 1,449 | 003 |
| 107461 |  | Cable tray layout (Deleted) | 12d | 2018-08-01 | 2018-08-16 |  |  |  |  | 52171.9d | finish on or after 2017-12-29 | MH-Wtg |  |  | 003 |
| 107463 |  | Lighting layout & calculations (Deleted) | 10d | 2018-08-01 | 2018-08-14 | 107462 |  |  |  | 52173.9d |  | MH-Wtg |  |  | 003 |
|  | 15 | **B107A- Raw Water Storage** |  | 2017-08-31 | 2018-07-24 |  |  |  |  |  |  |  |  |  |  |
| 107430 |  | Lighting layout & calculations | 5d | 2017-08-31 A | 2017-08-31 A | 107420 | 100% | 2017-11-27 | 2017-12-01 |  |  | MH-Wtg [7.52 h] | 3,384 | 3,384 | 003 |
| 107420 |  | Cable tray layout | 5d | 2018-07-24 A | 2018-07-24 A | 106440, 107240 | 100% | 2018-07-02 | 2018-07-06 |  | finish on or after 2017-12-29 | MH-Wtg [3.22 h] | 1,449 | 1,449 | 003 |
|  | 24 | **B107C- Pump House** |  | 2017-08-29 | 2018-07-24 |  |  |  |  |  |  |  |  |  |  |
| 107422 |  | Earthing layout & calculations | 10d | 2017-08-29 A | 2017-08-29 A | 110790 | 100% | 2017-09-22 | 2017-10-05 |  |  | MH-Wtg [9.93 h] | 4,469 | 4,469 | 003 |
| 107423 |  | Lighting layout & calculations | 10d | 2017-08-31 A | 2017-08-31 A | 107422 | 100% | 2017-10-06 | 2017-10-19 |  |  | MH-Wtg [9.93 h] | 4,469 | 4,469 | 003 |
| 107421 |  | Cable tray layout | 12d | 2018-07-24 A | 2018-07-24 A | 108900 | 100% | 2018-07-02 | 2018-07-17 |  | finish on or after 2017-12-29 | MH-Wtg [13.25 h] | 5,963 | 5,963 | 003 |
|  | 16 | **B108B- Treated Water Storage** |  | 2017-08-31 | 2018-07-20 |  |  |  |  |  |  |  |  |  |  |
| 107450 |  | Lighting layout & calculations | 5d | 2017-08-31 A | 2017-08-31 A | 107440 | 100% | 2017-12-04 | 2017-12-08 |  |  | MH-Wtg [7.52 h] | 3,384 | 3,384 | 003 |
| 107440 |  | Cable tray layout | 5d | 2018-07-20 A | 2018-07-20 A | 107420 | 100% | 2018-07-09 | 2018-07-13 |  | finish on or after 2017-12-29 | MH-Wtg [3.22 h] | 1,449 | 1,449 | 003 |
|  | 13 | **B108D- DM Storage** |  | 2017-08-29 | 2018-06-22 |  |  |  |  |  |  |  |  |  |  |
| 107452 |  | Earthing layout & calculations | 10d | 2017-08-29 A | 2017-08-29 A | 110830 | 100% | 2017-09-15 | 2017-09-28 |  |  | MH-Wtg [3.22 h] | 1,449 | 1,449 | 003 |
| 107453 |  | Lighting layout & calculations | 10d | 2017-08-31 A | 2017-08-31 A | 107452 | 100% | 2017-09-29 | 2017-10-12 |  |  | MH-Wtg [3.22 h] | 1,449 | 1,449 | 003 |
| 107451 |  | Cable tray layout | 12d | 2018-06-22 A | 2018-06-22 A | 109610 | 100% | 2018-06-01 | 2018-06-18 |  | finish on or after 2017-12-29 | MH-Wtg [4.3 h] | 1,935 | 1,935 | 003 |
|  | 18 | **B109- Cooling Tower with Pumps** |  | 2017-09-29 | 2018-05-22 |  |  |  |  |  |  |  |  |  |  |
| 107510 |  | Lighting layout & calculations | 8d | 2017-09-29 A | 2017-09-29 A | 107500 | 100% | 2017-10-05 | 2017-10-16 |  |  | MH-Wtg [6.71 h] | 3,020 | 3,020 | 003 |
| 107500 |  | Earthing layout & calculations | 8d | 2017-12-01 A | 2017-12-01 A | 106510 | 100% | 2018-02-01 | 2018-02-12 |  |  | MH-Wtg [6.71 h] | 3,020 | 3,020 | 003 |
| 107490 |  | Cable tray layout | 10d | 2018-05-22 A | 2018-05-22 A | 105710 | 100% | 2018-06-01 | 2018-06-14 |  | finish on or after 2017-12-29 | MH-Wtg [8.95 h] | 4,028 | 4,028 | 003 |
|  | 22 | **B110D-Metering Room (Deleted)** |  | 2018-08-01 | 2018-08-21 |  |  |  |  |  |  |  |  |  |  |
| 107680 |  | Cable tray layout (Deleted) | 8d | 2018-08-01 | 2018-08-10 |  |  |  |  | 52175.9d |  | MH-Wtg |  |  | 003 |
| 107690 |  | Cable termination details (Deleted) | 15d | 2018-08-01 | 2018-08-21 | 113330 FS+10d |  |  |  | 52168.9d |  | MH-Wtg |  |  | 003 |
| 107700 |  | Earthing layout & calculations (Deleted) | 10d | 2018-08-01 | 2018-08-14 |  |  |  |  | 52173.9d |  | MH-Wtg |  |  | 003 |
| 107710 |  | Lighting layout & calculations (Deleted) | 8d | 2018-08-01 | 2018-08-10 |  |  |  |  | 52175.9d |  | MH-Wtg |  |  | 003 |
| 107720 |  | Lightening protection drawings (Deleted) | 5d | 2018-08-01 | 2018-08-07 |  |  |  |  | 52178.9d |  | MH-Wtg |  |  | 003 |

| ID | WBS | Activity | Duration | Start | Finish | Predecessors | Complete | Planned start | Planned finish | Total float | Free float | Constraint | Resources | Cost | Actual cost | UNIT DESCRIPTION |
| --- | --- | --- | --- | --- | --- | --- | --- | --- | --- | --- | --- | --- | --- | --- | --- | --- |
|  | 20 | **B110B- DG Room** |  | 2018-08-01 | 2018-09-12 |  |  |  |  |  |  |  |  |  |  |  |
| 107610 |  | Earthing layout & calculations | 10d | 2018-08-01 | 2018-08-14 | 101820 |  |  |  | 52152.9d | 0d |  | MH-Wtg [4.3 h] | 1,935 |  | 003 |
| 107620 |  | Lighting layout & calculations | 8d | 2018-08-15 | 2018-08-24 | 107610 |  |  |  | 52152.9d | 0d |  | MH-Wtg [4.3 h] | 1,935 |  | 003 |
| 107600 |  | Cable tray layout (Deleted) | 8d | 2018-08-27 | 2018-09-05 | 107620 |  |  |  | 52152.9d | 0d | finish on or after 2017-12-29 | MH-Wtg |  |  | 003 |
| 107630 |  | Lightening protection drawings (Deleted) | 5d | 2018-09-06 | 2018-09-12 | 107600 |  |  |  | 52152.9d |  |  | MH-Wtg |  |  | 003 |
|  | 19 | **B110A- Process/Utility Sub-station** |  | 2017-07-05 | 2018-10-25 |  |  |  |  |  |  |  |  |  |  |  |
| 107520 |  | Cable list/schedule- HT | 15d | 2017-07-05 A | 2017-07-28 A | 106840, 106720 | 100% | 2017-08-16 | 2017-09-05 |  |  |  | MH-Wtg [10.92 h] | 4,914 | 4,914 | 003 |
| 107530 |  | Cable list/schedule- LT | 25d | 2017-08-24 A | 2017-08-24 A | 106850, 106720 | 100% | 2017-09-15 | 2017-10-19 |  |  |  | MH-Wtg [10.92 h] | 4,914 | 4,914 | 003 |
| 107570 |  | Earthing layout & calculations | 15d | 2017-08-29 A | 2017-08-29 A | 101660 | 100% | 2017-09-15 | 2017-10-05 |  |  |  | MH-Wtg [8.19 h] | 3,686 | 3,686 | 003 |
| 107580 |  | Lighting layout & calculations | 10d | 2017-09-01 A | 2017-09-01 A | 107570 | 100% | 2017-10-06 | 2017-10-19 |  |  |  | MH-Wtg [8.19 h] | 3,686 | 3,686 | 003 |
| 107590 |  | Lightening protection drawings | 8d | 2017-09-18 A | 2017-09-18 A | 107560 | 100% | 2017-11-03 | 2017-11-14 |  |  |  | MH-Wtg [2.73 h] | 1,229 | 1,229 | 003 |
| 107540 |  | Drum schedule | 10d | 2017-10-25 A | 2018-10-25 A | 107530, 107520, 113470 FS+10d | 100% | 2017-12-11 | 2017-12-22 |  |  |  | MH-Wtg [2.73 h] | 1,229 | 1,229 | 003 |
| 107560 |  | Cable tray layout | 10d | 2018-04-25 A | 2018-04-25 A | 107580 | 100% | 2018-05-01 | 2018-05-14 |  |  | finish on or after 2017-12-29 | MH-Wtg [2.73 h] | 1,229 | 1,229 | 003 |
| 107550 |  | Cable termination details (Deleted) | 20d | 2018-08-01 | 2018-08-28 | 113350 FS+10d, 107530, 113340 FS+10d, 113360 FS+10d |  |  |  | 52163.9d |  |  | MH-Wtg |  |  | 003 |
|  | 23 | **B112- Control Room & QC** |  | 2017-08-31 | 2018-05-14 |  |  |  |  |  |  |  |  |  |  |  |
| 107740 |  | Earthing layout & calculations | 10d | 2017-08-31 A | 2017-08-31 A | 102060 | 100% | 2017-09-15 | 2017-09-28 |  |  |  | MH-Wtg [11.1 h] | 4,995 | 4,995 | 003 |
| 107750 |  | Lighting layout & calculations | 8d | 2017-08-31 A | 2017-08-31 A | 107740 | 100% | 2017-09-29 | 2017-10-10 |  |  |  | MH-Wtg [11.1 h] | 4,995 | 4,995 | 003 |
| 107760 |  | Lightening protection drawings | 5d | 2017-09-18 A | 2017-09-18 A | 107730 | 100% | 2017-10-23 | 2017-10-27 |  |  |  | MH-Wtg [2.77 h] | 1,247 | 1,247 | 003 |
| 107730 |  | Cable tray layout | 8d | 2018-05-14 A | 2018-05-14 A | 107750 | 100% | 2018-06-01 | 2018-06-12 |  |  | finish on or after 2017-12-29 | MH-Wtg [2.77 h] | 1,247 | 1,247 | 003 |
|  | 25 | **B113A- Admin Building** |  | 2017-07-20 | 2018-08-16 |  |  |  |  |  |  |  |  |  |  |  |
| 107840 |  | Earthing layout & calculations | 10d | 2017-07-20 A | 2017-07-21 A | 102330 | 100% | 2017-10-06 | 2017-10-19 |  |  |  | MH-Wtg [11.1 h] | 4,995 | 4,995 | 003 |
| 107850 |  | Lighting layout & calculations | 10d | 2017-08-31 A | 2017-09-01 A | 107840 | 100% | 2017-09-01 | 2017-09-14 |  |  |  | MH-Wtg [11.1 h] | 4,995 | 4,995 | 003 |
| 107860 |  | Lightening protection drawings | 5d | 2017-09-18 A | 2017-09-18 A |  | 100% | 2017-10-03 | 2017-10-09 |  |  |  | MH-Wtg [2.77 h] | 1,247 | 1,247 | 003 |
| 107830 |  | Cable tray layout (Deleted) | 12d | 2018-08-01 | 2018-08-16 | 107850 |  |  |  | 52171.9d |  |  | MH-Wtg |  |  | 003 |

| ID | WBS | Activity | Duration | Start | Finish | Predecessors | Complete | Planned start | Planned finish | Total float | Free float | Constraint | Resources | Cost | Actual cost | UNIT DESCRIPTION |
| --- | --- | --- | --- | --- | --- | --- | --- | --- | --- | --- | --- | --- | --- | --- | --- | --- |
|  | 26 | **B113A- Canteen** |  | 2017-07-20 | 2018-08-14 |  |  |  |  |  |  |  |  |  |  |  |
| 107880 |  | Earthing layout & calculations | 8d | 2017-07-20 A | 2017-07-21 A | 102450 | 100% | 2017-10-06 | 2017-10-17 |  |  |  | MH-Wtg [8.95 h] | 4,028 | 4,028 | 003 |
| 107890 |  | Lighting layout & calculations | 8d | 2017-08-31 A | 2017-09-01 A | 107880 | 100% | 2017-09-01 | 2017-09-12 |  |  |  | MH-Wtg [8.95 h] | 4,028 | 4,028 | 003 |
| 107900 |  | Lightening protection drawings | 5d | 2017-09-18 A | 2017-09-18 A |  | 100% | 2017-09-27 | 2017-10-03 |  |  |  | MH-Wtg [2.24 h] | 1,008 | 1,008 | 003 |
| 107870 |  | Cable tray layout (Deleted) | 10d | 2018-08-01 | 2018-08-14 | 107890 |  |  |  | 52173.9d |  |  | MH-Wtg |  |  | 003 |
|  | 32 | **B113B- Security Block, HSE** |  | 2017-07-20 | 2018-08-10 |  |  |  |  |  |  |  |  |  |  |  |
| 108040 |  | Earthing layout & calculations | 8d | 2017-07-20 A | 2017-07-21 A | 102970 | 100% | 2017-09-29 | 2017-10-10 |  |  |  | MH-Wtg [8.95 h] | 4,028 | 4,028 | 003 |
| 108050 |  | Lighting layout & calculations | 10d | 2017-08-31 A | 2017-09-01 A | 108040 | 100% | 2017-09-01 | 2017-09-14 |  |  |  | MH-Wtg [8.95 h] | 4,028 | 4,028 | 003 |
| 108030 |  | Cable tray layout (Deleted) | 8d | 2018-08-01 | 2018-08-10 | 108050 |  |  |  | 52175.9d |  |  | MH-Wtg [2.24 h] | 1,008 |  | 003 |
| 108060 |  | Lightening protection drawings (Deleted) | 5d | 2018-08-01 | 2018-08-07 |  |  |  |  | 52178.9d |  |  | MH-Wtg |  |  | 003 |
|  | 27 | **B114A- Warehouse, Stores** |  | 2017-08-30 | 2018-08-10 |  |  |  |  |  |  |  |  |  |  |  |
| 107930 |  | Lighting layout & calculations | 5d | 2017-08-30 A | 2017-08-30 A | 107920 | 100% | 2017-09-08 | 2017-09-14 |  |  |  | MH-Wtg [6.71 h] | 3,020 | 3,020 | 003 |
| 107920 |  | Earthing layout & calculations | 5d | 2017-08-31 A | 2017-08-31 A | 102540 | 100% | 2017-09-01 | 2017-09-07 |  |  | start on or after 2017-08-10 | MH-Wtg [6.71 h] | 3,020 | 3,020 | 003 |
| 107910 |  | Cable tray layout (Deleted) | 8d | 2018-08-01 | 2018-08-10 | 107930 |  |  |  | 52175.9d |  |  | MH-Wtg |  |  | 003 |
|  | 28 | **B114B- Weighbridge, Logistics** |  | 2017-08-30 | 2018-08-07 |  |  |  |  |  |  |  |  |  |  |  |
| 107960 |  | Lighting layout & calculations | 3d | 2017-08-30 A | 2017-08-30 A | 107950 | 100% | 2017-10-18 | 2017-10-20 |  |  |  | MH-Wtg [1.61 h] | 725 | 725 | 003 |
| 107950 |  | Earthing layout & calculations | 5d | 2017-08-31 A | 2017-08-31 A | 102720 | 100% | 2017-10-11 | 2017-10-17 |  |  |  | MH-Wtg [1.61 h] | 725 | 725 | 003 |
| 107940 |  | Cable tray layout (Deleted) | 5d | 2018-08-01 | 2018-08-07 | 107960 |  |  |  | 52178.9d |  |  | MH-Wtg |  |  | 003 |
|  | 14 | **B114C- Weighbridge, Logistics** |  | 2017-08-30 | 2018-08-07 |  |  |  |  |  |  |  |  |  |  |  |
| 109763 |  | Lighting layout & calculations | 3d | 2017-08-30 A | 2017-08-30 A | 109762 | 100% | 2017-11-20 | 2017-11-22 |  |  |  | MH-Wtg [1.61 h] | 725 | 725 | 003 |
| 109762 |  | Earthing layout & calculations | 5d | 2017-08-31 A | 2017-08-31 A | 111460 | 100% | 2017-11-13 | 2017-11-17 |  |  |  | MH-Wtg [1.61 h] | 725 | 725 | 003 |
| 107961 |  | Cable tray layout (Deleted) | 5d | 2018-08-01 | 2018-08-07 | 109763 |  |  |  | 52178.9d |  |  | MH-Wtg |  |  | 003 |
|  | 29 | **B115A- Car Parking** |  | 2018-08-28 | 2018-09-03 |  |  |  |  |  |  |  |  |  |  |  |
| 107970 |  | Cable tray layout (Deleted) | 3d | 2018-08-28 | 2018-08-30 | 102920 |  |  |  | 52153.9d | 0d | finish on or after 2017-12-29 | MH-Wtg |  |  | 003 |
| 107980 |  | Lighting layout (Deleted) | 2d | 2018-08-31 | 2018-09-03 | 107970 |  |  |  | 52159.9d |  |  | MH-Wtg |  |  | 003 |

| ID | WBS | Activity | Duration | Start | Finish | Predecessors | Complete | Planned start | Planned finish | Total float | Free float | Constraint | Resources | Cost | Actual cost | UNIT DESCRIPTION |
| --- | --- | --- | --- | --- | --- | --- | --- | --- | --- | --- | --- | --- | --- | --- | --- | --- |
|  | 30 | **B115B- Two Wheeler Parking** |  | 2018-08-31 | 2018-09-06 |  |  |  |  |  |  |  |  |  |  |  |
| 107990 |  | Cable tray layout (Deleted) | 3d | 2018-08-31 | 2018-09-04 | 107970 |  |  |  | 52153.9d | 0d | finish on or after 2017-12-29 | MH-Wtg |  |  | 003 |
| 108000 |  | Lighting layout (Deleted) | 2d | 2018-09-05 | 2018-09-06 | 107990 |  |  |  | 52156.9d |  |  | MH-Wtg |  |  | 003 |
|  | 31 | **B115C- Truck Parking** |  | 2018-09-05 | 2018-09-11 |  |  |  |  |  |  |  |  |  |  |  |
| 108010 |  | Cable tray layout (Deleted) | 3d | 2018-09-05 | 2018-09-07 | 107990 |  |  |  | 52153.9d | 0d | finish on or after 2017-12-29 | MH-Wtg |  |  | 003 |
| 108020 |  | Lighting layout (Deleted) | 2d | 2018-09-10 | 2018-09-11 | 108010 |  |  |  | 52153.9d |  |  | MH-Wtg |  |  | 003 |
|  | 33 | **B116A- Security Guard House** |  | 2017-09-28 | 2018-08-07 |  |  |  |  |  |  |  |  |  |  |  |
| 108080 |  | Lighting layout | 3d | 2017-09-28 A | 2017-09-28 A |  | 100% | 2017-10-12 | 2017-10-16 |  |  |  | MH-Wtg [1.07 h] | 482 | 482 | 003 |
| 108070 |  | Cable tray layout (Deleted) | 5d | 2018-08-01 | 2018-08-07 |  |  |  |  | 52178.9d |  |  | MH-Wtg |  |  | 003 |
|  | 17 | **B116B- Security Guard House** |  | 2017-09-28 | 2018-08-07 |  |  |  |  |  |  |  |  |  |  |  |
| 108082 |  | Lighting layout | 3d | 2017-09-28 A | 2017-09-28 A |  | 100% | 2017-10-12 | 2017-10-16 |  |  |  | MH-Wtg [1.07 h] | 482 | 482 | 003 |
| 108081 |  | Cable tray layout (Deleted) | 5d | 2018-08-01 | 2018-08-07 |  |  |  |  | 52178.9d |  |  | MH-Wtg |  |  | 003 |
|  | 21 | **B116D- Security Guard House (Deleted)** |  | 2018-08-01 | 2018-08-07 |  |  |  |  |  |  |  |  |  |  |  |
| 108083 |  | Cable tray layout (Deleted) | 5d | 2018-08-01 | 2018-08-07 |  |  |  |  | 52178.9d |  |  | MH-Wtg |  |  | 003 |
| 108084 |  | Lighting layout (Deleted) | 3d | 2018-08-01 | 2018-08-03 |  |  |  |  | 52180.9d |  |  | MH-Wtg |  |  | 003 |
|  | 34 | **B117- Piperack** |  | 2017-06-02 | 2018-06-28 |  |  |  |  |  |  |  |  |  |  |  |
| 108100 |  | Earthing layout & calculations | 15d | 2017-06-02 A | 2017-06-02 A | 105790 | 100% | 2017-08-01 | 2017-08-22 |  |  |  | MH-Wtg [18.61 h] | 8,375 | 8,375 | 003 |
| 108090 |  | Cable tray layout | 30d | 2018-04-09 A | 2018-06-28 A | 105860 | 100% | 2018-05-01 | 2018-06-11 |  |  | finish on or after 2017-12-29 | MH-Wtg [27.92 h] | 12,564 | 12,564 | 003 |
|  | 38 | **B121- Engineering Store** |  | 2017-07-20 | 2017-09-21 |  |  |  |  |  |  |  |  |  |  |  |
| 108102 |  | Earthing layout & calculations | 5d | 2017-07-20 A | 2017-07-21 A | 119470 | 100% | 2017-08-28 | 2017-09-01 |  |  |  | MH-Wtg [6.71 h] | 3,020 | 3,020 | 003 |
| 108103 |  | Lighting layout & calculations | 5d | 2017-08-24 A | 2017-08-24 A | 108102 | 100% | 2017-09-01 | 2017-09-07 |  |  |  | MH-Wtg [6.71 h] | 3,020 | 3,020 | 003 |
| 108103.1 |  | Lightening protection drawings | 1d | 2017-09-18 A | 2017-09-18 A |  | 100% | 2017-09-01 | 2017-09-01 |  |  |  |  |  |  | 003 |
| 108101 |  | Cable tray layout | 8d | 2017-09-21 A | 2017-09-21 A | 108103 | 100% | 2017-09-08 | 2017-09-19 |  |  |  | MH-Wtg [8.95 h] | 4,028 | 4,028 | 003 |
|  | 39 | **B122- Engineering Workshop** |  | 2017-07-20 | 2017-09-21 |  |  |  |  |  |  |  |  |  |  |  |
| 108105 |  | Earthing layout & calculations | 5d | 2017-07-20 A | 2017-07-21 A | 108102 SS | 100% | 2017-08-28 | 2017-09-01 |  |  |  | MH-Wtg [9.19 h] | 4,136 | 4,136 | 003 |
| 108106 |  | Lighting layout & calculations | 5d | 2017-08-24 A | 2017-08-24 A | 108105 | 100% | 2017-09-01 | 2017-09-07 |  |  |  | MH-Wtg [0.92 h] | 414 | 414 | 003 |
| 108104 |  | Cable tray layout | 8d | 2017-09-21 A | 2017-09-21 A | 108106 | 100% | 2017-09-08 | 2017-09-19 |  |  |  | MH-Wtg [12.26 h] | 5,517 | 5,517 | 003 |

| ID | WBS | Activity | Duration | Start | Finish | Predecessors | Complete | Planned start | Planned finish | Total float | Constraint | Resources | Cost | Actual cost | UNIT DESCRIPTION |
| --- | --- | --- | --- | --- | --- | --- | --- | --- | --- | --- | --- | --- | --- | --- | --- |
|  | 35 | **BXXX- Roads, Drain** |  | 2017-08-25 | 2017-08-25 |  |  |  |  |  |  |  |  |  |  |
| 108110 |  | Street lighting layout & calculations | 15d | 2017-08-25 A | 2017-08-25 A | 106730 | 100% | 2017-09-15 | 2017-10-05 |  |  | MH-Wtg [33.11 h] | 14,900 | 14,900 | 003 |
|  | 3 | **Material Take Off (MTO)** |  | 2017-07-28 | 2018-08-28 |  |  |  |  |  |  |  |  |  |  |
| 108130 |  | MTO for electrical cables | 10d | 2017-07-28 A | 2017-08-30 A | 107520, 107530, 108120 | 100% | 2017-10-18 | 2017-10-31 |  |  | MH-Wtg [101.9 h] | 45,855 | 45,855 | 003 |
| 108120 |  | MTO for cable trays | 5d | 2017-08-31 A | 2017-08-31 A | 103550, 108900, 105860 | 100% | 2017-11-10 | 2017-11-16 |  |  | MH-Wtg [81.52 h] | 36,684 | 36,684 | 003 |
| 108140 |  | MTO for other electrical bulk materials (Deleted) | 20d | 2018-08-01 | 2018-08-28 | 108130 |  |  |  | 52163.9d |  | MH-Wtg |  |  | 003 |
|  | 4 | **Enquiry/Tenders** |  | 2016-11-08 | 2018-08-10 |  |  |  |  |  |  |  |  |  |  |
| 108150 |  | Enquiry for Switchyard (Deleted) | 55d | 2016-11-08 A | 2017-01-23 A | 106690 | 100% | 2017-04-17 | 2017-06-30 |  | start on 2016-11-08 | MH-Wtg |  |  | 003 |
| 108420.2 |  | Enquiry for Construction power | 15d | 2016-11-24 A | 2017-02-16 A |  | 100% | 2017-05-01 | 2017-05-19 |  | start on 2016-11-24 |  |  |  | 003 |
| 108420.3 |  | Enquiry for Compact substation | 15d | 2017-03-23 A | 2017-03-23 A |  | 100% | 2017-05-01 | 2017-05-19 |  | start on 2017-03-23 |  |  |  | 003 |
| 108200 |  | Enquiry for MCC | 12d | 2017-04-21 A | 2017-05-26 A | 106860 FF | 100% | 2017-05-05 | 2017-05-22 |  |  | MH-Wtg [81.52 h] | 36,684 | 36,684 | 003 |
| 108160 |  | Enquiry for Transformers | 15d | 2017-05-03 A | 2017-05-17 A | 106750 | 100% | 2017-05-25 | 2017-06-14 |  |  | MH-Wtg [163.04 h] | 73,368 | 73,368 | 003 |
| 108170 |  | Enquiry for HT panel | 12d | 2017-05-03 A | 2017-05-19 A | 106830 FF | 100% | 2017-05-01 | 2017-05-16 |  |  | MH-Wtg [81.52 h] | 36,684 | 36,684 | 003 |
| 108180 |  | Enquiry HT PCC | 12d | 2017-05-03 A | 2017-05-19 A | 106840 FF | 100% | 2017-05-01 | 2017-05-16 |  |  | MH-Wtg [81.52 h] | 36,684 | 36,684 | 003 |
| 108190 |  | Enquiry for LT PCC | 12d | 2017-05-26 A | 2017-05-26 A | 106850 FF | 100% | 2017-05-05 | 2017-05-22 |  |  | MH-Wtg [81.52 h] | 36,684 | 36,684 | 003 |
| 108210 |  | Enquiry for APFC panel | 10d | 2017-05-31 A | 2017-08-23 A | 106870 FF | 100% | 2017-05-16 | 2017-05-29 |  |  | MH-Wtg [24.46 h] | 11,007 | 11,007 | 003 |
| 108220 |  | Enqury for DG | 10d | 2017-06-14 A | 2017-07-04 A | 106880 | 100% | 2017-06-15 | 2017-06-28 |  |  | MH-Wtg [48.91 h] | 22,010 | 22,010 | 003 |
| 108250 |  | Enquiry for NGR | 10d | 2017-06-20 A | 2017-06-30 A | 108260 | 100% | 2017-06-13 | 2017-06-26 |  |  | MH-Wtg [32.61 h] | 14,675 | 14,675 | 003 |
| 108270 |  | Enquiry for HT motors | 15d | 2017-06-26 A | 2017-07-26 A | 100260, 100240 | 100% | 2017-06-01 | 2017-06-21 |  |  | MH-Wtg [48.91 h] | 22,010 | 22,010 | 003 |
| 108280 |  | Enquiry for LT motors | 20d | 2017-06-29 A | 2017-07-29 A | 100250 | 100% | 2017-06-01 | 2017-06-28 |  |  | MH-Wtg [48.91 h] | 22,010 | 22,010 | 003 |
| 108340 |  | Enquiry for Local control stations | 8d | 2017-06-30 A | 2017-07-29 A | 108280 | 100% | 2017-06-29 | 2017-07-10 |  |  | MH-Wtg [32.61 h] | 14,675 | 14,675 | 003 |
| 108260 |  | Enquiry for Buss duct | 8d | 2017-07-05 A | 2017-08-23 A | 108200 | 100% | 2017-08-01 | 2017-08-10 |  |  | MH-Wtg [32.61 h] | 14,675 | 14,675 | 003 |
| 108290 |  | Enquiry for VFD | 10d | 2017-07-20 A | 2017-07-27 A | 108220 | 100% | 2017-08-16 | 2017-08-29 |  |  | MH-Wtg [81.52 h] | 36,684 | 36,684 | 003 |
| 108230 |  | Enquiry for UPS | 8d | 2017-07-28 A | 2017-07-28 A | 108220 | 100% | 2017-08-16 | 2017-08-25 |  |  | MH-Wtg [24.46 h] | 11,007 | 11,007 | 003 |
| 108300 |  | Enquiry for HT cables | 8d | 2017-07-28 A | 2017-07-28 A | 107520 | 100% | 2017-09-06 | 2017-09-15 |  |  | MH-Wtg [32.61 h] | 14,675 | 14,675 | 003 |
| 108240 |  | Enquiry for Battery and battery charger | 8d | 2017-07-31 A | 2017-08-17 A | 108230 | 100% | 2017-08-28 | 2017-09-06 |  |  | MH-Wtg [24.46 h] | 11,007 | 11,007 | 003 |
| 108410 |  | Enquiry for PA system | 10d | 2017-08-24 A | 2017-08-30 A | 108350 | 100% | 2017-09-27 | 2017-10-10 |  |  | MH-Wtg [48.91 h] | 22,010 | 22,010 | 003 |
| 108310 |  | Enquiry for LT cables | 8d | 2017-08-30 A | 2017-08-30 A | 108300, 107530 | 100% | 2017-10-20 | 2017-10-31 |  |  | MH-Wtg [32.61 h] | 14,675 | 14,675 | 003 |
| 108211 |  | Enquiry for HT Capacitor bank | 10d | 2017-08-31 A | 2017-09-01 A |  | 100% | 2017-09-01 | 2017-09-14 |  | finish on or after 2017-08-16 |  |  |  | 003 |
| 108370 |  | Enquiry for Cable tray | 5d | 2017-08-31 A | 2017-08-31 A | 108120 | 100% | 2017-11-17 | 2017-11-23 |  |  | MH-Wtg [32.61 h] | 14,675 | 14,675 | 003 |
| 108420 |  | Enquiry for CCTV | 10d | 2017-08-31 A | 2017-08-31 A | 108410 | 100% | 2017-10-11 | 2017-10-24 |  |  | MH-Wtg [48.91 h] | 22,010 | 22,010 | 003 |
| 108430 |  | Tender for Electrical installation | 15d | 2017-09-26 A | 2017-10-04 A | 108130 FF | 100% | 2017-10-17 | 2017-11-07 |  | finish on or after 2017-11-07 | MH-Wtg [81.52 h] | 36,684 | 36,684 | 003 |
| 108410.1 |  | Enquiry for EPBAX system | 5d | 2017-09-29 A | 2017-10-05 A |  | 100% | 2017-09-25 | 2017-09-29 |  | finish on or after 2017-09-29 |  |  |  | 003 |
| 108230.1 |  | Enquiry for UMPS | 1d | 2017-11-06 A | 2017-11-06 A |  | 100% | 2017-10-12 | 2017-10-12 |  | finish on or after 2017-10-12 |  |  |  | 003 |
| 108420.1 |  | Enquiry for Electrical heat tracing | 10d | 2017-11-30 A | 2017-11-30 A | 111380.1 SF-1d | 100% | 2018-01-24 | 2018-02-08 |  |  | MH-Wtg [48.91 h] | 22,010 | 22,010 | 002 |
| 108380 |  | Enquiry for Light fittings | 8d | 2017-12-29 A | 2017-12-29 A |  | 100% | 2018-01-01 | 2018-01-10 |  |  | MH-Wtg [24.46 h] | 11,007 | 11,007 | 003 |
| 108350 |  | Enquiry for Misc. panels | 10d | 2018-03-08 A | 2018-03-08 A | 108240, 106890 | 100% | 2018-03-22 | 2018-04-04 |  |  | MH-Wtg [24.46 h] | 11,007 | 11,007 | 003 |
| A126960 |  | Enquiry for Flame proof light fittings | 1d | 2018-03-14 A | 2018-03-14 A |  | 100% | 2018-03-01 | 2018-03-01 |  |  |  |  |  | 003 |
| 108320 |  | Enquiry for Control cables (Deleted) | 5d | 2018-08-01 | 2018-08-07 | 108310 |  |  |  | 52178.9d |  | MH-Wtg |  |  | 003 |
| 108330 |  | Enquiry for Jointing kits (Deleted) | 5d | 2018-08-01 | 2018-08-07 | 108300 |  |  |  | 52178.9d |  | MH-Wtg |  |  | 003 |
| 108360 |  | Enquiry for Lighting transformers (Deleted) | 8d | 2018-08-01 | 2018-08-10 |  |  |  |  | 52175.9d |  | MH-Wtg |  |  | 003 |
| 108390 |  | Enquiry for Earthing strips (Deleted) | 5d | 2018-08-01 | 2018-08-07 | 108370 |  |  |  | 52178.9d |  | MH-Wtg |  |  | 003 |
| 108400 |  | Enquiry for Lightening arrestors (Deleted) | 8d | 2018-08-01 | 2018-08-10 |  |  |  |  | 52175.9d |  | MH-Wtg |  |  | 003 |

| ID | WBS | Activity | Duration | Start | Finish | Predecessors | Complete | Planned start | Planned finish | Total float | Constraint | Resources | Cost | Actual cost | UNIT DESCRIPTION |
| --- | --- | --- | --- | --- | --- | --- | --- | --- | --- | --- | --- | --- | --- | --- | --- |
|  | 6 | **Instrumentation** |  | 2016-10-12 | 2018-08-28 |  |  |  |  |  |  |  |  |  |  |
|  | 1 | **Basic Documents** |  | 2016-10-12 | 2017-08-31 |  |  |  |  |  |  |  |  |  |  |
| 108440 |  | Design basis | 28d | 2016-10-12 A | 2016-11-20 A | 100050 SS | 100% | 2017-03-01 | 2017-04-07 |  | start on 2016-10-12 | MH-Wtg [64.36 h] | 28,962 | 28,962 | 003 |
| 108450 |  | Instrument index | 50d | 2016-12-07 A | 2017-04-21 A | 100090 FF | 100% | 2017-03-01 | 2017-05-09 |  | start on 2016-12-07 | MH-Wtg [107.26 h] | 48,267 | 48,267 | 003 |
| 108441 |  | Control room layout | 37d | 2016-12-15 A | 2017-07-13 A | 108440 | 100% | 2017-04-10 | 2017-05-30 |  | start on 2016-12-15 | MH-Wtg [85.81 h] | 38,615 | 38,615 | 003 |
| 108460 |  | Hook-up drawings | 25d | 2017-07-14 A | 2017-07-14 A | 112720 FS-36d | 100% | 2017-09-19 | 2017-10-23 |  |  | MH-Wtg [128.72 h] | 57,924 | 57,924 | 003 |
| 108470 |  | Standard drawings | 15d | 2017-08-31 A | 2017-08-31 A | 108540 FF | 100% | 2017-11-03 | 2017-11-23 |  |  | MH-Wtg [42.91 h] | 19,310 | 19,310 | 003 |
|  | 2 | **Detail Documents** |  | 2016-12-05 | 2018-08-14 |  |  |  |  |  |  |  |  |  |  |
|  | 1 | **DCS Configuration Documents** |  | 2016-12-05 | 2018-08-14 |  |  |  |  |  |  |  |  |  |  |
| 108490 |  | Control system architecture | 45d | 2016-12-05 A | 2016-12-05 A |  | 100% | 2017-03-01 | 2017-05-02 |  | start on 2016-12-05 | MH-Wtg [232 h] | 104,400 | 104,400 | 003 |
| 108480 |  | Instrument I/O List | 15d | 2017-03-09 A | 2017-03-29 A | 108490, 100090 FF | 100% | 2017-05-11 | 2017-05-31 |  |  | MH-Wtg [309 h] | 139,050 | 139,050 | 003 |
| 108520 |  | Instrument interlock diagrams | 10d | 2017-03-29 A | 2017-06-29 A | 100110 | 100% | 2017-05-02 | 2017-05-15 |  |  | MH-Wtg [232 h] | 104,400 | 104,400 | 003 |
| 108500 |  | Instrument configuration diagrams (Deleted) | 10d | 2018-08-01 | 2018-08-14 | 108480 |  |  |  | 52173.9d |  | MH-Wtg |  |  | 003 |
| 108510 |  | Cause & Effect matrix (Deleted) | 10d | 2018-08-01 | 2018-08-14 | 100110 |  |  |  | 52173.9d |  | MH-Wtg |  |  | 003 |
|  | 2 | **Construction Drawings** |  | 2017-06-01 | 2018-08-14 |  |  |  |  |  |  |  |  |  |  |
|  | 1 | **B101- WNA Plant** |  | 2017-08-31 | 2018-06-06 |  |  |  |  |  |  |  |  |  |  |
| 108530 |  | JB Schedule | 15d | 2017-08-31 A | 2017-08-31 A | 103560 | 100% | 2017-11-17 | 2017-12-07 |  |  | MH-Wtg [109.42 h] | 49,239 | 49,239 | 001 |
| 108540 |  | Instrument location drawings | 10d | 2017-09-29 A | 2017-09-29 A | 103570 | 100% | 2017-10-23 | 2017-11-03 |  |  | MH-Wtg [27.35 h] | 12,308 | 12,308 | 001 |
| 108550 |  | Cable tray layout | 15d | 2018-06-06 A | 2018-06-06 A | 103540 | 100% | 2018-06-01 | 2018-06-21 |  | finish on or after 2017-12-29 | MH-Wtg [45.59 h] | 20,516 | 20,516 | 001 |
|  | 2 | **B102A- CNA Plant-1** |  | 2017-06-01 | 2017-06-27 |  |  |  |  |  |  |  |  |  |  |
| 108570 |  | Updating Instrument location drawings | 10d | 2017-06-01 A | 2017-06-01 A | 108560 | 100% | 2017-05-15 | 2017-05-26 |  |  | MH-Wtg [13.75 h] | 6,188 | 6,188 | 002 |
| 108580 |  | Updating Cable tray layout | 10d | 2017-06-01 A | 2017-06-01 A | 108570 | 100% | 2017-05-29 | 2017-06-09 |  |  | MH-Wtg [22.91 h] | 10,310 | 10,310 | 002 |
| 108560 |  | Updating JB Schedule | 10d | 2017-06-27 A | 2017-06-27 A | 105960 | 100% | 2017-06-01 | 2017-06-14 |  |  | MH-Wtg [54.99 h] | 24,746 | 24,746 | 002 |
|  | 3 | **B102B- CNA Plant-2** |  | 2017-06-01 | 2017-06-27 |  |  |  |  |  |  |  |  |  |  |
| 108600 |  | Updating Instrument location drawings | 10d | 2017-06-01 A | 2017-06-01 A | 108570 SS | 100% | 2017-05-15 | 2017-05-26 |  |  | MH-Wtg [13.75 h] | 6,188 | 6,188 | 002 |
| 108610 |  | Updating Cable tray layout | 10d | 2017-06-08 A | 2017-06-08 A | 108580 SS | 100% | 2017-05-29 | 2017-06-09 |  |  | MH-Wtg [22.91 h] | 10,310 | 10,310 | 002 |
| 108590 |  | Updating JB Schedule | 10d | 2017-06-27 A | 2017-06-27 A | 108560 SS | 100% | 2017-06-01 | 2017-06-14 |  |  | MH-Wtg [54.99 h] | 24,746 | 24,746 | 002 |

| ID | WBS | Activity | Duration | Start | Finish | Predecessors | Complete | Remaining | Planned start | Planned finish | Total float | Constraint | Resources | Cost | Actual cost | UNIT DESCRIPTION |
| --- | --- | --- | --- | --- | --- | --- | --- | --- | --- | --- | --- | --- | --- | --- | --- | --- |
|  | 4 | **B103A- WNA Storage Tanks** |  | 2017-07-27 | 2018-06-06 |  |  |  |  |  |  |  |  |  |  |  |
| 108630 |  | Instrument location drawings | 10d | 2017-07-27 A | 2017-07-27 A | 103780 | 100% |  | 2017-08-30 | 2017-09-12 |  |  | MH-Wtg [8.22 h] | 3,699 | 3,699 | 003 |
| 108620 |  | JB Schedule | 12d | 2017-07-28 A | 2017-07-28 A | 103770 | 100% |  | 2017-09-04 | 2017-09-19 |  |  | MH-Wtg [32.88 h] | 14,796 | 14,796 | 003 |
| 108640 |  | Cable tray layout | 10d | 2018-04-18 A | 2018-06-06 A | 103750 | 100% |  | 2018-06-01 | 2018-06-14 |  | finish on or after 2017-12-29 | MH-Wtg [13.7 h] | 6,165 | 6,165 | 003 |
|  | 18 | **B103B- CNA Storage Tanks** |  | 2017-07-27 | 2018-06-06 |  |  |  |  |  |  |  |  |  |  |  |
| 108642 |  | Instrument location drawings | 10d | 2017-07-27 A | 2017-07-27 A | 105360 | 100% |  | 2017-08-30 | 2017-09-12 |  |  | MH-Wtg [8.22 h] | 3,699 | 3,699 | 003 |
| 108641 |  | JB Schedule | 12d | 2017-07-28 A | 2017-07-28 A | 105350 | 100% |  | 2017-09-04 | 2017-09-19 |  |  | MH-Wtg [32.88 h] | 14,796 | 14,796 | 003 |
| 108643 |  | Cable tray layout | 10d | 2018-06-06 A | 2018-06-06 A | 105330 | 100% |  | 2018-06-01 | 2018-06-14 |  | finish on or after 2017-12-29 | MH-Wtg [13.7 h] | 6,165 | 6,165 | 003 |
|  | 19 | **B103C- WWS Storage Tanks** |  | 2017-07-27 | 2018-06-06 |  |  |  |  |  |  |  |  |  |  |  |
| 108645 |  | Instrument location drawings | 10d | 2017-07-27 A | 2017-07-27 A | 105630 | 100% |  | 2017-08-23 | 2017-09-05 |  |  | MH-Wtg [2.69 h] | 1,211 | 1,211 | 003 |
| 108644 |  | JB Schedule | 12d | 2017-07-28 A | 2017-07-28 A | 105620 | 100% |  | 2017-08-28 | 2017-09-12 |  |  | MH-Wtg [10.77 h] | 4,847 | 4,847 | 003 |
| 108646 |  | Cable tray layout | 10d | 2018-06-06 A | 2018-06-06 A | 105600 | 100% |  | 2018-06-01 | 2018-06-14 |  | finish on or after 2017-12-29 | MH-Wtg [4.49 h] | 2,021 | 2,021 | 003 |
|  | 5 | **B103D- WNA/CNA Tanker Loading Bays** |  | 2017-09-25 | 2018-08-07 |  |  |  |  |  |  |  |  |  |  |  |
| 108650 |  | Instrument location drawings (Deleted) | 3d | 2017-09-25 A | 2018-08-03 | 103970 |  | 3d | 2017-09-25 | 2017-09-27 | 52180.9d |  | MH-Wtg |  |  | 003 |
| 108660 |  | Cable tray layout (Deleted) | 5d | 2018-08-01 | 2018-08-07 |  |  |  |  |  | 52178.9d |  | MH-Wtg |  |  | 003 |
|  | 6 | **B104A- Caustic, Sulphuric Storage** |  | 2017-07-27 | 2018-06-06 |  |  |  |  |  |  |  |  |  |  |  |
| 108680 |  | Instrument location drawings | 10d | 2017-07-27 A | 2017-07-27 A | 104150 | 100% |  | 2017-08-30 | 2017-09-12 |  |  | MH-Wtg [6.24 h] | 2,808 | 2,808 | 003 |
| 108670 |  | JB Schedule | 12d | 2017-07-28 A | 2017-07-28 A | 104140 | 100% |  | 2017-09-04 | 2017-09-19 |  |  | MH-Wtg [24.94 h] | 11,223 | 11,223 | 003 |
| 108690 |  | Cable tray layout | 10d | 2018-06-06 A | 2018-06-06 A | 104120 | 100% |  | 2018-06-01 | 2018-06-14 |  | finish on or after 2017-12-29 | MH-Wtg [10.39 h] | 4,676 | 4,676 | 003 |
|  | 7 | **B104B- HSD Storage (Deleted)** |  | 2018-08-01 | 2018-08-07 |  |  |  |  |  |  |  |  |  |  |  |
| 108700 |  | Instrument location drawings (Deleted) | 3d | 2018-08-01 | 2018-08-03 |  |  |  |  |  | 52180.9d |  | MH-Wtg |  |  | 003 |
| 108710 |  | Cable tray layout (Deleted) | 5d | 2018-08-01 | 2018-08-07 |  |  |  |  |  | 52178.9d |  | MH-Wtg |  |  | 003 |
|  | 8 | **B104C-Liquid NH3 Storage** |  | 2017-07-27 | 2018-06-06 |  |  |  |  |  |  |  |  |  |  |  |
| 108730 |  | Instrument location drawings | 10d | 2017-07-27 A | 2017-07-27 A | 104510 | 100% |  | 2017-09-27 | 2017-10-10 |  |  | MH-Wtg [2.69 h] | 1,211 | 1,211 | 003 |
| 108720 |  | JB Schedule | 12d | 2017-07-28 A | 2017-07-28 A | 104500 | 100% |  | 2017-09-29 | 2017-10-16 |  |  | MH-Wtg [10.77 h] | 4,847 | 4,847 | 003 |
| 108740 |  | Cable tray layout | 10d | 2018-06-06 A | 2018-06-06 A | 104480 | 100% |  | 2018-06-01 | 2018-06-14 |  | finish on or after 2017-12-29 | MH-Wtg [4.49 h] | 2,021 | 2,021 | 003 |

| ID | WBS | Activity | Duration | Start | Finish | Predecessors | Complete | Planned start | Planned finish | Total float | Constraint | Resources | Cost | Actual cost | UNIT DESCRIPTION |
| --- | --- | --- | --- | --- | --- | --- | --- | --- | --- | --- | --- | --- | --- | --- | --- |
|  | 20 | **B104E- SNA** |  | 2017-07-27 | 2018-06-06 |  |  |  |  |  |  |  |  |  |  |
| 108655 |  | Instrument location drawings | 10d | 2017-07-27 A | 2017-07-27 A | 113890 | 100% | 2017-08-23 | 2017-09-05 |  |  | MH-Wtg [2.69 h] | 1,211 | 1,211 | 003 |
| 108654 |  | JB Schedule | 12d | 2017-07-28 A | 2017-07-28 A | 113870 | 100% | 2017-08-28 | 2017-09-12 |  |  | MH-Wtg [10.77 h] | 4,847 | 4,847 | 003 |
| 108656 |  | Cable tray layout | 10d | 2018-06-06 A | 2018-06-06 A | 113850 | 100% | 2018-06-01 | 2018-06-14 |  | finish on or after 2017-12-29 | MH-Wtg [4.49 h] | 2,021 | 2,021 | 003 |
|  | 21 | **B104F- SNA Tanker Unloading** |  | 2018-08-01 | 2018-08-07 |  |  |  |  |  |  |  |  |  |  |
| 114310 |  | Instrument location drawings (Deleted) | 3d | 2018-08-01 | 2018-08-03 | 114100 |  |  |  | 52180.9d |  | MH-Wtg |  |  | 003 |
| 114320 |  | Cable tray layout (Deleted) | 5d | 2018-08-01 | 2018-08-07 |  |  |  |  | 52178.9d |  | MH-Wtg |  |  | 003 |
|  | 9 | **B105A- Air Compressor** |  | 2017-07-28 | 2018-06-06 |  |  |  |  |  |  |  |  |  |  |
| 108750 |  | JB Schedule | 10d | 2017-07-28 A | 2017-07-28 A | 104680 | 100% | 2017-09-27 | 2017-10-10 |  |  | MH-Wtg [32.88 h] | 14,796 | 14,796 | 003 |
| 108760 |  | Instrument location drawings | 8d | 2017-09-28 A | 2017-09-28 A | 104690 | 100% | 2017-10-26 | 2017-11-06 |  |  | MH-Wtg [8.22 h] | 3,699 | 3,699 | 003 |
| 108770 |  | Cable tray layout | 8d | 2018-06-06 A | 2018-06-06 A | 104660 | 100% | 2018-06-01 | 2018-06-12 |  | finish on or after 2017-12-29 | MH-Wtg [13.7 h] | 6,165 | 6,165 | 003 |
|  | 10 | **B105B- Air Drier** |  | 2017-09-28 | 2018-06-06 |  |  |  |  |  |  |  |  |  |  |
| 108780 |  | Instrument location drawings | 5d | 2017-09-28 A | 2017-09-28 A | 104850 | 100% | 2017-10-23 | 2017-10-27 |  |  | MH-Wtg [5.39 h] | 2,426 | 2,426 | 003 |
| 108790 |  | Cable tray layout | 8d | 2018-06-06 A | 2018-06-06 A | 104820 | 100% | 2018-06-01 | 2018-06-12 |  | finish on or after 2017-12-29 | MH-Wtg [12.57 h] | 5,657 | 5,657 | 003 |
|  | 11 | **B105C- VAM Unit (Package)** |  | 2018-08-01 | 2018-08-14 |  |  |  |  |  |  |  |  |  |  |
| 108800 |  | JB Schedule (Package vendor) | 10d | 2018-08-01 | 2018-08-14 |  |  |  |  | 52173.9d |  | MH-Wtg |  |  | 003 |
| 108810 |  | Instrument location drawings (Package vendor) | 8d | 2018-08-01 | 2018-08-10 |  |  |  |  | 52175.9d |  | MH-Wtg |  |  | 003 |
| 108820 |  | Cable tray layout (Package vendor) | 8d | 2018-08-01 | 2018-08-10 |  |  |  |  | 52175.9d |  | MH-Wtg |  |  | 003 |
|  | 12 | **B105D- Hot Well/Cold Well, Pumps (Package)** |  | 2018-08-01 | 2018-08-14 |  |  |  |  |  |  |  |  |  |  |
| 108830 |  | Instrument location drawings (Package vendor) | 8d | 2018-08-01 | 2018-08-10 |  |  |  |  | 52175.9d |  | MH-Wtg |  |  | 003 |
| 108840 |  | Cable tray layout (Package vendor) | 10d | 2018-08-01 | 2018-08-14 |  |  |  |  | 52173.9d |  | MH-Wtg |  |  | 003 |
|  | 22 | **B106D- Condensate Storage, Pumps** |  | 2017-07-28 | 2018-04-18 |  |  |  |  |  |  |  |  |  |  |
| 108854 |  | JB Schedule | 12d | 2017-07-28 A | 2017-07-28 A | 114660 | 100% | 2018-02-01 | 2018-02-16 |  |  | MH-Wtg [10.77 h] | 4,847 | 4,847 | 003 |
| 108855 |  | Instrument location drawings | 0d | 2017-09-28 A | 2017-09-28 A | 114670 | 100% | 2018-02-01 | 2018-02-01 |  |  | MH-Wtg [2.69 h] | 1,211 | 1,211 | 003 |
| 108856 |  | Cable tray layout | 10d | 2018-04-18 A | 2018-04-18 A |  | 100% | 2018-06-01 | 2018-06-14 |  | finish on or after 2017-12-29 | MH-Wtg [4.49 h] | 2,021 | 2,021 | 003 |

| ID | WBS | Activity | Duration | Start | Finish | Predecessors | Complete | Planned start | Planned finish | Total float | Constraint | Resources | Cost | Actual cost | UNIT DESCRIPTION |
| --- | --- | --- | --- | --- | --- | --- | --- | --- | --- | --- | --- | --- | --- | --- | --- |
|  | 13 | **B107C- Pump House** |  | 2017-07-28 | 2018-06-06 |  |  |  |  |  |  |  |  |  |  |
| 108841 |  | JB Schedule | 12d | 2017-07-28 A | 2017-07-28 A | 109430 | 100% | 2017-10-04 | 2017-10-19 |  |  | MH-Wtg [21.54 h] | 9,693 | 9,693 | 003 |
| 108842 |  | Instrument location drawings | 10d | 2017-08-31 A | 2017-08-31 A | 109440 | 100% | 2017-09-29 | 2017-10-12 |  |  | MH-Wtg [5.39 h] | 2,426 | 2,426 | 003 |
| 108843 |  | Cable tray layout | 12d | 2018-06-06 A | 2018-06-06 A | 108890 | 100% | 2018-06-01 | 2018-06-18 |  | finish on or after 2017-12-29 | MH-Wtg [8.98 h] | 4,041 | 4,041 | 003 |
|  | 14 | **B108D- DM Storage** |  | 2017-07-27 | 2018-06-06 |  |  |  |  |  |  |  |  |  |  |
| 108845 |  | Instrument location drawings | 10d | 2017-07-27 A | 2017-07-27 A | 109630 | 100% | 2017-09-29 | 2017-10-12 |  |  | MH-Wtg [2.69 h] | 1,211 | 1,211 | 003 |
| 108844 |  | JB Schedule | 12d | 2017-07-28 A | 2017-07-28 A | 109620 | 100% | 2017-09-06 | 2017-09-21 |  |  | MH-Wtg [10.77 h] | 4,847 | 4,847 | 003 |
| 108846 |  | Cable tray layout | 10d | 2018-06-06 A | 2018-06-06 A | 109600 | 100% | 2018-06-01 | 2018-06-14 |  | finish on or after 2017-12-29 | MH-Wtg [4.49 h] | 2,021 | 2,021 | 003 |
|  | 15 | **B109- Cooling Tower with Pumps** |  | 2017-07-27 | 2018-06-06 |  |  |  |  |  |  |  |  |  |  |
| 108910 |  | JB Schedule | 8d | 2017-07-27 A | 2017-07-27 A | 105720 | 100% | 2017-09-27 | 2017-10-06 |  |  | MH-Wtg [16.44 h] | 7,398 | 7,398 | 003 |
| 108920 |  | Instrument location drawings | 5d | 2017-09-29 A | 2017-09-29 A | 105730 | 100% | 2017-10-02 | 2017-10-06 |  |  | MH-Wtg [4.11 h] | 1,850 | 1,850 | 003 |
| 108930 |  | Cable tray layout | 8d | 2018-06-06 A | 2018-06-06 A | 105700 | 100% | 2018-06-01 | 2018-06-12 |  | finish on or after 2017-12-29 | MH-Wtg [6.85 h] | 3,083 | 3,083 | 003 |
|  | 16 | **B112- Control Room & QC** |  | 2017-06-27 | 2018-02-15 |  |  |  |  |  |  |  |  |  |  |
| 108940 |  | Cable list/schedule | 15d | 2017-06-27 A | 2017-09-01 A | 108530 FF, 108560 FF, 108590 FF, 108620 FF, 108670 FF, 108720 FF, 108750 FF, 108910 FF | 100% | 2017-10-13 | 2017-11-02 |  |  | MH-Wtg [54.99 h] | 24,746 | 24,746 | 003 |
| 108960 |  | Cable termination details | 10d | 2018-01-18 A | 2018-01-18 A | 113600 FS+15d, 108940 | 100% | 2018-02-01 | 2018-02-14 |  |  | MH-Wtg [27.5 h] | 12,375 | 12,375 | 003 |
| 108950 |  | Drum schedule | 10d | 2018-02-15 A | 2018-02-15 A | 108940, 113682 FS+10d | 100% | 2018-02-01 | 2018-02-14 |  |  | MH-Wtg [9.17 h] | 4,127 | 4,127 | 003 |
|  | 17 | **B117- Piperack** |  | 2018-04-18 | 2018-04-18 |  |  |  |  |  |  |  |  |  |  |
| 108970 |  | Cable tray layout | 25d | 2018-04-18 A | 2018-04-18 A | 105850 | 100% | 2018-05-01 | 2018-06-04 |  | finish on or after 2017-12-29 | MH-Wtg [72.75 h] | 32,738 | 32,738 | 003 |
|  | 3 | **Material Take Off (MTO)** |  | 2017-08-31 | 2018-08-28 |  |  |  |  |  |  |  |  |  |  |
| 108980 |  | MTO for instrument cable trays | 10d | 2017-08-31 A | 2017-08-31 A | 103540 | 100% | 2017-11-10 | 2017-11-23 |  |  | MH-Wtg [85.81 h] | 38,615 | 38,615 | 003 |
| 108990 |  | MTO for instrument cables | 10d | 2017-10-11 A | 2017-10-11 A | 108940, 108980 | 100% | 2017-10-02 | 2017-10-13 |  |  | MH-Wtg [107.26 h] | 48,267 | 48,267 | 003 |
| 109000 |  | MTO for other instrument bulk materials (Deleted) | 20d | 2018-08-01 | 2018-08-28 | 108990 |  |  |  | 52163.9d |  | MH-Wtg |  |  | 003 |
|  | 4 | **Enquiry/Tenders** |  | 2016-12-05 | 2018-08-27 |  |  |  |  |  |  |  |  |  |  |
| 109010 |  | Enquiry for DCS system | 20d | 2016-12-05 A | 2017-03-09 A | 108490 | 100% | 2017-05-03 | 2017-05-30 |  |  | MH-Wtg [172 h] | 77,400 | 77,400 | 003 |
| 109021 |  | Enquiry for Control valves- CNA Plants | 39d | 2016-12-20 A | 2017-04-10 A | 100081 | 100% | 2017-04-17 | 2017-06-08 |  | start on 2016-12-20 | MH-Wtg [25.74 h] | 11,583 | 11,583 | 002 |
| 109031 |  | Enquiry for On/off valves- CNA Plants | 39d | 2016-12-23 A | 2017-04-19 A | 109021 | 100% | 2017-06-09 | 2017-08-02 |  | start on 2016-12-23 | MH-Wtg [25.74 h] | 11,583 | 11,583 | 002 |
| 109051 |  | Enquiry for Flow meters- CNA Plants | 32d | 2017-01-17 A | 2017-07-03 A | 109041 | 100% | 2017-08-25 | 2017-10-09 |  | start on 2017-01-17 | MH-Wtg [25.74 h] | 11,583 | 11,583 | 002 |
| 109041 |  | Enquiry for Transmitters- CNA Plants | 16d | 2017-02-01 A | 2017-05-23 A | 109031 | 100% | 2017-08-03 | 2017-08-25 |  | start on 2017-02-01 | MH-Wtg [226 h] | 101,700 | 101,700 | 002 |
| 109020 |  | Enquiry for Control valves- WNA Plant | 15d | 2017-02-13 A | 2017-03-28 A | 100080 SS | 100% | 2017-03-01 | 2017-03-21 |  |  | MH-Wtg [102.97 h] | 46,337 | 46,337 | 001 |
| 109090.3 |  | Enquiry for Vibration monitoring system | 10d | 2017-03-01 A | 2017-03-23 A |  | 100% | 2017-05-01 | 2017-05-12 |  |  | MH-Wtg [68.65 h] | 30,893 | 30,893 | 001 |
| 109120 |  | Enquiry for Weigh bridge | 10d | 2017-03-17 A | 2017-03-22 A |  | 100% | 2017-05-01 | 2017-05-12 |  | finish on 2017-03-20 | MH-Wtg [51.49 h] | 23,171 | 23,171 | 003 |
| 109090.1 |  | Enquiry for Gauges- CNA Plants | 5d | 2017-03-27 A | 2017-10-31 A |  | 100% | 2017-08-03 | 2017-08-09 |  |  | MH-Wtg [12.01 h] | 5,405 | 5,405 | 002 |
| 109022 |  | Enquiry for Control valves- Offsites & Utilities | 8d | 2017-04-07 A | 2017-04-10 A | 100090 | 100% | 2017-04-19 | 2017-04-28 |  |  | MH-Wtg [42.91 h] | 19,310 | 19,310 | 003 |
| 109040 |  | Enquiry for Transmitters- WNA Plant | 8d | 2017-04-08 A | 2017-08-31 A | 109030 | 100% | 2017-04-17 | 2017-04-26 |  |  | MH-Wtg [46 h] | 20,700 | 20,700 | 001 |
| 109061 |  | Enquiry for Analysers/Gas detectors- CNA Plants | 5d | 2017-04-08 A | 2017-04-24 A | 109051 | 100% | 2017-05-17 | 2017-05-23 |  |  | MH-Wtg [20.59 h] | 9,266 | 9,266 | 002 |
| 109062 |  | Enquiry for Analysers/Gas detectors- Offsites & Utilities | 8d | 2017-04-08 A | 2017-04-24 A | 109052 | 100% | 2017-06-28 | 2017-07-07 |  |  | MH-Wtg [34.32 h] | 15,444 | 15,444 | 003 |
| 109050 |  | Enquiry for Flow meters- WNA Plant | 8d | 2017-05-02 A | 2017-05-03 A | 109040 | 100% | 2017-05-11 | 2017-05-22 |  |  | MH-Wtg [42.91 h] | 19,310 | 19,310 | 001 |
| 109042 |  | Enquiry for Transmitters- Offsites & Utilities | 10d | 2017-05-23 A | 2017-08-31 A | 109032 | 100% | 2017-05-31 | 2017-06-13 |  |  | MH-Wtg [182 h] | 81,900 | 81,900 | 003 |
| 109052 |  | Enquiry for Flow meters- Offsites & Utilities | 10d | 2017-05-26 A | 2017-07-26 A | 109042 | 100% | 2017-06-14 | 2017-06-27 |  |  | MH-Wtg [85.81 h] | 38,615 | 38,615 | 003 |
| 109090.4 |  | Enquiry for Anti surge controller | 10d | 2017-05-26 A | 2017-08-04 A |  | 100% | 2017-05-01 | 2017-05-12 |  | finish on or after 2017-03-10 | MH-Wtg [51.49 h] | 23,171 | 23,171 | 001 |
| 109090.5 |  | Enquiry for Governer | 10d | 2017-05-26 A | 2017-08-04 A |  | 100% | 2017-05-01 | 2017-05-12 |  | finish on or after 2017-03-15 | MH-Wtg [51.49 h] | 23,171 | 23,171 | 001 |
| 109070 |  | Enquiry for Saftey items- WNA Plant | 19d | 2017-05-31 A | 2017-08-16 A | 109050 | 100% | 2017-05-23 | 2017-06-16 |  |  | MH-Wtg [51.49 h] | 23,171 | 23,171 | 001 |
| 109071 |  | Enquiry for Saftey items- CNA Plants | 5d | 2017-05-31 A | 2017-08-16 A | 109051 | 100% | 2017-06-14 | 2017-06-20 |  |  | MH-Wtg [12.01 h] | 5,405 | 5,405 | 002 |
| 109090 |  | Enquiry for Gauges- WNA Plant | 10d | 2017-05-31 A | 2017-10-31 A |  | 100% | 2017-06-19 | 2017-06-30 |  |  | MH-Wtg [48.05 h] | 21,623 | 21,623 | 001 |
| 109090.2 |  | Enquiry for Gauges- Offsites & Utilities | 7d | 2017-05-31 A | 2017-10-31 A | 109082 | 100% | 2017-07-17 | 2017-07-25 |  |  | MH-Wtg [25.74 h] | 11,583 | 11,583 | 003 |
| 109041.1 |  | Enquiry for DIN Rail Transmitter- CNA Plant (Deleted) | 6d | 2017-06-01 A | 2017-06-01 A | 109041 | 100% | 2017-05-23 | 2017-05-30 |  |  |  |  |  | 002 |
| 109030 |  | Enquiry for On/Off valves- WNA Plant | 10d | 2017-07-10 A | 2017-07-10 A | 109020 | 100% | 2017-05-08 | 2017-05-19 |  |  | MH-Wtg [43 h] | 19,350 | 19,350 | 001 |
| 109032 |  | Enquiry for On/off valves- Offsites & Utilities | 22d | 2017-07-10 A | 2017-07-10 A | 109022 | 100% | 2017-08-01 | 2017-08-31 |  |  | MH-Wtg [86 h] | 38,700 | 38,700 | 003 |
| 109130 |  | Enquiry of Fire alarm system | 10d | 2017-07-31 A | 2017-07-31 A | 109120 | 100% | 2017-08-01 | 2017-08-14 |  |  | MH-Wtg [51.49 h] | 23,171 | 23,171 | 003 |
| 109072 |  | Enquiry for Saftey items- Offsites & Utilities | 8d | 2017-08-16 A | 2017-08-16 A | 109052 | 100% | 2017-09-01 | 2017-09-12 |  |  | MH-Wtg [22.31 h] | 10,040 | 10,040 | 003 |
| 109091 |  | Enquiry for Cable trays | 5d | 2017-08-31 A | 2017-08-31 A | 108980 SS | 100% | 2017-11-10 | 2017-11-16 |  |  | MH-Wtg [34.32 h] | 15,444 | 15,444 | 003 |
| 109100 |  | Enquiry for Junction boxes | 8d | 2017-09-27 A | 2017-09-27 A | 109092 | 100% | 2017-10-05 | 2017-10-16 |  |  | MH-Wtg [34.32 h] | 15,444 | 15,444 | 003 |
| 109140 |  | Tender for Instrument installation | 12d | 2017-09-28 A | 2017-09-28 A | 109091 | 100% | 2017-11-03 | 2017-11-20 |  | finish on or after 2017-11-20 | MH-Wtg [85.81 h] | 38,615 | 38,615 | 003 |
| 109092 |  | Enquiry for Instrument cables | 8d | 2017-10-11 A | 2017-10-11 A | 109091 | 100% | 2017-10-02 | 2017-10-11 |  |  | MH-Wtg [34.32 h] | 15,444 | 15,444 | 003 |
| 109082 |  | Enquiry for Switches- Offsites & Utilities | 5d | 2017-12-22 A | 2017-12-25 A | 109072 | 100% | 2017-12-01 | 2017-12-07 |  | finish on or after 2017-11-20 | MH-Wtg [13.73 h] | 6,179 | 6,179 | 003 |
| 109110 |  | Enquiry for bulk materials (Deleted) | 5d | 2017-12-28 A | 2017-12-28 A |  | 100% | 2018-01-01 | 2018-01-05 |  | finish on or after 2017-11-25 | MH-Wtg |  |  | 003 |
| A127440 |  | Enquiry for Gas detectors | 1d | 2018-03-05 A | 2018-03-05 A |  | 100% | 2018-03-01 | 2018-03-01 |  |  |  |  |  | 003 |
| 109060 |  | Enquiry for Analysers/Gas detectors- WNA plant (Deleted) | 19d | 2018-08-01 | 2018-08-27 | 109050 |  |  |  | 52164.9d |  | MH-Wtg |  |  | 001 |
| 109080 |  | Enquiry for Switches- WNA Plant (Deleted) | 10d | 2018-08-01 | 2018-08-14 | 109070 |  |  |  | 52173.9d |  | MH-Wtg |  |  | 001 |
| 109081 |  | Enquiry for Switches- CNA Plants (Deleted) | 5d | 2018-08-01 | 2018-08-07 | 109071 |  |  |  | 52178.9d |  | MH-Wtg |  |  | 002 |

| ID | WBS | Activity | Duration | Start | Finish | Predecessors | Complete | Remaining | Planned start | Planned finish | Total float | Constraint | Resources | Cost | Actual cost | UNIT DESCRIPTION |
| --- | --- | --- | --- | --- | --- | --- | --- | --- | --- | --- | --- | --- | --- | --- | --- | --- |
|  | 7 | **Addition from Jan'18** |  | 2018-01-23 | 2018-08-01 |  |  |  |  |  |  |  |  |  |  |  |
| A126750 |  | Enquiry for Bearing temperature RTD | 1d | 2018-01-23 A | 2018-01-23 A |  | 100% |  | 2018-02-01 | 2018-02-01 |  |  | MH-Wtg [16 h] | 7,200 | 7,200 | 001 |
| A126760 |  | Enquiry for Stack analyzer (CEMS) | 1d | 2018-01-23 A | 2018-01-23 A |  | 100% |  | 2018-02-01 | 2018-02-01 |  |  | MH-Wtg [16 h] | 7,200 | 7,200 | 001 |
| A126690 |  | Enquiry for CW pump for MEE | 1d | 2018-01-25 A | 2018-01-25 A |  | 100% |  | 2018-02-01 | 2018-02-01 |  |  | MH-Wtg [12 h] | 5,400 | 5,400 | 003 |
| A126770 |  | Enquiry for Online effluent monitoring system (EQMS) | 1d | 2018-01-25 A | 2018-01-25 A |  | 100% |  | 2018-02-01 | 2018-02-01 |  |  | MH-Wtg [16 h] | 7,200 | 7,200 | 003 |
| A126680 |  | Enquiry for RW intake pumps | 1d | 2018-01-30 A | 2018-01-30 A |  | 100% |  | 2018-02-01 | 2018-02-01 |  |  | MH-Wtg [12 h] | 5,400 | 5,400 | 003 |
| A126740 |  | Enquiry for Self actuated control valves | 1d | 2018-02-01 A | 2018-02-01 A |  | 100% |  |  |  |  |  | MH-Wtg [16 h] | 7,200 | 7,200 | 001 |
| A126670 |  | P&ID for RW supply from GIDC reservoir | 1d | 2018-02-02 A | 2018-02-23 A |  | 100% |  | 2018-02-01 | 2018-02-01 |  |  | MH-Wtg [16 h] | 7,200 | 7,200 | 003 |
| A126900 |  | Enquiry for Tail gas vent silencer | 1d | 2018-02-20 A | 2018-02-20 A |  | 100% |  | 2018-03-01 | 2018-03-01 |  |  |  |  |  | 001 |
| A126850 |  | Foundation detail for MEE (Mojj) | 1d | 2018-03-29 A | 2018-07-04 A |  | 100% |  | 2018-03-01 | 2018-03-01 |  |  |  |  |  | 003 |
| A126870 |  | Foundation and details for MEE Control room (Mojj) | 1d | 2018-03-29 A | 2018-06-26 A |  | 100% |  | 2018-03-01 | 2018-03-01 |  |  |  |  |  | 003 |
| A126970 |  | Enquiry for Electrical work for GIDC pumping station | 1d | 2018-04-04 A | 2018-04-04 A |  | 100% |  | 2018-03-01 | 2018-03-01 |  |  |  |  |  | 003 |
| A126860 |  | Architectural layout for MEE Control room (Mojj) | 1d | 2018-07-02 A | 2018-08-01 |  |  | 1d | 2018-06-01 | 2018-06-01 | 52182.9d |  |  |  |  | 003 |
|  | 2 | **Procurement Assistance** |  | 2016-12-12 | 2018-10-09 |  |  |  |  |  |  |  |  |  |  |  |
|  | 1 | **Process** |  | 2017-01-30 | 2018-08-28 |  |  |  |  |  |  |  |  |  |  |  |
|  | 1 | **Floating of Enquiry & Receipt of Offers** |  | 2017-01-30 | 2018-08-28 |  |  |  |  |  |  |  |  |  |  |  |
| 109160 |  | Enq. floating & receipt of offers for Raw water treatment plant | 22d | 2017-01-30 A | 2017-03-04 A | 100150 | 100% |  | 2017-03-28 | 2017-04-26 |  | start on 2017-01-30 | MH-Wtg [22.6 h] | 10,170 | 10,170 | 003 |
| 109300 |  | Enq. floating & receipt of offers for Agitators | 20d | 2017-01-30 A | 2017-03-14 A | 100290 | 100% |  | 2017-05-22 | 2017-06-16 |  |  | MH-Wtg [1 h] | 450 | 450 | 002 |
| 109190 |  | Enq. floating & receipt of offers for Boiler package (Deleted) | 20d | 2017-02-01 A | 2017-03-07 A |  | 100% |  | 2017-04-25 | 2017-05-22 |  | start on 2017-02-01 | MH-Wtg |  |  | 003 |
| 109330 |  | Enq. floating & receipt of offers for Chiller unit | 20d | 2017-02-06 A | 2017-04-06 A | 100320 | 100% |  | 2017-03-28 | 2017-04-24 |  |  | MH-Wtg [8.47 h] | 3,812 | 3,812 | 003 |
| 109150 |  | Enq. floating & receipt of offers for Fire fighting package | 20d | 2017-02-22 A | 2017-03-17 A | 100140 | 100% |  | 2017-06-23 | 2017-07-20 |  |  | MH-Wtg [28.25 h] | 12,713 | 12,713 | 003 |
| 109170 |  | Enq. floating & receipt of offers for Cooling tower package | 20d | 2017-02-28 A | 2017-03-28 A | 100160 | 100% |  | 2017-05-22 | 2017-06-16 |  |  | MH-Wtg [22.6 h] | 10,170 | 10,170 | 003 |
| 109180 |  | Enq. floating & receipt of offers for DM plant | 20d | 2017-03-06 A | 2017-04-26 A | 100170 | 100% |  | 2017-05-22 | 2017-06-16 |  |  | MH-Wtg [8.47 h] | 3,812 | 3,812 | 003 |
| 109251 |  | Enq. floating & receipt of offers for API pumps- CNA Plants | 20d | 2017-04-11 A | 2017-05-22 A | 100241 | 100% |  | 2017-04-03 | 2017-04-28 |  |  | MH-Wtg [5 h] | 2,250 | 2,250 | 002 |
| 109420.1 |  | Enq. floating & receipt of offers for Ejectors | 20d | 2017-04-19 A | 2017-05-31 A | 100410.1 | 100% |  | 2017-04-10 | 2017-05-05 |  |  | MH-Wtg [7.06 h] | 3,177 | 3,177 | 001 |
| 109310 |  | Enq. floating & receipt of offers for Air compressor | 20d | 2017-04-26 A | 2017-05-25 A | 100300 | 100% |  | 2017-04-17 | 2017-05-12 |  |  | MH-Wtg [8.47 h] | 3,812 | 3,812 | 003 |
| 109320 |  | Enq. floating & receipt of offers for Air drier | 20d | 2017-04-26 A | 2017-05-25 A | 100310 | 100% |  | 2017-04-17 | 2017-05-12 |  |  | MH-Wtg [5.65 h] | 2,543 | 2,543 | 003 |
| 109250 |  | Enq. floating & receipt of offers for Non API pumps- WNA Plant | 20d | 2017-04-28 A | 2017-06-12 A | 100240 | 100% |  | 2017-05-19 | 2017-06-15 |  |  | MH-Wtg [10 h] | 4,500 | 4,500 | 001 |
| 109210 |  | Enq. floating & receipt of offers for ETP package | 20d | 2017-05-08 A | 2017-08-04 A | 100200 | 100% |  | 2017-05-22 | 2017-06-16 |  |  | MH-Wtg [22.6 h] | 10,170 | 10,170 | 003 |
| 109420.7 |  | Enq. floating & receipt of offers for Deareator | 20d | 2017-05-17 A | 2017-06-20 A | 100410.7 | 100% |  | 2017-05-15 | 2017-06-09 |  |  |  |  |  | 001 |
| 109420.3 |  | Enq. floating & receipt of offers for Inlet air filter | 20d | 2017-05-22 A | 2017-07-10 A | 100410.3 | 100% |  | 2017-05-15 | 2017-06-09 |  |  |  |  |  | 001 |
| 109260 |  | Enq. floating & receipt of offers for Non-API pumps | 20d | 2017-05-31 A | 2017-07-03 A | 100250 | 100% |  | 2017-04-24 | 2017-05-19 |  |  | MH-Wtg [36 h] | 16,200 | 16,200 | 003 |
| 109420.4 |  | Enq. floating & receipt of offers for Filters | 20d | 2017-05-31 A | 2017-06-19 A | 100410.4 | 100% |  | 2017-05-11 | 2017-06-07 |  |  |  |  |  | 001 |
| 109230 |  | Enq. floating & receipt of offers for Side stream filter package | 20d | 2017-06-09 A | 2017-07-27 A | 100220 | 100% |  | 2017-06-15 | 2017-07-12 |  |  | MH-Wtg [4.24 h] | 1,908 | 1,908 | 003 |
| 109421 |  | Enq. floating & receipt of offers for De-alkalizer | 20d | 2017-06-09 A | 2017-07-27 A | 100411 | 100% |  | 2017-06-15 | 2017-07-12 |  |  |  |  |  | 003 |
| 109270 |  | Enq. floating & receipt of offers for Cooling water pumps | 20d | 2017-07-20 A | 2017-08-21 A | 100260 | 100% |  | 2017-08-01 | 2017-08-29 |  |  | MH-Wtg [14.12 h] | 6,354 | 6,354 | 003 |
| 109240 |  | Enq. floating & receipt of offers for Chlorination package | 20d | 2017-08-03 A | 2017-08-18 A | 100230 | 100% |  | 2017-09-01 | 2017-09-28 |  |  | MH-Wtg [1 h] | 450 | 450 | 003 |
| 109421.1 |  | Enq. floating & receipt of offers for Ammonia compressor | 20d | 2017-08-03 A | 2017-09-20 A | 100411.1 | 100% |  | 2017-09-19 | 2017-10-16 |  |  |  |  |  | 003 |
| 109420.2 |  | Enq. floating & receipt of offers for Ammonia scrubber | 20d | 2017-08-04 A | 2017-10-09 A | 100410.2 | 100% |  | 2017-09-15 | 2017-10-12 |  |  | MH-Wtg [7.06 h] | 3,177 | 3,177 | 003 |
| 109421.4 |  | Enq. floating & receipt of offers for PFA lined pumps | 15d | 2017-08-09 A | 2017-08-23 A | 100411.4 | 100% |  | 2017-09-08 | 2017-09-28 |  |  |  |  |  | 003 |
| 109420.6 |  | Enq. floating & receipt of offers for Mist separator | 20d | 2017-08-10 A | 2017-09-29 A | 100410.6 | 100% |  | 2017-09-08 | 2017-10-05 |  |  |  |  |  | 001 |
| 109421.2 |  | Enq. floating & receipt of offers for Packing/Internals (By DFPCL) | 20d | 2017-08-16 A | 2017-08-16 A | 100411.2 | 100% |  | 2017-11-24 | 2017-12-21 |  |  |  |  |  | 002 |
| 109280 |  | Enq. floating & receipt of offers for Metering pumps | 20d | 2017-08-23 A | 2017-09-15 A | 100270 | 100% |  | 2017-10-06 | 2017-11-02 |  |  | MH-Wtg [5.65 h] | 2,543 | 2,543 | 003 |
| 109421.9.1 |  | Enq. floating & receipt of offers for Platinum filter (Internals) | 20d | 2017-08-24 A | 2017-10-27 A | 100411.9.1 | 100% |  | 2017-09-13 | 2017-10-10 |  |  |  |  |  | 001 |
| 109420.8 |  | Enq. floating & receipt of offers for Vacuum jet | 20d | 2017-08-28 A | 2017-09-20 A | 100410.8 | 100% |  | 2017-09-08 | 2017-10-05 |  |  |  |  |  | 001 |
| 109421.8 |  | Enq. floating & receipt of offers for Lift (CNA) | 20d | 2017-08-29 A | 2017-09-19 A | 100411.8 | 100% |  | 2017-09-15 | 2017-10-12 |  |  |  |  |  | 002 |
| 109290 |  | Enq. floating & receipt of offers for Extended shaft pumps | 20d | 2017-09-01 A | 2017-09-26 A | 100280 | 100% |  | 2017-09-15 | 2017-10-12 |  |  | MH-Wtg [4 h] | 1,800 | 1,800 | 003 |
| 109380 |  | Enq. floating & receipt of offers for Desuperheater | 20d | 2017-09-02 A | 2017-09-25 A | 100370 | 100% |  | 2017-09-15 | 2017-10-12 |  |  | MH-Wtg [1 h] | 450 | 450 | 003 |
| 109421.3 |  | Enq. floating & receipt of offers for Surface condenser pump | 15d | 2017-09-05 A | 2017-09-27 A | 100411.3 | 100% |  | 2017-09-08 | 2017-09-28 |  |  |  |  |  | 001 |
| 109220 |  | Enq. floating & receipt of offers for HVAC package | 20d | 2017-09-18 A | 2017-11-02 A | 100210 | 100% |  | 2017-09-15 | 2017-10-12 |  |  | MH-Wtg [4 h] | 1,800 | 1,800 | 003 |
| 109421.9.2 |  | Enq. floating & receipt of offers for Rotary vane pumps | 20d | 2017-09-19 A | 2017-10-06 A | 100411.9.2 | 100% |  | 2017-09-19 | 2017-10-16 |  |  |  |  |  | 003 |
| 109421.9.3 |  | Enq. floating & receipt of offers for Ammonia transfer pumps | 20d | 2017-09-22 A | 2017-10-30 A | 100411.9.3 | 100% |  | 2017-09-19 | 2017-10-16 |  |  |  |  |  | 003 |
| 109350 |  | Enq. floating & receipt of offers for Non-metallic tanks | 20d | 2017-09-29 A | 2017-11-03 A | 100340 | 100% |  | 2017-09-25 | 2017-10-20 |  |  | MH-Wtg [0.85 h] | 383 | 383 | 003 |
| 109360 |  | Enq. floating & receipt of offers for Safety shower/Eye wash | 20d | 2017-09-29 A | 2017-11-03 A | 100350 | 100% |  | 2017-09-25 | 2017-10-20 |  |  | MH-Wtg [0.85 h] | 383 | 383 | 001 |
| 109370 |  | Enq. floating & receipt of offers for Loading arms | 20d | 2017-09-29 A | 2017-11-24 A | 100360 | 100% |  | 2017-09-25 | 2017-10-20 |  |  | MH-Wtg [1.41 h] | 635 | 635 | 003 |
| 109421.5 |  | Enq. floating & receipt of offers for Lube oil pumps | 20d | 2017-10-03 A | 2017-11-02 A | 100411.5 | 100% |  | 2017-09-25 | 2017-10-20 |  |  |  |  |  | 001 |
| 109421.6 |  | Enq. floating & receipt of offers for Lube oil filters | 20d | 2017-10-05 A | 2017-12-15 A | 100411.6 | 100% |  | 2017-10-02 | 2017-10-27 |  |  |  |  |  | 001 |
| 109421.7 |  | Enq. floating & receipt of offers for Inlet air silencer (Deleted) | 20d | 2017-10-05 A | 2017-10-05 A | 100411.7 | 100% |  | 2017-10-02 | 2017-10-27 |  |  |  |  |  | 001 |
| 109420.5 |  | Enq. floating & receipt of offers for Mixer | 20d | 2017-10-06 A | 2017-10-24 A | 100410.5 | 100% |  | 2017-10-02 | 2017-10-27 |  |  |  |  |  | 001 |
| 109420 |  | Enq. floating & receipt of offers for EOT Cranes | 20d | 2017-10-07 A | 2017-11-14 A | 100410 | 100% |  | 2017-10-02 | 2017-10-27 |  |  | MH-Wtg [1.41 h] | 635 | 635 | 003 |
| 109421.9 |  | Enq. floating & receipt of offers for Chemical skids | 20d | 2017-10-10 A | 2017-12-07 A | 100411.9 | 100% |  | 2017-10-02 | 2017-10-27 |  |  |  |  |  | 001 |
| 109421.9.5 |  | Enq. floating & receipt of offers Condensate transfer pumps | 20d | 2017-10-10 A | 2017-11-20 A | 100411.9.5 | 100% |  | 2017-10-02 | 2017-10-27 |  |  |  |  |  | 003 |
| 109421.9.4 |  | Enq. floating & receipt of offers for Silica gel | 15d | 2017-11-15 A | 2017-12-05 A | 100411.9.4 | 100% |  | 2017-11-01 | 2017-11-21 |  | start on or after 2017-10-05 |  |  |  | 003 |
| 109421.9.6 |  | Enq. floating & receipt of offers Ammonia effluent transfer pumps (Mobile) | 15d | 2017-11-18 A | 2017-12-18 A | 100411.9.6 | 100% |  | 2017-11-13 | 2017-12-01 |  |  |  |  |  | 003 |
| A126980 |  | Enquiry floating and receipt of offers for Pressure vacuum relief valve | 1d | 2018-03-01 A | 2018-03-13 A |  | 100% |  | 2018-03-01 | 2018-03-01 |  |  |  |  |  | 001 |
| A126990 |  | Enquiry floating and receipt of offers for PRDS | 1d | 2018-03-12 A | 2018-04-27 A |  | 100% |  | 2018-03-01 | 2018-03-01 |  |  |  |  |  | 003 |
| 109252 |  | Enq. floating & receipt of offers for API pumps- Offsites & Utilities (Deleted) | 20d | 2018-08-01 | 2018-08-28 |  |  |  |  |  | 52163.9d |  | MH-Wtg |  |  | 003 |
| 109340 |  | Enq. floating & receipt of offers for Plate type exchangers (Deleted) | 20d | 2018-08-01 | 2018-08-28 |  |  |  |  |  | 52163.9d |  | MH-Wtg |  |  | 003 |
| 109390 |  | Enq. floating & receipt of offers for Flame arrestors (Deleted) | 20d | 2018-08-01 | 2018-08-28 |  |  |  |  |  | 52163.9d |  | MH-Wtg |  |  | 003 |
| 109400 |  | Enq. floating & receipt of offers for Breather valves (Deleted) | 20d | 2018-08-01 | 2018-08-28 |  |  |  |  |  | 52163.9d |  | MH-Wtg |  |  | 003 |

Notes:
- 109250: Explanation: Consdered deleted in progress report. However kept for / activity relations

| ID | WBS | Activity | Duration | Start | Finish | Predecessors | Complete | Planned start | Planned finish | Total float | Constraint | Resources | Cost | Actual cost | UNIT DESCRIPTION |
| --- | --- | --- | --- | --- | --- | --- | --- | --- | --- | --- | --- | --- | --- | --- | --- |
| 109410 |  | Enq. floating & receipt of offers for NG station (Deleted) | 20d | 2018-08-01 | 2018-08-28 |  |  |  |  | 52163.9d |  | MH-Wtg |  |  | 003 |
| 109420.9 |  | Enq. floating & receipt of offers for Roof vent fan (Deleted) | 20d | 2018-08-01 | 2018-08-28 |  |  |  |  | 52163.9d |  |  |  |  | 001 |
|  | 3 | **Bid Evaluation & Technical Recomendation** |  | 2017-03-14 | 2018-08-28 |  |  |  |  |  |  |  |  |  |  |
| 109860 |  | Bid evaluation & TR for Agitators | 20d | 2017-03-14 A | 2017-03-14 A | 109300 | 100% | 2017-06-19 | 2017-07-14 |  |  | MH-Wtg [3 h] | 1,350 | 1,350 | 002 |
| 109750 |  | Bid evaluation & TR for Boiler package (Deleted) | 20d | 2017-04-11 A | 2017-04-11 A |  | 100% | 2017-04-03 | 2017-04-28 |  |  | MH-Wtg |  |  | 003 |
| 109890 |  | Bid evaluation & TR for Chiller unit | 15d | 2017-04-11 A | 2017-04-11 A | 109330 | 100% | 2017-05-01 | 2017-05-19 |  |  | MH-Wtg [20.34 h] | 9,153 | 9,153 | 003 |
| 109720 |  | Bid evaluation & TR for Raw water treatment plant | 20d | 2017-04-19 A | 2017-05-02 A | 109160 | 100% | 2017-04-03 | 2017-04-28 |  |  | MH-Wtg [54.24 h] | 24,408 | 24,408 | 003 |
| 109730 |  | Bid evaluation & TR for Cooling tower package | 20d | 2017-05-04 A | 2017-05-10 A | 109170 | 100% | 2017-05-01 | 2017-05-26 |  |  | MH-Wtg [54.24 h] | 24,408 | 24,408 | 003 |
| 109740 |  | Bid evaluation & TR for DM plant | 20d | 2017-05-18 A | 2017-06-02 A | 109180 | 100% | 2017-05-01 | 2017-05-26 |  |  | MH-Wtg [20.34 h] | 9,153 | 9,153 | 003 |
| 109710 |  | Bid evaluation & TR for Fire fighting package | 20d | 2017-05-19 A | 2017-05-19 A | 109150 | 100% | 2017-05-01 | 2017-05-26 |  |  | MH-Wtg [67.8 h] | 30,510 | 30,510 | 003 |
| 109980.1 |  | Bid evaluation & TR for Ejectors | 20d | 2017-05-31 A | 2017-08-19 A | 109420.1 | 100% | 2017-09-01 | 2017-09-28 |  |  | MH-Wtg [16.95 h] | 7,628 | 7,628 | 001 |
| 109811 |  | Bid evaluation & TR for API pumps- CNA Plants | 20d | 2017-06-13 A | 2017-06-13 A | 109251 | 100% | 2017-06-01 | 2017-06-28 |  |  | MH-Wtg [12 h] | 5,400 | 5,400 | 002 |
| 109980.4 |  | Bid evaluation & TR for Filters | 20d | 2017-06-19 A | 2017-09-29 A | 109420.4 | 100% | 2017-09-29 | 2017-10-26 |  |  |  |  |  | 001 |
| 109820 |  | Bid evaluation & TR for Non-API pumps | 20d | 2017-07-03 A | 2017-08-11 A | 109260 | 100% | 2017-09-01 | 2017-09-28 |  |  | MH-Wtg [85 h] | 38,250 | 38,250 | 003 |
| 109870 |  | Bid evaluation & TR for Air compressor | 15d | 2017-07-05 A | 2017-07-05 A | 109310 | 100% | 2017-08-01 | 2017-08-22 |  |  | MH-Wtg [20.34 h] | 9,153 | 9,153 | 003 |
| 109880 |  | Bid evaluation & TR for Air drier | 15d | 2017-07-05 A | 2017-07-05 A | 109320 | 100% | 2017-08-01 | 2017-08-22 |  |  | MH-Wtg [13.56 h] | 6,102 | 6,102 | 003 |
| 109830 |  | Bid evaluation & TR for Cooling water pumps | 20d | 2017-07-20 A | 2017-08-24 A | 109270 | 100% | 2017-09-29 | 2017-10-26 |  |  | MH-Wtg [33.9 h] | 15,255 | 15,255 | 003 |
| 109810 |  | Bid evaluation & TR for Non-API pumps- WNA Plant | 20d | 2017-07-24 A | 2017-08-11 A | 109250 | 100% | 2017-08-01 | 2017-08-29 |  |  | MH-Wtg [25 h] | 11,250 | 11,250 | 001 |
| 109980.7 |  | Bid evaluation & TR for Deareator | 20d | 2017-07-25 A | 2017-07-25 A | 109420.7 | 100% | 2017-08-01 | 2017-08-29 |  |  |  |  |  | 001 |
| 109790 |  | Bid evaluation & TR for Side stream filter package | 20d | 2017-07-27 A | 2017-08-31 A | 109230 | 100% | 2017-09-01 | 2017-09-28 |  |  | MH-Wtg [10.17 h] | 4,577 | 4,577 | 003 |
| 109981 |  | Bid evaluation & TR for De-alkalizer | 20d | 2017-07-27 A | 2017-08-31 A | 109421 | 100% | 2017-09-01 | 2017-09-28 |  |  |  |  |  | 003 |
| 109980.3 |  | Bid evaluation & TR for Inlet air filter | 20d | 2017-07-28 A | 2017-08-02 A | 109420.3 | 100% | 2017-08-30 | 2017-09-26 |  |  |  |  |  | 001 |
| 109770 |  | Bid evaluation & TR for ETP package | 20d | 2017-08-04 A | 2017-09-28 A | 109210 | 100% | 2017-09-15 | 2017-10-12 |  |  | MH-Wtg [54.24 h] | 24,408 | 24,408 | 003 |
| 109800 |  | Bid evaluation & TR for Chlorination package | 20d | 2017-08-18 A | 2017-09-29 A | 109240 | 100% | 2017-09-29 | 2017-10-26 |  |  | MH-Wtg [3 h] | 1,350 | 1,350 | 003 |
| 109981.4 |  | Bid evaluation & TR for PFA lined pumps | 15d | 2017-08-23 A | 2017-09-18 A | 109421.4 | 100% | 2017-09-29 | 2017-10-19 |  |  |  |  |  | 003 |
| 109980.2 |  | Bid evaluation & TR for Ammonia Scrubber | 20d | 2017-08-28 A | 2017-12-06 A | 109420.2 | 100% | 2017-10-13 | 2017-11-09 |  |  | MH-Wtg [16.95 h] | 7,628 | 7,628 | 003 |
| 109840 |  | Bid evaluation & TR for Metering pumps | 20d | 2017-09-15 A | 2017-09-27 A | 109280 | 100% | 2017-11-03 | 2017-11-30 |  |  | MH-Wtg [13.56 h] | 6,102 | 6,102 | 003 |
| 109981.8 |  | Bid evaluation & TR for Lift (CNA) | 20d | 2017-09-19 A | 2017-11-17 A | 109421.8 | 100% | 2017-12-05 | 2018-01-01 |  | finish on or after 2018-01-01 |  |  |  | 002 |
| 109980.8 |  | Bid evaluation & TR for Vacuum jet | 20d | 2017-09-20 A | 2017-10-31 A | 109420.8 | 100% | 2017-10-06 | 2017-11-02 |  |  |  |  |  | 001 |
| 109981.1 |  | Bid evaluation & TR for Ammonia compressor | 20d | 2017-09-20 A | 2017-09-28 A | 109421.1 | 100% | 2017-10-17 | 2017-11-13 |  |  |  |  |  | 003 |
| 109940 |  | Bid evaluation & TR for Desuperheater | 20d | 2017-09-25 A | 2017-10-31 A | 109380 | 100% | 2017-10-02 | 2017-10-27 |  |  | MH-Wtg [3 h] | 1,350 | 1,350 | 003 |
| 109850 |  | Bid evaluation & TR for Extended shaft pumps | 20d | 2017-09-26 A | 2017-10-31 A | 109290 | 100% | 2017-10-02 | 2017-10-27 |  |  | MH-Wtg [10 h] | 4,500 | 4,500 | 003 |
| 109981.9.3 |  | Bid evaluation & TR for Ammonia transfer pumps | 0d | 2017-09-26 A | 2017-10-30 A | 109421.9.3 | 100% | 2017-11-27 | 2017-11-27 |  |  |  |  |  | 003 |
| 109980.6 |  | Bid evaluation & TR for Mist separator | 15d | 2017-10-06 A | 2017-10-09 A | 109420.6 | 100% | 2017-10-09 | 2017-10-27 |  |  |  |  |  | 001 |
| 109981.9.2 |  | Bid evaluation & TR for Rotary vane pumps | 20d | 2017-10-06 A | 2017-10-18 A | 109421.9.2 | 100% | 2017-10-16 | 2017-11-10 |  |  |  |  |  | 003 |
| 109981.3 |  | Bid evaluation & TR for Surface condenser pump | 15d | 2017-10-13 A | 2017-10-13 A | 109421.3 | 100% | 2017-10-16 | 2017-11-03 |  |  |  |  |  | 001 |
| 109980.5 |  | Bid evaluation & TR for Mixer | 15d | 2017-10-25 A | 2017-12-01 A | 109420.5 | 100% | 2017-11-08 | 2017-11-28 |  |  |  |  |  | 001 |
| 109981.9.1 |  | Bid evaluation & TR for Platinum filter (Internals) | 20d | 2017-10-27 A | 2017-10-27 A | 109421.9.1 | 100% | 2017-10-09 | 2017-11-03 |  |  |  |  |  | 001 |
| 109981.5 |  | Bid evaluation & TR for Lube oil pumps | 20d | 2017-11-02 A | 2017-11-03 A | 109421.5 | 100% | 2017-10-30 | 2017-11-24 |  |  |  |  |  | 001 |
| 109780 |  | Bid evaluation & TR for HVAC package | 20d | 2017-11-03 A | 2017-11-22 A | 109220 | 100% | 2017-10-16 | 2017-11-10 |  |  | MH-Wtg [10 h] | 4,500 | 4,500 | 003 |
| 109910 |  | Bid evaluation & TR for Non-metallic tanks | 15d | 2017-11-03 A | 2017-11-04 A | 109350 | 100% | 2018-01-10 | 2018-01-31 |  | finish on or after 2018-01-31 | MH-Wtg [1 h] | 450 | 450 | 003 |
| 109920 |  | Bid evaluation & TR for Safety shower/Eye wash | 15d | 2017-11-03 A | 2017-11-04 A | 109360 | 100% | 2017-11-20 | 2017-12-11 |  | finish on or after 2017-12-10 | MH-Wtg [1 h] | 450 | 450 | 001 |
| 109980 |  | Bid evaluation & TR for EOT Cranes | 10d | 2017-11-14 A | 2018-01-03 A | 109420 | 100% | 2018-01-01 | 2018-01-12 |  |  | MH-Wtg [3.39 h] | 1,526 | 1,526 | 003 |
| 109981.9.5 |  | Bid evaluation & TR for Condensate transfer pumps | 20d | 2017-11-20 A | 2017-11-20 A | 109421.9.5 | 100% | 2017-11-15 | 2017-12-12 |  |  |  |  |  | 003 |
| 109981.9.4 |  | Bid evaluation & TR for Silica gel | 10d | 2017-12-06 A | 2017-12-29 A | 109421.9.4 | 100% | 2018-01-01 | 2018-01-12 |  | start on or after 2017-01-31 |  |  |  | 003 |
| 109981.9 |  | Bid evaluation & TR for Chemical skids | 20d | 2017-12-07 A | 2017-12-27 A | 109421.9 | 100% | 2018-01-01 | 2018-01-29 |  |  |  |  |  | 001 |
| 109981.6 |  | Bid evaluation & TR for Lube oil filters | 20d | 2017-12-15 A | 2017-12-15 A | 109421.6 | 100% | 2017-12-08 | 2018-01-04 |  |  |  |  |  | 001 |
| 109981.9.6 |  | Bid evaluation & TR for Ammonia effluent transfer pumps (Mobile) | 10d | 2017-12-19 A | 2017-12-29 A | 109421.9.6 | 100% | 2018-01-08 | 2018-01-19 |  |  |  |  |  | 001 |
| 109930 |  | Bid evaluation & TR for Loading arms | 10d | 2017-12-27 A | 2017-12-27 A | 109370 | 100% | 2018-01-01 | 2018-01-12 |  |  | MH-Wtg [2 h] | 900 | 900 | 003 |
| A127080 |  | Bid evaluation & TR for Pressure vacuum relief valve | 1d | 2018-03-31 A | 2018-03-31 A |  | 100% | 2018-03-01 | 2018-03-01 |  |  |  |  |  | 001 |
| A127090 |  | Bid evaluation & TR for PRDS | 1d | 2018-04-27 A | 2018-04-27 A |  | 100% | 2018-05-01 | 2018-05-01 |  |  |  |  |  | 003 |
| 109812 |  | Bid evaluation & TR for API pumps- Offsites & Utilities (Deleted) | 20d | 2018-08-01 | 2018-08-28 |  |  |  |  | 52163.9d |  | MH-Wtg |  |  | 003 |
| 109900 |  | Bid evaluation & TR for Plate type exchangers (Deleted) | 20d | 2018-08-01 | 2018-08-28 |  |  |  |  | 52163.9d |  | MH-Wtg |  |  | 003 |
| 109950 |  | Bid evaluation & TR for Flame arrestors (Deleted) | 15d | 2018-08-01 | 2018-08-21 |  |  |  |  | 52168.9d |  | MH-Wtg |  |  | 003 |
| 109960 |  | Bid evaluation & TR for Breather valves (Deleted) | 15d | 2018-08-01 | 2018-08-21 |  |  |  |  | 52168.9d |  | MH-Wtg |  |  | 003 |
| 109970 |  | Bid evaluation & TR for NG station (Deleted) | 15d | 2018-08-01 | 2018-08-21 |  |  |  |  | 52168.9d |  | MH-Wtg |  |  | 003 |
| 109980.9 |  | Bid evaluation & TR for Roof vent fan (Deleted) | 15d | 2018-08-01 | 2018-08-21 |  |  |  |  | 52168.9d |  |  |  |  | 001 |
| 109981.2 |  | Bid evaluation & TR for Packing/Internals (Deleted) | 0d | 2018-08-01 | 2018-08-01 | 109421.2 |  |  |  | 52183.9d |  |  |  |  | 002 |
| 109981.7 |  | Bid evaluation & TR for Inlet air silencer (Deleted) | 15d | 2018-08-01 | 2018-08-21 |  |  |  |  | 52168.9d |  |  |  |  | 001 |

| ID | WBS | Activity | Duration | Start | Finish | Predecessors | Complete | Planned start | Planned finish | Total float | Resources | Cost | Actual cost | UNIT DESCRIPTION |
| --- | --- | --- | --- | --- | --- | --- | --- | --- | --- | --- | --- | --- | --- | --- |
|  | 4 | **Technical Order Specifications** |  | 2017-05-10 | 2018-08-28 |  |  |  |  |  |  |  |  |  |
| 110140 |  | TOS for Agitators | 10d | 2017-05-10 A | 2017-05-10 A | 112980 | 100% | 2017-08-30 | 2017-09-12 |  | MH-Wtg [1 h] | 450 | 450 | 002 |
| 110170 |  | TOS for Chiller unit | 10d | 2017-07-14 A | 2017-07-14 A | 113010 | 100% | 2017-08-01 | 2017-08-14 |  | MH-Wtg [5.08 h] | 2,286 | 2,286 | 003 |
| 110000 |  | TOS for Raw water treatment plant | 10d | 2017-07-19 A | 2017-07-19 A | 112840 | 100% | 2017-08-01 | 2017-08-14 |  | MH-Wtg [13.56 h] | 6,102 | 6,102 | 003 |
| 110020 |  | TOS for DM plant | 10d | 2017-07-19 A | 2017-07-19 A | 112860 | 100% | 2017-08-01 | 2017-08-14 |  | MH-Wtg [5.08 h] | 2,286 | 2,286 | 003 |
| 110010 |  | TOS for Cooling tower package | 10d | 2017-07-27 A | 2017-07-27 A | 112850 | 100% | 2017-08-01 | 2017-08-14 |  | MH-Wtg [13.56 h] | 6,102 | 6,102 | 003 |
| 109990 |  | TOS for Fire fighting package | 10d | 2017-09-02 A | 2017-09-02 A | 112830 | 100% | 2017-09-01 | 2017-09-14 |  | MH-Wtg [16.95 h] | 7,628 | 7,628 | 003 |
| 110150 |  | TOS for Air compressor | 10d | 2017-09-08 A | 2017-09-08 A | 112990 | 100% | 2017-09-01 | 2017-09-14 |  | MH-Wtg [5.08 h] | 2,286 | 2,286 | 003 |
| 110160 |  | TOS for Air drier | 10d | 2017-09-08 A | 2017-09-08 A | 113000 | 100% | 2017-09-01 | 2017-09-14 |  | MH-Wtg [3.39 h] | 1,526 | 1,526 | 003 |
| 110090 |  | TOS for Non-API pumps- WNA Plant | 10d | 2017-09-21 A | 2017-10-18 A | 112930 | 100% | 2017-10-02 | 2017-10-13 |  | MH-Wtg [5 h] | 2,250 | 2,250 | 001 |
| 110110 |  | TOS for Cooling water pumps | 10d | 2017-09-21 A | 2017-10-12 A | 112950 | 100% | 2017-10-02 | 2017-10-13 |  | MH-Wtg [8.47 h] | 3,812 | 3,812 | 003 |
| 110260.7 |  | TOS for Deareator | 10d | 2017-09-29 A | 2017-09-29 A | 113100.7 | 100% | 2017-09-25 | 2017-10-06 |  |  |  |  | 001 |
| 110260.3 |  | TOS for Inlet air filter | 10d | 2017-10-06 A | 2017-10-06 A | 113100.3 | 100% | 2017-10-02 | 2017-10-13 |  |  |  |  | 001 |
| 110100 |  | TOS for Non-API pumps | 10d | 2017-10-10 A | 2017-10-10 A | 112940 | 100% | 2017-10-02 | 2017-10-13 |  | MH-Wtg [18 h] | 8,100 | 8,100 | 003 |
| 110261.4 |  | TOS for PFA lined pumps | 10d | 2017-10-12 A | 2017-10-18 A | 113101.4 | 100% | 2017-10-30 | 2017-11-10 |  |  |  |  | 003 |
| 110091 |  | TOS for API pumps- CNA Plants | 10d | 2017-10-13 A | 2017-10-13 A | 112931 | 100% | 2017-10-16 | 2017-10-27 |  | MH-Wtg [3.39 h] | 1,526 | 1,526 | 002 |
| 110260.6 |  | TOS for Mist separator | 10d | 2017-10-27 A | 2017-10-31 A | 113100.6 | 100% | 2017-10-30 | 2017-11-10 |  |  |  |  | 001 |
| 110070 |  | TOS for Side stream filter package | 10d | 2017-10-31 A | 2017-11-10 A | 112910 | 100% | 2017-11-01 | 2017-11-14 |  | MH-Wtg [2.54 h] | 1,143 | 1,143 | 003 |
| 110261.3 |  | TOS for Surface condenser pump | 10d | 2017-11-14 A | 2017-12-18 A | 113101.3 | 100% | 2017-12-01 | 2017-12-14 |  |  |  |  | 001 |
| 110261.1 |  | TOS for Ammonia compressor | 10d | 2017-11-25 A | 2017-12-20 A | 113101.1 | 100% | 2017-12-01 | 2017-12-14 |  |  |  |  | 003 |
| 110080 |  | TOS for Chlorination package | 10d | 2017-12-01 A | 2017-12-11 A | 112910.1 | 100% | 2017-12-29 | 2018-01-11 |  | MH-Wtg [1 h] | 450 | 450 | 003 |
| 110261.5 |  | TOS for Lube oil pumps | 10d | 2017-12-15 A | 2017-12-21 A | 113101.5 | 100% | 2017-12-01 | 2017-12-14 |  |  |  |  | 001 |
| 110261.9.1 |  | TOS for Platinum filter (Internals) | 10d | 2017-12-15 A | 2017-12-19 A | 113101.9.1 | 100% | 2017-12-29 | 2018-01-11 |  |  |  |  | 001 |
| 110260.1 |  | TOS for Ejectors | 10d | 2017-12-18 A | 2017-12-18 A | 113100.1 | 100% | 2017-12-01 | 2017-12-14 |  | MH-Wtg [4.24 h] | 1,908 | 1,908 | 001 |
| 110050 |  | TOS for ETP package | 10d | 2017-12-20 A | 2017-12-25 A | 112890 | 100% | 2018-01-01 | 2018-01-12 |  | MH-Wtg [13.56 h] | 6,102 | 6,102 | 003 |
| 110220 |  | TOS for Desuperheater | 10d | 2017-12-20 A | 2018-01-02 A | 113060 | 100% | 2018-02-01 | 2018-02-14 |  | MH-Wtg [1 h] | 450 | 450 | 003 |
| 110200 |  | TOS for Safety shower/Eye wash | 10d | 2017-12-21 A | 2017-12-25 A | 113040 | 100% | 2017-12-01 | 2017-12-14 |  | MH-Wtg [1 h] | 450 | 450 | 001 |
| 110261.9.2 |  | TOS for Rotary vane pumps | 10d | 2017-12-22 A | 2018-01-09 A | 113101.9.2 | 100% | 2018-02-01 | 2018-02-14 |  |  |  |  | 003 |
| 110260.8 |  | TOS for Vacuum jet | 10d | 2017-12-29 A | 2018-01-12 A | 113100.8 | 100% | 2018-02-01 | 2018-02-14 |  |  |  |  | 001 |
| 110261.9.3 |  | TOS for Ammonia transfer pumps | 10d | 2017-12-29 A | 2018-01-09 A | 113101.9.3 | 100% | 2018-02-01 | 2018-02-14 |  |  |  |  | 003 |
| 110260.4 |  | TOS for Filters | 10d | 2018-01-01 A | 2018-01-02 A | 113100.4 | 100% | 2018-01-01 | 2018-01-12 |  |  |  |  | 001 |
| 110261.8 |  | TOS for Lift (CNA) | 10d | 2018-01-05 A | 2018-01-24 A | 113101.8 | 100% | 2018-02-01 | 2018-02-14 |  |  |  |  | 002 |
| 110060 |  | TOS for HVAC package | 10d | 2018-01-09 A | 2018-02-01 A | 112900 | 100% | 2018-02-01 | 2018-02-14 |  | MH-Wtg [3 h] | 1,350 | 1,350 | 003 |
| 110261.9.5 |  | TOS for Condensate transfer pumps | 10d | 2018-01-10 A | 2018-02-23 A | 113101.9.5 | 100% | 2018-02-01 | 2018-02-14 |  |  |  |  | 003 |
| 110260.5 |  | TOS for Mixer | 10d | 2018-01-17 A | 2018-01-29 A | 113100.5 | 100% | 2018-02-01 | 2018-02-14 |  |  |  |  | 001 |
| 110120 |  | TOS for Metering pumps | 10d | 2018-01-19 A | 2018-01-29 A | 112960 | 100% | 2018-02-01 | 2018-02-14 |  | MH-Wtg [3.39 h] | 1,526 | 1,526 | 003 |
| 110130 |  | TOS for Extended shaft pumps | 10d | 2018-01-25 A | 2018-02-05 A | 112970 | 100% | 2018-02-01 | 2018-02-14 |  | MH-Wtg [3.39 h] | 1,526 | 1,526 | 003 |
| 110260.11 |  | TOS for Ammonia scrubber | 10d | 2018-01-31 A | 2018-02-07 A | 113100.2 | 100% | 2018-02-01 | 2018-02-14 |  | MH-Wtg [4.24 h] | 1,908 | 1,908 | 003 |
| 110261.9 |  | TOS for Chemical skids | 10d | 2018-02-12 A | 2018-02-23 A | 113101.9 | 100% | 2018-03-01 | 2018-03-14 |  |  |  |  | 001 |
| 110210 |  | TOS for Loading arms | 10d | 2018-02-13 A | 2018-02-23 A | 113050 | 100% | 2018-02-22 | 2018-03-07 |  | MH-Wtg [0.85 h] | 383 | 383 | 003 |
| 110260 |  | TOS for EOT Cranes | 10d | 2018-02-20 A | 2018-03-19 A | 113100 | 100% | 2018-03-01 | 2018-03-14 |  | MH-Wtg [0.85 h] | 383 | 383 | 003 |
| 110261.9.4 |  | TOS for Silica gel | 10d | 2018-02-23 A | 2018-02-27 A | 113101.9.4 | 100% | 2018-03-01 | 2018-03-14 |  |  |  |  | 003 |
| 110261.6 |  | TOS for Lube oil filters | 10d | 2018-02-28 A | 2018-03-13 A | 113101.6 | 100% | 2018-03-01 | 2018-03-14 |  |  |  |  | 001 |
| 110261.9.6 |  | TOS for Ammonia effluent transfer pumps (Mobile) | 10d | 2018-06-12 A | 2018-06-12 A | 113101.9.6 | 100% | 2018-06-29 | 2018-07-12 |  |  |  |  | 003 |
| A127180 |  | TOS for Pressure vacuum relief valve | 1d | 2018-06-12 A | 2018-06-12 A |  | 100% | 2018-06-01 | 2018-06-01 |  |  |  |  | 001 |
| A127190 |  | TOS for PRDS | 1d | 2018-06-13 A | 2018-06-13 A |  | 100% | 2018-06-01 | 2018-06-01 |  |  |  |  | 003 |
| 110030 |  | TOS for Boiler package (Deleted) | 10d | 2018-08-01 | 2018-08-14 | 112870 |  |  |  | 52173.9d | MH-Wtg |  |  | 003 |
| 110092 |  | TOS for API pumps- Offsites & Utilities (Deleted) | 9d | 2018-08-01 | 2018-08-13 |  |  |  |  | 52174.9d | MH-Wtg |  |  | 003 |
| 110180 |  | TOS for Plate type exchangers (Deleted) | 9d | 2018-08-01 | 2018-08-13 |  |  |  |  | 52174.9d | MH-Wtg |  |  | 003 |
| 110230 |  | TOS for Flame arrestors (Deleted) | 9d | 2018-08-01 | 2018-08-13 |  |  |  |  | 52174.9d | MH-Wtg |  |  | 003 |
| 110240 |  | TOS for Breather valves (Deleted) | 10d | 2018-08-01 | 2018-08-14 |  |  |  |  | 52173.9d | MH-Wtg |  |  | 003 |
| 110250 |  | TOS for NG station (Deleted) | 9d | 2018-08-01 | 2018-08-13 |  |  |  |  | 52174.9d | MH-Wtg |  |  | 003 |
| 110260.9 |  | TOS for Roof vent fan (Deleted) | 10d | 2018-08-01 | 2018-08-14 |  |  |  |  | 52173.9d |  |  |  | 001 |
| 110261 |  | TOS for De-alkalizer (Deleted) | 10d | 2018-08-01 | 2018-08-14 |  |  |  |  | 52173.9d |  |  |  | 003 |
| 110261.2 |  | TOS for Packing/Internals (Deleted) | 10d | 2018-08-01 | 2018-08-14 | 113101.2 |  |  |  | 52173.9d |  |  |  | 002 |
| 110261.7 |  | TOS for Inlet air silencer (Deleted) | 10d | 2018-08-01 | 2018-08-14 |  |  |  |  | 52173.9d |  |  |  | 001 |
| 110190 |  | TOS for Non-metallic tanks (Deleted) | 10d | 2018-08-15 | 2018-08-28 | 113030 |  |  |  | 52163.9d | MH-Wtg |  |  | 003 |

| ID | WBS | Activity | Duration | Start | Finish | Predecessors | Complete | Planned start | Planned finish | Constraint | Resources | Cost | Actual cost | UNIT DESCRIPTION |
| --- | --- | --- | --- | --- | --- | --- | --- | --- | --- | --- | --- | --- | --- | --- |
|  | 2 | **Civil & Structural** |  | 2016-12-12 | 2018-03-09 |  |  |  |  |  |  |  |  |  |
|  | 1 | **Floating of Enquiry & Receipt of Offers** |  | 2016-12-12 | 2017-08-18 |  |  |  |  |  |  |  |  |  |
| 110271 |  | Tender floating & receipt of offers for Boundary wall | 37d | 2016-12-12 A | 2017-01-31 A | 103251 | 100% | 2017-07-12 | 2017-08-31 | start on 2016-12-12 | MH-Wtg [10.78 h] | 4,851 | 4,851 | 003 |
| 110272 |  | Tender floating & receipt of offers for Pre-fabricated structure | 25d | 2017-01-03 A | 2017-02-16 A | 103252 | 100% | 2017-03-06 | 2017-04-07 | start on 2017-01-03 | MH-Wtg [5.39 h] | 2,426 | 2,426 | 003 |
| 110270 |  | Tender floating & receipt of offers for Piling work | 15d | 2017-02-13 A | 2017-03-09 A | 103250 | 100% | 2017-09-29 | 2017-10-19 |  | MH-Wtg [26.96 h] | 12,132 | 12,132 | 003 |
| 110272.1 |  | Tender floating & receipt of offers for Civil & structural work (Part-I) | 15d | 2017-03-23 A | 2017-04-13 A | 103252.1 | 100% | 2017-05-15 | 2017-06-02 |  | MH-Wtg [16.17 h] | 7,277 | 7,277 | 003 |
| 110281 |  | Tender floating & receipt of offers for Roads & drains (Covered in Part I & II) | 15d | 2017-03-23 A | 2017-08-18 A | 103261 | 100% | 2017-04-27 | 2017-05-17 |  | MH-Wtg [16.17 h] | 7,277 | 7,277 | 003 |
| 110280 |  | Tender floating & receipt of offers for Civil & structural work (Part-II) | 15d | 2017-08-02 A | 2017-08-18 A | 103260 | 100% | 2017-09-01 | 2017-09-21 |  | MH-Wtg [21.57 h] | 9,707 | 9,707 | 003 |
| 110290 |  | Tender floating & receipt of offers for Architectural work (Covered in Part I & II) | 20d | 2017-08-02 A | 2017-08-18 A | 103270 | 100% | 2017-09-01 | 2017-09-28 |  | MH-Wtg [5.39 h] | 2,426 | 2,426 | 003 |
| 110300 |  | Tender floating & receipt of offers for Acid resistant tiling (Covered in Part-II) | 20d | 2017-08-02 A | 2017-08-18 A | 103280 | 100% | 2017-09-01 | 2017-09-28 |  | MH-Wtg [5.39 h] | 2,426 | 2,426 | 003 |
| 110310 |  | Tender floating & receipt of offers for Industrial painting (Covered in Part I & II) | 20d | 2017-08-02 A | 2017-08-18 A | 103290 | 100% | 2017-09-01 | 2017-09-28 |  | MH-Wtg [5.39 h] | 2,426 | 2,426 | 003 |
|  | 3 | **Bid Evaluation & Technical Recomendation** |  | 2017-01-31 | 2018-03-09 |  |  |  |  |  |  |  |  |  |
| 110371 |  | Bid evaluation & TR for Boundary wall | 1d | 2017-01-31 A | 2017-01-31 A | 110271 | 100% | 2017-09-01 | 2017-09-01 | start on 2017-01-31 | MH-Wtg [25.88 h] | 11,646 | 11,646 | 003 |
| 110372 |  | Bid evaluation & TR for Pre-fabricated structure | 10d | 2017-02-16 A | 2017-02-25 A | 110272 | 100% | 2017-04-10 | 2017-04-21 |  | MH-Wtg [12.94 h] | 5,823 | 5,823 | 003 |
| 110370 |  | Bid evaluation & TR for Piling work | 15d | 2017-03-15 A | 2017-03-15 A | 110270 | 100% | 2017-05-15 | 2017-06-02 |  | MH-Wtg [64.7 h] | 29,115 | 29,115 | 003 |
| 110372.1 |  | Bid evaluation & TR for Civil & structural work (Part-I) | 10d | 2017-04-19 A | 2017-04-19 A | 110272.1 | 100% | 2017-04-24 | 2017-05-05 |  | MH-Wtg [38.82 h] | 17,469 | 17,469 | 003 |
| 110381 |  | Bid evaluation & TR for Roads & drains (Covered in Part I & II) | 15d | 2017-04-19 A | 2017-08-24 A | 110281 | 100% | 2017-04-24 | 2017-05-12 |  | MH-Wtg [38.82 h] | 17,469 | 17,469 | 003 |
| 110380 |  | Bid evaluation & TR for Civil & structural work (part-II) | 15d | 2017-08-18 A | 2017-08-24 A | 110280 | 100% | 2017-09-22 | 2017-10-12 |  | MH-Wtg [51.76 h] | 23,292 | 23,292 | 003 |
| 110390 |  | Bid evaluation & TR for Architectural work (Covered in Part I & II) | 20d | 2017-08-18 A | 2017-08-24 A | 110290 | 100% | 2017-09-29 | 2017-10-26 |  | MH-Wtg [12.94 h] | 5,823 | 5,823 | 003 |
| 110400 |  | Bid evaluation & TR for Acid resistant tiling (Covered in Part-II) | 20d | 2017-08-18 A | 2017-08-24 A | 110300 | 100% | 2017-09-29 | 2017-10-26 |  | MH-Wtg [12.94 h] | 5,823 | 5,823 | 003 |
| 110410 |  | Bid evaluation & TR for Industrial painting (Covered in Part I & II) | 20d | 2017-08-18 A | 2017-08-24 A | 110310 | 100% | 2017-09-29 | 2017-10-26 |  | MH-Wtg [12.94 h] | 5,823 | 5,823 | 003 |
| 112920 |  | TR for Boiler precast chimney | 1d | 2017-12-05 A | 2017-12-18 A |  | 100% | 2017-12-01 | 2017-12-01 |  |  |  |  | 003 |
| A127280 |  | Bid evaluation & TR for water proofing | 1d | 2018-03-09 A | 2018-03-09 A |  | 100% | 2018-03-01 | 2018-03-01 |  |  |  |  | 003 |
|  | 4 | **Technical Order Specifications** |  | 2017-03-31 | 2017-12-29 |  |  |  |  |  |  |  |  |  |
| 110422 |  | TOS for Pre-fabricated structure | 10d | 2017-03-31 A | 2017-04-05 A | 113112 | 100% | 2017-04-17 | 2017-04-28 |  | MH-Wtg [3.23 h] | 1,454 | 1,454 | 003 |
| 110421 |  | TOS for Boundary wall | 10d | 2017-04-05 A | 2017-04-05 A | 113111 | 100% | 2017-04-03 | 2017-04-14 |  | MH-Wtg [6.47 h] | 2,912 | 2,912 | 003 |
| 110420 |  | TOS for Piling work | 10d | 2017-04-21 A | 2017-04-21 A | 113110 | 100% | 2017-04-03 | 2017-04-14 |  | MH-Wtg [16.17 h] | 7,277 | 7,277 | 003 |
| 110422.1 |  | TOS for Civil & structural work (Part-I) | 10d | 2017-05-12 A | 2017-10-31 A | 113112.1 | 100% | 2017-10-02 | 2017-10-13 |  | MH-Wtg [9.7 h] | 4,365 | 4,365 | 003 |
| 110430 |  | TOS for Civil & structural work (Part-II) | 10d | 2017-10-24 A | 2017-10-31 A | 113120 | 100% | 2017-10-16 | 2017-10-27 |  | MH-Wtg [12.94 h] | 5,823 | 5,823 | 003 |
| 110431 |  | TOS for Roads & drains (Covered in Part I & II) | 10d | 2017-10-24 A | 2017-10-31 A | 113121 | 100% | 2017-10-16 | 2017-10-27 |  | MH-Wtg [9.7 h] | 4,365 | 4,365 | 003 |
| 110440 |  | TOS for Architectural work (Covered in Part I & II) | 10d | 2017-10-24 A | 2017-10-31 A | 113130 | 100% | 2017-10-16 | 2017-10-27 |  | MH-Wtg [3.23 h] | 1,454 | 1,454 | 003 |
| 110450 |  | TOS for Acid resistant tiling (Covered in Part-II) | 10d | 2017-10-24 A | 2017-10-31 A | 113140 | 100% | 2017-10-16 | 2017-10-27 |  | MH-Wtg [3.23 h] | 1,454 | 1,454 | 003 |
| 110460 |  | TOS for Industrial painting (Covered in Part I & II) | 10d | 2017-10-24 A | 2017-10-31 A | 113150 | 100% | 2017-10-16 | 2017-10-27 |  | MH-Wtg [3.23 h] | 1,454 | 1,454 | 003 |
| 113620 |  | TOS for Boiler precast chimney (Not required) | 1d | 2017-12-29 A | 2017-12-29 A |  | 100% | 2018-02-01 | 2018-02-01 |  |  |  |  | 003 |

| ID | WBS | Activity | Duration | Start | Finish | Predecessors | Complete | Planned start | Planned finish | Constraint | Resources | Cost | Actual cost | UNIT DESCRIPTION |
| --- | --- | --- | --- | --- | --- | --- | --- | --- | --- | --- | --- | --- | --- | --- |
|  | 3 | **Mechanical** |  | 2017-01-27 | 2018-07-12 |  |  |  |  |  |  |  |  |  |
|  | 1 | **Floating of Enquiry & Receipt of Offers** |  | 2017-01-27 | 2018-06-06 |  |  |  |  |  |  |  |  |  |
| 110480 |  | Enq. floating & receipt of offers for WNA Plant equipments | 71d | 2017-01-27 A | 2017-11-29 A | 103360 SS | 100% | 2017-07-06 | 2017-10-13 |  | MH-Wtg [67.93 h] | 30,569 | 30,569 | 001 |
| 110490 |  | Enq. floating & receipt of offers for CNA Plant equipments | 37d | 2017-01-30 A | 2017-03-09 A | 103370 | 100% | 2017-04-13 | 2017-06-02 |  | MH-Wtg [45.29 h] | 20,381 | 20,381 | 002 |
| 110470 |  | Enq. floating & receipt of offers for OSBL equipments | 20d | 2017-02-15 A | 2017-10-05 A | 103350 SS | 100% | 2017-09-13 | 2017-10-10 |  | MH-Wtg [45.29 h] | 20,381 | 20,381 | 003 |
| 110491 |  | Enq. floating & receipt of offers for Absorber foundation bolts & templates | 15d | 2017-07-15 A | 2017-07-26 A | 103371 | 100% | 2017-08-08 | 2017-08-29 |  |  |  |  | 001 |
| 110500 |  | Tender floating & receipt of offers for Mechanical erection & piping | 15d | 2017-10-06 A | 2017-11-17 A | 103380 | 100% | 2017-10-02 | 2017-10-20 |  | MH-Wtg [45.29 h] | 20,381 | 20,381 | 003 |
| 110490.1 |  | Enq. floating for additional scope (MOM-078) equipments | 15d | 2018-01-03 A | 2018-02-19 A | 103370.1 | 100% | 2018-02-13 | 2018-03-05 |  |  |  |  | 003 |
| A126720 |  | Enquiry floating and receipt of offers for Heat train gaskets | 1d | 2018-01-09 A | 2018-01-25 A |  | 100% | 2018-02-01 | 2018-02-01 |  |  |  |  | 001 |
| A127490 |  | Enquiry floating and receipt of offers Foundation bolts of existing equipments | 1d | 2018-02-26 A | 2018-03-08 A |  | 100% | 2018-03-01 | 2018-03-01 |  |  |  |  | 001 |
| 110510 |  | Tender floating & receipt of offers for Insulation | 15d | 2018-05-14 A | 2018-06-06 A | 103390 | 100% | 2018-06-01 | 2018-06-21 |  | MH-Wtg [22.64 h] | 10,188 | 10,188 | 003 |
|  | 3 | **Bid Evaluation & Technical Recomendation** |  | 2017-03-15 | 2018-06-06 |  |  |  |  |  |  |  |  |  |
| 110590 |  | Bid evaluation & TR for CNA Plant equipments | 20d | 2017-03-15 A | 2017-06-16 A | 110490 SS+20d, 110490 FF+10d | 100% | 2017-06-05 | 2017-06-30 |  | MH-Wtg [108.69 h] | 48,911 | 48,911 | 002 |
| 110580 |  | Bid evaluation & TR for WNA Plant equipments | 61d | 2017-03-31 A | 2017-11-29 A | 110480 FF+20d | 100% | 2017-05-15 | 2017-08-07 |  | MH-Wtg [163.04 h] | 73,368 | 73,368 | 001 |
| 110570 |  | Bid evaluation & TR for OSBL equipments | 45d | 2017-04-28 A | 2017-10-30 A | 110470 FF+20d | 100% | 2017-04-21 | 2017-06-22 | start on or after 2017-04-21 | MH-Wtg [108.69 h] | 48,911 | 48,911 | 003 |
| 110591 |  | Bid evaluation & TR for Absorber foundation bolts & template | 10d | 2017-07-26 A | 2017-08-14 A | 110491 | 100% | 2017-09-22 | 2017-10-05 |  |  |  |  | 001 |
| 110600 |  | Bid evaluation & TR for Mechanical erection & piping | 10d | 2017-11-18 A | 2017-12-01 A | 110500 | 100% | 2017-11-08 | 2017-11-21 |  | MH-Wtg [108.69 h] | 48,911 | 48,911 | 003 |
| A126830 |  | TR for Heat train gaskets | 1d | 2018-01-25 A | 2018-02-22 A |  | 100% | 2018-03-01 | 2018-03-01 |  |  |  |  | 001 |
| 110590.1 |  | Bid evaluation & TR for additional scope (MOM-078) equipments | 15d | 2018-01-31 A | 2018-03-08 A | 110490.1 | 100% | 2018-03-06 | 2018-03-26 |  |  |  |  | 003 |
| A127500 |  | Bid evaluation & TR for Foundation bolts of existing equipments | 1d | 2018-03-14 A | 2018-03-14 A |  | 100% | 2018-03-01 | 2018-03-01 |  |  |  |  | 001 |
| 110610 |  | Bid evaluation & TR for Insulation | 15d | 2018-06-06 A | 2018-06-06 A | 110510 | 100% | 2018-06-22 | 2018-07-12 |  | MH-Wtg [54.35 h] | 24,458 | 24,458 | 003 |
|  | 4 | **Technical Order Specifications** |  | 2017-05-05 | 2018-07-12 |  |  |  |  |  |  |  |  |  |
| 110640 |  | TOS for CNA Plant equipments | 33d | 2017-05-05 A | 2017-06-16 A | 113180 SS+10d | 100% | 2017-06-01 | 2017-07-17 |  | MH-Wtg [27.17 h] | 12,227 | 12,227 | 002 |
| 110620 |  | TOS for OSBL equipments | 96d | 2017-06-16 A | 2018-01-31 A | 113160 FF+10d | 100% | 2017-06-15 | 2017-10-27 |  | MH-Wtg [27.17 h] | 12,227 | 12,227 | 003 |
| 110630 |  | TOS for WNA Plant equipments | 60d | 2017-06-30 A | 2018-04-02 A | 113170 FF+10d | 100% | 2017-08-01 | 2017-10-24 |  | MH-Wtg [40.76 h] | 18,342 | 18,342 | 001 |
| 110641 |  | TOS for Abosrber foundation bolts & templates | 10d | 2017-09-12 A | 2017-09-12 A | 113181 | 100% | 2017-10-27 | 2017-11-09 |  |  |  |  | 001 |
| 110650 |  | TOS for Mechanical erection & piping | 10d | 2017-12-26 A | 2018-02-27 A | 113190 | 100% | 2018-02-01 | 2018-02-14 |  | MH-Wtg [27.17 h] | 12,227 | 12,227 | 003 |
| A127370 |  | TOS for Heat train gaskets | 1d | 2018-03-30 A | 2018-03-30 A |  | 100% | 2018-03-01 | 2018-03-01 |  |  |  |  | 001 |
| 110640.1 |  | TOS for additional scope (MOM-078) equipments | 10d | 2018-04-02 A | 2018-04-03 A | 113180.1 | 100% | 2018-04-19 | 2018-05-02 |  |  |  |  | 003 |
| A127510 |  | TOS for Foundation bolts of existing equipments | 1d | 2018-04-02 A | 2018-04-02 A |  | 100% | 2018-05-01 | 2018-05-01 |  |  |  |  | 001 |
| 110660 |  | TOS for Insulation | 10d | 2018-07-04 A | 2018-07-12 A | 113200 | 100% | 2018-07-02 | 2018-07-13 |  | MH-Wtg [13.59 h] | 6,116 | 6,116 | 003 |

Notes:
- 110570: Explanation: Ellimetal offer to be awaited till 14.Apr.17

| ID | WBS | Activity | Duration | Start | Finish | Predecessors | Complete | Planned start | Planned finish | Total float | Free float | Constraint | Resources | Cost | Actual cost | UNIT DESCRIPTION |
| --- | --- | --- | --- | --- | --- | --- | --- | --- | --- | --- | --- | --- | --- | --- | --- | --- |
|  | 4 | **Piping** |  | 2017-09-29 | 2018-10-09 |  |  |  |  |  |  |  |  |  |  |  |
|  | 1 | **Floating of Enquiry & Receipt of Offers** |  | 2017-09-29 | 2018-08-28 |  |  |  |  |  |  |  |  |  |  |  |
| 110700 |  | Enq. floating & receipt of offers for Valves | 20d | 2017-09-29 A | 2017-11-08 A | 106610 | 100% | 2017-09-25 | 2017-10-20 |  |  |  | MH-Wtg [33.63 h] | 15,134 | 15,134 | 003 |
| 110670 |  | Enq. floating & receipt of offers for Pipes | 20d | 2017-10-05 A | 2017-11-03 A | 106580 | 100% | 2017-10-09 | 2017-11-03 |  |  |  | MH-Wtg [25.22 h] | 11,349 | 11,349 | 003 |
| 110680 |  | Enq. floating & receipt of offers for Fittings | 20d | 2017-10-10 A | 2017-12-06 A | 106590 | 100% | 2017-10-09 | 2017-11-03 |  |  |  | MH-Wtg [25.22 h] | 11,349 | 11,349 | 003 |
| 110690 |  | Enq. floating & receipt of offers for Flanges | 20d | 2017-10-11 A | 2017-11-30 A | 106600 | 100% | 2017-10-09 | 2017-11-03 |  |  |  | MH-Wtg [25.22 h] | 11,349 | 11,349 | 003 |
| 110770.1 |  | Enq. floating & receipt of offers for Expansion bellows | 20d | 2017-12-22 A | 2018-02-16 A | 106680.1 | 100% | 2017-12-15 | 2018-01-11 |  |  |  | MH-Wtg [6.73 h] | 3,029 | 3,029 | 003 |
| 110720 |  | Enq. floating & receipt of offers for Steam traps | 15d | 2018-01-09 A | 2018-01-31 A | 106630 | 100% | 2018-02-01 | 2018-02-21 |  |  |  | MH-Wtg [16.82 h] | 7,569 | 7,569 | 003 |
| 110750 |  | Enq. floating & receipt of offers for Stud bolts | 10d | 2018-02-09 A | 2018-04-04 A | 106660 | 100% | 2018-02-01 | 2018-02-14 |  |  |  | MH-Wtg [8.41 h] | 3,785 | 3,785 | 003 |
| 110710 |  | Enq. floating & receipt of offers for Strainers | 15d | 2018-02-27 A | 2018-04-04 A | 106620 | 100% | 2018-03-01 | 2018-03-21 |  |  |  | MH-Wtg [8.41 h] | 3,785 | 3,785 | 003 |
| 110770 |  | Enq. floating & receipt of offers for Special supports | 20d | 2018-03-12 A | 2018-04-30 A | 106680 | 100% | 2018-03-15 | 2018-04-11 |  |  |  | MH-Wtg [5.04 h] | 2,268 | 2,268 | 003 |
| A127010 |  | Enquiry floating and receipt of offers Excess flow check valves | 1d | 2018-03-12 A | 2018-04-02 A |  | 100% | 2018-03-01 | 2018-03-01 |  |  |  |  |  |  | 003 |
| 110740 |  | Enq. floating & receipt of offers for Gaskets | 10d | 2018-03-14 A | 2018-04-25 A | 106650 | 100% | 2018-03-08 | 2018-03-21 |  |  |  | MH-Wtg [8.41 h] | 3,785 | 3,785 | 003 |
| A127020 |  | Enquiry floating and receipt of offers for Spectacle blind | 1d | 2018-03-26 A | 2018-05-24 A |  | 100% | 2018-03-01 | 2018-03-01 |  |  |  |  |  |  | 003 |
| A127410 |  | Enquiry floating and receipt of offers for PTFE package | 1d | 2018-04-10 A | 2018-04-30 A |  | 100% | 2018-05-01 | 2018-05-01 |  |  |  |  |  |  | 003 |
| 110730 |  | Enq. floating & receipt of offers for Sight glass | 20d | 2018-04-19 A | 2018-05-04 A | 106640 | 100% | 2018-05-08 | 2018-06-04 |  |  |  | MH-Wtg [4.2 h] | 1,890 | 1,890 | 003 |
| A127030 |  | Enquiry floating and receipt of offers Flexible hoses | 1d | 2018-04-25 A | 2018-05-08 A |  | 100% | 2018-05-01 | 2018-05-01 |  |  |  |  |  |  | 003 |
| A127040 |  | Enquiry floating and receipt of offers Sluice gate | 1d | 2018-05-24 A | 2018-06-19 A |  | 100% | 2018-06-01 | 2018-06-01 |  |  |  |  |  |  | 003 |
| A127050 |  | Enquiry floating and receipt of offers Flange guards | 1d | 2018-05-29 A | 2018-06-27 A |  | 100% | 2018-06-01 | 2018-06-01 |  |  |  |  |  |  | 003 |
| 110760 |  | Enq. floating & receipt of offers for Primary supports (Deleted) | 15d | 2018-08-08 | 2018-08-28 | 106670 |  |  |  | 52083.9d | 0d |  | MH-Wtg |  |  | 003 |
|  | 3 | **Bid Evaluation & Technical Recomendation** |  | 2017-11-24 | 2018-09-11 |  |  |  |  |  |  |  |  |  |  |  |
| 110890 |  | Bid evaluation & TR for Pipes | 15d | 2017-11-24 A | 2018-02-06 A | 110670 | 100% | 2017-11-29 | 2017-12-19 |  |  |  | MH-Wtg [60.53 h] | 27,239 | 27,239 | 003 |
| 110920 |  | Bid evaluation & TR for Valves | 30d | 2017-12-06 A | 2018-03-12 A | 110700 | 100% | 2017-11-08 | 2017-12-19 |  |  |  | MH-Wtg [80.71 h] | 36,320 | 36,320 | 003 |
| 110910 |  | Bid evaluation & TR for Flanges | 15d | 2017-12-22 A | 2018-01-09 A | 110690 | 100% | 2017-12-29 | 2018-01-18 |  |  |  | MH-Wtg [60.53 h] | 27,239 | 27,239 | 003 |
| 110900 |  | Bid evaluation & TR for Fittings | 15d | 2018-01-03 A | 2018-01-18 A |  | 100% | 2018-01-01 | 2018-01-19 |  |  | start on or before 2018-01-01 | MH-Wtg [60.53 h] | 27,239 | 27,239 | 003 |
| 110990.1 |  | Bid evaluation & TR for Expansion bellows | 15d | 2018-01-29 A | 2018-04-11 A | 110770.1 | 100% | 2018-03-01 | 2018-03-21 |  |  |  | MH-Wtg [16.14 h] | 7,263 | 7,263 | 003 |
| 110940 |  | Bid evaluation & TR for Steam traps | 15d | 2018-01-31 A | 2018-04-23 A | 110720 | 100% | 2018-05-01 | 2018-05-21 |  |  |  | MH-Wtg [40.36 h] | 18,162 | 18,162 | 003 |
| A127110 |  | Bid evaluation & TR for Excess flow check valves | 1d | 2018-04-02 A | 2018-04-02 A |  | 100% |  |  |  |  |  |  |  |  | 003 |
| 110930 |  | Bid evaluation & TR for Strainers | 15d | 2018-04-04 A | 2018-04-04 A | 110710 | 100% | 2018-03-22 | 2018-04-11 |  |  |  | MH-Wtg [20.18 h] | 9,081 | 9,081 | 003 |
| 110970 |  | Bid evaluation & TR for Stud bolts | 10d | 2018-04-05 A | 2018-04-05 A | 110750 | 100% | 2018-03-20 | 2018-04-03 |  |  |  | MH-Wtg [20.18 h] | 9,081 | 9,081 | 003 |
| 110960 |  | Bid evaluation & TR for Gaskets | 10d | 2018-04-25 A | 2018-04-25 A | 110740 | 100% | 2018-05-15 | 2018-05-28 |  |  |  | MH-Wtg [20.18 h] | 9,081 | 9,081 | 003 |
| 110990 |  | Bid evaluation & TR for Special supports | 15d | 2018-05-01 A | 2018-05-15 A | 110770 | 100% | 2018-06-01 | 2018-06-21 |  |  |  | MH-Wtg [12.11 h] | 5,450 | 5,450 | 003 |
| 110950 |  | Bid evaluation & TR for Sight glass | 20d | 2018-05-04 A | 2018-05-16 A | 110730 | 100% | 2018-05-04 | 2018-05-31 |  |  |  | MH-Wtg [10.09 h] | 4,541 | 4,541 | 003 |
| A127130 |  | Bid evaluation & TR for Flexible hoses | 1d | 2018-05-16 A | 2018-05-16 A |  | 100% | 2018-06-01 | 2018-06-01 |  |  |  |  |  |  | 003 |
| A127120 |  | Bid evaluation & TR for Spectacle blind | 1d | 2018-05-24 A | 2018-05-24 A |  | 100% | 2018-06-01 | 2018-06-01 |  |  |  |  |  |  | 003 |
| A127420 |  | Bid evaluation & TR for PTFE package | 1d | 2018-06-07 A | 2018-06-07 A |  | 100% | 2018-06-01 | 2018-06-01 |  |  |  |  |  |  | 003 |
| A127140 |  | Bid evaluation & TR for Sluice gate | 1d | 2018-06-19 A | 2018-06-19 A |  | 100% | 2018-06-01 | 2018-06-01 |  |  |  |  |  |  | 003 |
| A127150 |  | Bid evaluation & TR for Flange guards | 1d | 2018-06-27 A | 2018-06-27 A |  | 100% | 2018-06-01 | 2018-06-01 |  |  |  |  |  |  | 003 |
| 110980 |  | Bid evaluation & TR for Primary supports (Deleted) | 10d | 2018-08-29 | 2018-09-11 | 110760 |  |  |  | 52083.9d | 0d |  | MH-Wtg |  |  | 003 |

| ID | WBS | Activity | Duration | Start | Finish | Predecessors | Complete | Planned start | Planned finish | Total float | Free float | Constraint | Resources | Cost | Actual cost | UNIT DESCRIPTION |
| --- | --- | --- | --- | --- | --- | --- | --- | --- | --- | --- | --- | --- | --- | --- | --- | --- |
|  | 4 | **Technical Order Specifications** |  | 2018-02-14 | 2018-10-09 |  |  |  |  |  |  |  |  |  |  |  |
| 111030 |  | TOS for Valves | 10d | 2018-02-14 A | 2018-05-31 A | 113240 | 100% | 2018-03-01 | 2018-03-14 |  |  |  | MH-Wtg [20.18 h] | 9,081 | 9,081 | 003 |
| 111480 |  | TOS for Expansion bellows (Deleted) | 10d | 2018-03-27 A | 2018-05-27 A | 113310.1 | 100% | 2018-06-22 | 2018-07-05 |  |  |  | MH-Wtg |  |  | 003 |
| A127210 |  | TOS for Excess flow check valves (Deleted) | 1d | 2018-04-23 A | 2018-04-23 A |  | 100% | 2018-06-01 | 2018-06-01 |  |  |  |  |  |  | 003 |
| 111040 |  | TOS for Strainers (Deleted) | 10d | 2018-05-14 A | 2018-05-28 A | 113250 | 100% | 2018-06-01 | 2018-06-14 |  |  |  | MH-Wtg |  |  | 003 |
| 111100 |  | TOS for Special supports (Deleted) | 10d | 2018-06-21 A | 2018-06-21 A | 113310 | 100% | 2018-07-13 | 2018-07-26 |  |  |  | MH-Wtg |  |  | 003 |
| 111050 |  | TOS for Steam traps (Deleted) | 10d | 2018-07-18 A | 2018-07-18 A | 113260 | 100% | 2018-07-02 | 2018-07-13 |  |  |  | MH-Wtg |  |  | 003 |
| 111060 |  | TOS for Sight glass (Deleted) | 10d | 2018-07-23 A | 2018-07-23 A | 113270 | 100% | 2018-07-02 | 2018-07-13 |  |  |  | MH-Wtg |  |  | 003 |
| A127240 |  | TOS for Sluice gate (Deleted) | 1d | 2018-08-01 A | 2018-08-01 A |  | 100% | 2018-07-02 | 2018-07-02 |  |  |  |  |  |  | 003 |
| A127430 |  | TOS for PTFE package | 1d | 2018-08-01 A | 2018-08-01 A |  | 100% | 2018-07-02 | 2018-07-02 |  |  |  |  |  |  | 003 |
| 111000 |  | TOS for Pipes (Deleted) | 10d | 2018-08-01 | 2018-08-14 | 113210 |  |  |  | 52173.9d |  |  | MH-Wtg |  |  | 003 |
| 111010 |  | TOS for Fittings (Deleted) | 10d | 2018-08-01 | 2018-08-14 | 113220 |  |  |  | 52173.9d |  |  | MH-Wtg |  |  | 003 |
| 111020 |  | TOS for Flanges (Deleted) | 10d | 2018-08-01 | 2018-08-14 | 113230 |  |  |  | 52173.9d |  |  | MH-Wtg |  |  | 003 |
| 111070 |  | TOS for Gaskets (Deleted) | 10d | 2018-08-01 | 2018-08-14 | 113280 |  |  |  | 52173.9d |  |  | MH-Wtg |  |  | 003 |
| 111080 |  | TOS for Stud bolts (Deleted) | 10d | 2018-08-01 | 2018-08-14 | 113290 |  |  |  | 52173.9d |  |  | MH-Wtg |  |  | 003 |
| A127220 |  | TOS for Spectacle blind (Deleted) | 1d | 2018-08-01 | 2018-08-01 |  |  |  |  | 52182.9d |  |  |  |  |  | 003 |
| A127230 |  | TOS for Flexible hoses (Deleted) | 1d | 2018-08-01 | 2018-08-01 |  |  |  |  | 52182.9d |  |  |  |  |  | 003 |
| A127250 |  | TOS for Flange guards (Deleted) | 1d | 2018-08-01 | 2018-08-01 |  |  |  |  | 52182.9d |  |  |  |  |  | 003 |
| 111090 |  | TOS for Primary supports (Deleted) | 10d | 2018-09-26 | 2018-10-09 | 113300 |  |  |  | 52133.9d |  |  | MH-Wtg |  |  | 003 |
|  | 5 | **Electrical** |  | 2017-01-23 | 2018-09-25 |  |  |  |  |  |  |  |  |  |  |  |
|  | 1 | **Floating of Enquiry & Receipt of Offers** |  | 2017-01-23 | 2018-08-28 |  |  |  |  |  |  |  |  |  |  |  |
| 111110 |  | Enq. floating & receipt of offers for Switchyard (Deleted) | 27d | 2017-01-23 A | 2017-03-17 A |  | 100% | 2017-07-03 | 2017-08-08 |  |  | start on 2017-01-23 | MH-Wtg |  |  | 003 |
| 111380.2 |  | Enq. floating & receipt of offers for Construction power | 20d | 2017-02-20 A | 2017-06-14 A |  | 100% | 2017-05-01 | 2017-05-26 |  |  |  |  |  |  | 003 |
| 111380.3 |  | Enq. floating & receipt of offers for Compact substation | 20d | 2017-03-27 A | 2017-04-22 A |  | 100% | 2017-05-01 | 2017-05-26 |  |  |  |  |  |  | 003 |
| 111120 |  | Enq. floating & receipt of offers for Transformers | 20d | 2017-05-17 A | 2017-06-19 A | 108160 | 100% | 2017-05-22 | 2017-06-16 |  |  |  | MH-Wtg [16.98 h] | 7,641 | 7,641 | 003 |
| 111130 |  | Enq. floating & receipt of offers for HT panel | 20d | 2017-05-19 A | 2017-06-09 A | 108170 | 100% | 2017-05-17 | 2017-06-13 |  |  |  | MH-Wtg [8.49 h] | 3,821 | 3,821 | 003 |
| 111140 |  | Enq. floating & receipt of offers HT PCC | 20d | 2017-05-19 A | 2017-06-09 A | 108180 | 100% | 2017-05-17 | 2017-06-13 |  |  |  | MH-Wtg [8.49 h] | 3,821 | 3,821 | 003 |
| 111150 |  | Enq. floating & receipt of offers for LT PCC | 20d | 2017-05-26 A | 2017-06-16 A | 108190 | 100% | 2017-05-23 | 2017-06-19 |  |  |  | MH-Wtg [8.49 h] | 3,821 | 3,821 | 003 |
| 111160 |  | Enq. floating & receipt of offers for MCC | 20d | 2017-05-26 A | 2017-06-16 A | 108200 | 100% | 2017-05-23 | 2017-06-19 |  |  |  | MH-Wtg [8.49 h] | 3,821 | 3,821 | 003 |
| 111230 |  | Enq. floating & receipt of offers for HT motors | 20d | 2017-06-27 A | 2017-07-18 A | 108270 | 100% | 2017-06-22 | 2017-07-19 |  |  |  | MH-Wtg [5.1 h] | 2,295 | 2,295 | 003 |
| 111240 |  | Enq. floating & receipt of offers for LT motors | 20d | 2017-06-28 A | 2017-07-17 A | 108280 | 100% | 2017-06-29 | 2017-07-26 |  |  |  | MH-Wtg [5.1 h] | 2,295 | 2,295 | 003 |
| 111210 |  | Enq. floating & receipt of offers for NGR | 20d | 2017-06-30 A | 2017-07-16 A | 108250 | 100% | 2017-06-27 | 2017-07-24 |  |  |  | MH-Wtg [3.4 h] | 1,530 | 1,530 | 003 |
| 111180 |  | Enq. floating & receipt of offers for DG | 20d | 2017-07-04 A | 2017-08-09 A | 108220 | 100% | 2017-08-16 | 2017-09-12 |  |  |  | MH-Wtg [5.1 h] | 2,295 | 2,295 | 003 |
| 111250 |  | Enq. floating & receipt of offers for VFD | 20d | 2017-07-27 A | 2017-08-14 A | 108290 | 100% | 2017-08-30 | 2017-09-26 |  |  |  | MH-Wtg [8.49 h] | 3,821 | 3,821 | 003 |
| 111190 |  | Enq. floating & receipt of offers for UPS | 20d | 2017-07-28 A | 2017-08-22 A | 108230 | 100% | 2017-08-28 | 2017-09-22 |  |  |  | MH-Wtg [2.55 h] | 1,148 | 1,148 | 003 |
| 111260 |  | Enq. floating & receipt of offers for HT cables | 20d | 2017-07-29 A | 2017-08-17 A | 108300 | 100% | 2017-09-18 | 2017-10-13 |  |  |  | MH-Wtg [3.4 h] | 1,530 | 1,530 | 003 |
| 111300 |  | Enq. floating & receipt of offers Local control stations | 20d | 2017-07-29 A | 2017-08-13 A | 108340 | 100% | 2017-08-11 | 2017-09-08 |  |  |  | MH-Wtg [3.4 h] | 1,530 | 1,530 | 003 |
| 111200 |  | Enq. floating & receipt of offers for Battery and battery charger | 20d | 2017-08-17 A | 2017-09-04 A | 108240 | 100% | 2017-09-13 | 2017-10-10 |  |  |  | MH-Wtg [2.55 h] | 1,148 | 1,148 | 003 |
| 111170 |  | Enq. floating & receipt of offers APFC panel | 20d | 2017-08-23 A | 2017-09-13 A | 108210 | 100% | 2017-09-15 | 2017-10-12 |  |  |  | MH-Wtg [2.55 h] | 1,148 | 1,148 | 003 |
| 111220 |  | Enq. floating & receipt of offers for Buss duct | 20d | 2017-08-23 A | 2017-09-07 A | 108260 | 100% | 2017-09-13 | 2017-10-10 |  |  |  | MH-Wtg [3.4 h] | 1,530 | 1,530 | 003 |
| 111270 |  | Enq. floating & receipt of offers for LT cables | 20d | 2017-08-30 A | 2017-09-11 A | 108310 | 100% | 2017-11-01 | 2017-11-28 |  |  |  | MH-Wtg [3.4 h] | 1,530 | 1,530 | 003 |
| 111370 |  | Enq. floating & receipt of offers for PA system | 20d | 2017-08-30 A | 2017-10-13 A | 108410 | 100% | 2017-10-11 | 2017-11-07 |  |  |  | MH-Wtg [5.1 h] | 2,295 | 2,295 | 003 |
| 111330 |  | Enq. floating & receipt of offers for Cable tray | 20d | 2017-08-31 A | 2017-10-03 A | 108370 | 100% | 2017-11-24 | 2017-12-21 |  |  |  | MH-Wtg [3.4 h] | 1,530 | 1,530 | 003 |
| 111171 |  | Enq. floating & receipt of offers for HT Capacitor bank | 20d | 2017-09-01 A | 2017-11-22 A | 108211 | 100% | 2017-09-15 | 2017-10-12 |  |  |  |  |  |  | 003 |
| 111370.1 |  | Enq. floating & receipt of offers for EPBAX system | 20d | 2017-10-25 A | 2017-11-16 A | 108410.1 | 100% | 2017-10-12 | 2017-11-08 |  |  | start on or after 2017-10-12 |  |  |  | 003 |
| 111190.1 |  | Enq. floating & receipt of offers for UMPS | 20d | 2017-12-11 A | 2017-12-29 A | 108230.1 | 100% | 2017-12-01 | 2017-12-28 |  |  |  |  |  |  | 003 |
| 111380.1 |  | Enq. floating & receipt of offers for Electrical heat tracing | 20d | 2017-12-14 A | 2018-05-02 A | 111960.1 SF-1d | 100% | 2018-02-28 | 2018-03-28 |  |  |  | MH-Wtg [5.1 h] | 2,295 | 2,295 | 002 |
| 111390 |  | Tender floating & receipt of offers for Electrical installation | 20d | 2017-12-25 A | 2018-01-10 A | 108430 | 100% | 2017-12-01 | 2017-12-28 |  |  |  | MH-Wtg [8.49 h] | 3,821 | 3,821 | 003 |
| 111340 |  | Enq. floating & receipt of offers for Light fittings | 15d | 2018-01-05 A | 2018-01-31 A | 108380 | 100% | 2018-02-01 | 2018-02-21 |  |  |  | MH-Wtg [2.55 h] | 1,148 | 1,148 | 003 |
| 111310 |  | Enq. floating & receipt of offers for Misc. panels | 20d | 2018-03-12 A | 2018-04-06 A | 108350 | 100% | 2018-03-22 | 2018-04-18 |  |  |  | MH-Wtg [2.55 h] | 1,148 | 1,148 | 003 |
| A127060 |  | Enquiry floating and receipt of offers Flame proof light fittings | 1d | 2018-03-27 A | 2018-04-26 A |  | 100% | 2018-03-01 | 2018-03-01 |  |  |  |  |  |  | 003 |
| 111280 |  | Enq. floating & receipt of offers for Control cables (Deleted) | 20d | 2018-08-01 | 2018-08-28 |  |  |  |  | 52163.9d |  |  | MH-Wtg |  |  | 003 |
| 111290 |  | Enq. floating & receipt of offers for Jointing kits (Deleted) | 20d | 2018-08-01 | 2018-08-28 |  |  |  |  | 52163.9d |  |  | MH-Wtg |  |  | 003 |
| 111320 |  | Enq. floating & receipt of offers for Lighting transformers (Deleted) | 20d | 2018-08-01 | 2018-08-28 |  |  |  |  | 52163.9d |  |  | MH-Wtg |  |  | 003 |
| 111350 |  | Enq. floating & receipt of offers for Earthing strips (Deleted) | 20d | 2018-08-01 | 2018-08-28 |  |  |  |  | 52163.9d |  |  | MH-Wtg |  |  | 003 |
| 111360 |  | Enq. floating & receipt of offers for Lightening arrestors (Deleted) | 20d | 2018-08-01 | 2018-08-28 |  |  |  |  | 52163.9d |  |  | MH-Wtg |  |  | 003 |
| 111380 |  | Enq. floating & receipt of offers for CCTV (Deleted) | 20d | 2018-08-01 | 2018-08-28 | 108420 |  |  |  | 52143.9d | 0d |  | MH-Wtg |  |  | 003 |

| ID | WBS | Activity | Duration | Start | Finish | Predecessors | Complete | Planned start | Planned finish | Total float | Constraint | Resources | Cost | Actual cost | UNIT DESCRIPTION |
| --- | --- | --- | --- | --- | --- | --- | --- | --- | --- | --- | --- | --- | --- | --- | --- |
|  | 3 | **Bid Evaluation & Technical Recomendation** |  | 2017-04-04 | 2018-09-25 |  |  |  |  |  |  |  |  |  |  |
| 111690 |  | Bid evaluation & TR for Switchyard (Deleted) | 20d | 2017-04-04 A | 2017-04-04 A |  | 100% | 2017-05-01 | 2017-05-26 |  |  | MH-Wtg |  |  | 003 |
| 111960.3 |  | Bid evaluation & TR for Compact susbstation | 20d | 2017-04-27 A | 2017-04-27 A |  | 100% | 2017-05-01 | 2017-05-26 |  |  |  |  |  | 003 |
| 111710 |  | Bid evaluation & TR for HT panel | 20d | 2017-06-09 A | 2017-08-19 A | 111130 | 100% | 2017-09-01 | 2017-09-28 |  |  | MH-Wtg [20.38 h] | 9,171 | 9,171 | 003 |
| 111720 |  | Bid evaluation & TR for HT PCC | 20d | 2017-06-09 A | 2017-08-19 A | 111140 | 100% | 2017-09-01 | 2017-09-28 |  |  | MH-Wtg [20.38 h] | 9,171 | 9,171 | 003 |
| 111960.2 |  | Bid evaluation & TR for Construction power | 20d | 2017-06-14 A | 2017-06-14 A | 111380.3 | 100% | 2017-06-01 | 2017-06-28 |  |  |  |  |  | 003 |
| 111730 |  | Bid evaluation & TR for LT PCC | 20d | 2017-06-16 A | 2017-10-17 A | 111150 | 100% | 2017-09-01 | 2017-09-28 |  |  | MH-Wtg [20.38 h] | 9,171 | 9,171 | 003 |
| 111740 |  | Bid evaluation & TR for MCC | 20d | 2017-06-16 A | 2017-10-17 A | 111160 | 100% | 2017-09-01 | 2017-09-28 |  |  | MH-Wtg [20.38 h] | 9,171 | 9,171 | 003 |
| 111790 |  | Bid evaluation & TR for NGR | 20d | 2017-07-16 A | 2017-08-23 A | 111210 | 100% | 2017-09-29 | 2017-10-26 |  |  | MH-Wtg [8.15 h] | 3,668 | 3,668 | 003 |
| 111820 |  | Bid evaluation & TR for LT motors | 20d | 2017-07-17 A | 2017-12-13 A | 111240 | 100% | 2017-09-01 | 2017-09-28 |  |  | MH-Wtg [12.23 h] | 5,504 | 5,504 | 003 |
| 111810 |  | Bid evaluation & TR for HT motors | 20d | 2017-07-18 A | 2017-10-31 A | 111230 | 100% | 2017-09-01 | 2017-09-28 |  |  | MH-Wtg [12.23 h] | 5,504 | 5,504 | 003 |
| 111700 |  | Bid evaluation & TR for Transformers | 20d | 2017-07-26 A | 2017-07-27 A | 111120 | 100% | 2017-08-01 | 2017-08-29 |  |  | MH-Wtg [40.76 h] | 18,342 | 18,342 | 003 |
| 111760 |  | Bid evaluation & TR for DG | 20d | 2017-08-09 A | 2017-09-19 A | 111180 | 100% | 2017-09-29 | 2017-10-26 |  |  | MH-Wtg [12.23 h] | 5,504 | 5,504 | 003 |
| 111880 |  | Bid evaluation & TR for Local control stations | 20d | 2017-08-13 A | 2017-12-28 A | 111300 | 100% | 2017-09-29 | 2017-10-26 |  |  | MH-Wtg [8.15 h] | 3,668 | 3,668 | 003 |
| 111840 |  | Bid evaluation & TR for HT cables | 20d | 2017-08-17 A | 2017-09-09 A | 111260 | 100% | 2017-09-29 | 2017-10-26 |  |  | MH-Wtg [8.15 h] | 3,668 | 3,668 | 003 |
| 111770 |  | Bid evaluation & TR for UPS | 20d | 2017-08-22 A | 2017-09-23 A | 111190 | 100% | 2017-09-29 | 2017-10-26 |  |  | MH-Wtg [6.11 h] | 2,750 | 2,750 | 003 |
| 111780 |  | Bid evaluation & TR for Battery and battery charger | 20d | 2017-09-04 A | 2017-10-18 A | 111200 | 100% | 2017-10-11 | 2017-11-07 |  |  | MH-Wtg [6.11 h] | 2,750 | 2,750 | 003 |
| 111800 |  | Bid evaluation & TR for Buss duct | 20d | 2017-09-07 A | 2017-10-24 A | 111220 | 100% | 2017-10-11 | 2017-11-07 |  |  | MH-Wtg [8.15 h] | 3,668 | 3,668 | 003 |
| 111850 |  | Bid evaluation & TR for LT cables | 20d | 2017-09-11 A | 2018-01-23 A | 111270 | 100% | 2017-11-29 | 2017-12-26 |  |  | MH-Wtg [8.15 h] | 3,668 | 3,668 | 003 |
| 111750 |  | Bid evaluation & TR for APFC panel | 20d | 2017-09-13 A | 2017-11-17 A | 111170 | 100% | 2017-10-13 | 2017-11-09 |  |  | MH-Wtg [6.11 h] | 2,750 | 2,750 | 003 |
| 111830 |  | Bid evaluation & TR for VFD | 20d | 2017-09-29 A | 2017-09-29 A | 111250 | 100% | 2017-09-29 | 2017-10-26 |  |  | MH-Wtg [20.38 h] | 9,171 | 9,171 | 003 |
| 111910 |  | Bid evaluation & TR for Cable tray | 15d | 2017-10-04 A | 2017-12-22 A | 111330 | 100% | 2017-12-01 | 2017-12-21 |  |  | MH-Wtg [8.15 h] | 3,668 | 3,668 | 003 |
| 111950 |  | Bid evaluation & TR for PA system | 20d | 2017-10-14 A | 2017-12-15 A | 111370 | 100% | 2017-12-01 | 2017-12-28 |  | finish on or after 2017-12-05 | MH-Wtg [12.23 h] | 5,504 | 5,504 | 003 |
| 111950.1 |  | Bid evaluation & TR for EPBAX system | 20d | 2017-11-16 A | 2018-04-26 A | 111370.1 | 100% | 2018-05-01 | 2018-05-28 |  | finish on or after 2017-12-20 |  |  |  | 003 |
| 111751 |  | Bid evaluation & TR for HT Capacitor bank | 15d | 2017-11-22 A | 2018-01-09 A | 111171 | 100% | 2018-02-01 | 2018-02-21 |  |  |  |  |  | 003 |
| 111770.1 |  | Bid evaluation & TR for UMPS | 20d | 2017-12-30 A | 2018-03-30 A | 111190.1 | 100% | 2018-03-01 | 2018-03-28 |  |  |  |  |  | 003 |
| 111970 |  | Bid evaluation & TR for Electrical installation | 15d | 2018-01-10 A | 2018-02-02 A | 111390 FS-3d | 100% | 2018-02-12 | 2018-03-02 |  |  | MH-Wtg [20.38 h] | 9,171 | 9,171 | 003 |
| 111920 |  | Bid evaluation & TR for Light fittings | 10d | 2018-01-31 A | 2018-03-01 A | 111340 | 100% | 2018-03-22 | 2018-04-04 |  |  | MH-Wtg [6.11 h] | 2,750 | 2,750 | 003 |
| 111890 |  | Bid evaluation & TR for Misc. panels | 20d | 2018-04-06 A | 2018-04-06 A | 111310 | 100% | 2018-04-19 | 2018-05-16 |  |  | MH-Wtg [6.11 h] | 2,750 | 2,750 | 003 |
| A127160 |  | Bid evaluation & TR for Flame proof light fittings | 1d | 2018-04-26 A | 2018-04-26 A |  | 100% | 2018-05-01 | 2018-05-01 |  |  |  |  |  | 003 |
| 111960.1 |  | Bid evaluation & TR for Electrical heat tracing | 10d | 2018-05-03 A | 2018-05-25 A | 113580.1 SF-1d | 100% | 2018-07-10 | 2018-07-24 |  |  | MH-Wtg [12.23 h] | 5,504 | 5,504 | 002 |
| 111860 |  | Bid evaluation & TR for Control cables (Deleted) | 20d | 2018-08-01 | 2018-08-28 |  |  |  |  | 52163.9d |  | MH-Wtg |  |  | 003 |
| 111870 |  | Bid evaluation & TR for Jointing kits (Deleted) | 20d | 2018-08-01 | 2018-08-28 |  |  |  |  | 52163.9d |  | MH-Wtg |  |  | 003 |
| 111900 |  | Bid evaluation & TR for Lighting transformers (Deleted) | 20d | 2018-08-01 | 2018-08-28 |  |  |  |  | 52163.9d |  | MH-Wtg |  |  | 003 |
| 111930 |  | Bid evaluation & TR for Earthing strips (Deleted) | 20d | 2018-08-01 | 2018-08-28 |  |  |  |  | 52163.9d |  | MH-Wtg |  |  | 003 |
| 111940 |  | Bid evaluation & TR for Lightening arrestors (Deleted) | 20d | 2018-08-01 | 2018-08-28 |  |  |  |  | 52163.9d |  | MH-Wtg |  |  | 003 |
| 111960 |  | Bid evaluation & TR for CCTV (Deleted) | 20d | 2018-08-29 | 2018-09-25 | 111380 |  |  |  | 52143.9d | finish on or after 2017-12-12 | MH-Wtg |  |  | 003 |

| ID | WBS | Activity | Duration | Start | Finish | Predecessors | Complete | Planned start | Planned finish | Total float | Resources | Cost | Actual cost | UNIT DESCRIPTION |
| --- | --- | --- | --- | --- | --- | --- | --- | --- | --- | --- | --- | --- | --- | --- |
|  | 4 | **Technical Order Specifications** |  | 2017-06-28 | 2018-09-11 |  |  |  |  |  |  |  |  |  |
| 112250.3 |  | TOS for Compact substation | 1d | 2017-06-28 A | 2017-06-28 A |  | 100% | 2017-06-01 | 2017-06-01 |  |  |  |  | 003 |
| 111990 |  | TOS for Transformers | 10d | 2017-09-22 A | 2017-09-22 A | 113320 | 100% | 2017-09-29 | 2017-10-12 |  | MH-Wtg [10.19 h] | 4,586 | 4,586 | 003 |
| 112130 |  | TOS for HT cables | 10d | 2017-10-07 A | 2017-10-27 A | 113460 | 100% | 2017-10-30 | 2017-11-10 |  | MH-Wtg [2.04 h] | 918 | 918 | 003 |
| 112000 |  | TOS for HT panel | 10d | 2017-10-14 A | 2017-11-13 A | 113330 | 100% | 2017-11-01 | 2017-11-14 |  | MH-Wtg [5.1 h] | 2,295 | 2,295 | 003 |
| 112010 |  | TOS HT PCC | 10d | 2017-10-14 A | 2017-11-13 A | 113340 | 100% | 2017-11-01 | 2017-11-14 |  | MH-Wtg [5.1 h] | 2,295 | 2,295 | 003 |
| 112060 |  | TOS for UPS | 10d | 2017-11-04 A | 2017-11-22 A | 113390 | 100% | 2017-11-29 | 2017-12-12 |  | MH-Wtg [1.53 h] | 689 | 689 | 003 |
| 112050 |  | TOS for DG | 10d | 2017-11-29 A | 2017-12-28 A | 113380 | 100% | 2018-01-01 | 2018-01-12 |  | MH-Wtg [3.06 h] | 1,377 | 1,377 | 003 |
| 112080 |  | TOS for NGR | 10d | 2017-11-30 A | 2017-12-15 A | 113410 | 100% | 2017-12-01 | 2017-12-14 |  | MH-Wtg [2.04 h] | 918 | 918 | 003 |
| 112120 |  | TOS for VFD | 10d | 2017-12-02 A | 2017-12-20 A | 113450 | 100% | 2017-12-01 | 2017-12-14 |  | MH-Wtg [5.1 h] | 2,295 | 2,295 | 003 |
| 112090 |  | TOS for Buss duct | 10d | 2017-12-04 A | 2017-12-20 A | 113420 | 100% | 2017-12-01 | 2017-12-14 |  | MH-Wtg [2.04 h] | 918 | 918 | 003 |
| 112100 |  | TOS for HT motors | 10d | 2017-12-25 A | 2017-12-29 A | 113430 | 100% | 2018-01-01 | 2018-01-12 |  | MH-Wtg [3.06 h] | 1,377 | 1,377 | 003 |
| 112020 |  | TOS for LT PCC | 10d | 2017-12-29 A | 2018-01-31 A | 113350 | 100% | 2018-02-01 | 2018-02-14 |  | MH-Wtg [5.1 h] | 2,295 | 2,295 | 003 |
| 112070 |  | TOS for Battery and battery charger | 10d | 2017-12-29 A | 2018-01-22 A | 113400 | 100% | 2018-02-01 | 2018-02-14 |  | MH-Wtg [1.53 h] | 689 | 689 | 003 |
| 112040 |  | TOS for APFC panel | 10d | 2017-12-30 A | 2018-02-09 A | 113370 | 100% | 2018-02-01 | 2018-02-14 |  | MH-Wtg [1.53 h] | 689 | 689 | 003 |
| 112110 |  | TOS for LT motors | 10d | 2018-01-15 A | 2018-01-23 A | 113440 | 100% | 2018-02-01 | 2018-02-14 |  | MH-Wtg [3.06 h] | 1,377 | 1,377 | 003 |
| 112030 |  | TOS for MCC | 10d | 2018-01-29 A | 2018-01-31 A | 113360 | 100% | 2018-02-01 | 2018-02-14 |  | MH-Wtg [5.1 h] | 2,295 | 2,295 | 003 |
| 112200 |  | TOS for Cable tray | 10d | 2018-02-01 A | 2018-02-12 A | 113530 | 100% | 2018-02-01 | 2018-02-14 |  | MH-Wtg [2.04 h] | 918 | 918 | 003 |
| 112170 |  | TOS for Local control stations | 10d | 2018-02-02 A | 2018-02-07 A | 113500 | 100% | 2018-03-01 | 2018-03-14 |  | MH-Wtg [2.04 h] | 918 | 918 | 003 |
| 112140 |  | TOS for LT cables | 10d | 2018-03-06 A | 2018-03-14 A | 113470 | 100% | 2018-03-01 | 2018-03-14 |  | MH-Wtg [2.04 h] | 918 | 918 | 003 |
| 112210 |  | TOS for Light fittings | 10d | 2018-04-11 A | 2018-04-11 A | 113540 | 100% | 2018-05-01 | 2018-05-14 |  | MH-Wtg [1.53 h] | 689 | 689 | 003 |
| 112041 |  | TOS for HT Capacitor bank | 10d | 2018-04-26 A | 2018-05-15 A | 113371 | 100% | 2018-06-01 | 2018-06-14 |  |  |  |  | 003 |
| 112180 |  | TOS for Misc. panels | 10d | 2018-05-04 A | 2018-05-04 A | 113510 | 100% | 2018-06-01 | 2018-06-14 |  | MH-Wtg [1.53 h] | 689 | 689 | 003 |
| A127260 |  | TOS for Flame proof light fittings | 1d | 2018-05-04 A | 2018-05-04 A |  | 100% | 2018-05-01 | 2018-05-01 |  |  |  |  | 003 |
| 112060.1 |  | TOS for UMPS | 10d | 2018-05-09 A | 2018-05-09 A | 113390.1 | 100% | 2018-06-01 | 2018-06-14 |  |  |  |  | 003 |
| 112250.1 |  | TOS for Electrical heat tracing | 10d | 2018-06-28 A | 2018-07-13 A | 113580.1 | 100% | 2018-07-02 | 2018-07-13 |  | MH-Wtg [3.06 h] | 1,377 | 1,377 | 002 |
| 111980 |  | TOS for Switchyard (Deleted) | 10d | 2018-08-01 | 2018-08-14 |  |  |  |  | 52173.9d | MH-Wtg |  |  | 003 |
| 112150 |  | TOS for Control cables (Deleted) | 10d | 2018-08-01 | 2018-08-14 |  |  |  |  | 52173.9d | MH-Wtg |  |  | 003 |
| 112160 |  | TOS for Jointing kits (Deleted) | 10d | 2018-08-01 | 2018-08-14 |  |  |  |  | 52173.9d | MH-Wtg |  |  | 003 |
| 112190 |  | TOS for Lighting transformers (Deleted) | 10d | 2018-08-01 | 2018-08-14 |  |  |  |  | 52173.9d | MH-Wtg |  |  | 003 |
| 112220 |  | TOS for Earthing strips (Deleted) | 10d | 2018-08-01 | 2018-08-14 |  |  |  |  | 52173.9d | MH-Wtg |  |  | 003 |
| 112230 |  | TOS for Lightening arrestors (Deleted) | 10d | 2018-08-01 | 2018-08-14 |  |  |  |  | 52173.9d | MH-Wtg |  |  | 003 |
| 112240 |  | TOS for PA system | 10d | 2018-08-01 | 2018-08-14 | 113570 |  |  |  | 52173.9d | MH-Wtg [3.06 h] | 1,377 |  | 003 |
| 112250 |  | TOS for CCTV (Deleted) | 10d | 2018-08-01 | 2018-08-14 | 113580 |  |  |  | 52173.9d | MH-Wtg |  |  | 003 |
| 112250.2 |  | TOS for Construction power (Deleted) | 1d | 2018-08-01 | 2018-08-01 |  |  |  |  | 52182.9d |  |  |  | 003 |
| 112260 |  | TOS for Electrical installation | 10d | 2018-08-01 | 2018-08-14 | 113590 |  |  |  | 52173.9d | MH-Wtg [5.1 h] | 2,295 |  | 003 |
| 112240.1 |  | TOS for EPBAX system (Deleted) | 10d | 2018-08-29 | 2018-09-11 | 113570.1 |  |  |  | 52153.9d |  |  |  | 003 |

| ID | WBS | Activity | Duration | Start | Finish | Predecessors | Complete | Remaining | Planned start | Planned finish | Total float | Resources | Cost | Actual cost | UNIT DESCRIPTION |
| --- | --- | --- | --- | --- | --- | --- | --- | --- | --- | --- | --- | --- | --- | --- | --- |
|  | 6 | **Instrumentation** |  | 2017-03-23 | 2018-09-11 |  |  |  |  |  |  |  |  |  |  |
|  | 1 | **Floating of Enquiry & Receipt of Offers** |  | 2017-03-23 | 2018-08-28 |  |  |  |  |  |  |  |  |  |  |
| 112270 |  | Enq. floating & receipt of offers for DCS system | 20d | 2017-03-23 A | 2017-04-08 A | 109010 | 100% |  | 2017-05-22 | 2017-06-16 |  | MH-Wtg [17 h] | 7,650 | 7,650 | 003 |
| 112350.3 |  | Enq. floating & receipt of offers for Vibration monitoring system | 20d | 2017-03-23 A | 2017-04-12 A | 109090.3 | 100% |  | 2017-04-17 | 2017-05-12 |  |  |  |  | 001 |
| 112380 |  | Enq. floating & receipt of offers for Weigh bridge | 20d | 2017-03-23 A | 2017-04-12 A | 109120 | 100% |  | 2017-05-15 | 2017-06-09 |  | MH-Wtg [5 h] | 2,250 | 2,250 | 003 |
| 112280 |  | Enq. floating & receipt of offers for Control valves- WNA Plant | 20d | 2017-03-28 A | 2017-05-08 A | 109020 | 100% |  | 2017-04-10 | 2017-05-05 |  | MH-Wtg [10 h] | 4,500 | 4,500 | 001 |
| 112281 |  | Enq. floating & receipt of offers for Control valves- CNA Plants | 20d | 2017-04-10 A | 2017-04-27 A | 109021 | 100% |  | 2017-04-17 | 2017-05-12 |  | MH-Wtg [2.83 h] | 1,274 | 1,274 | 002 |
| 112282 |  | Enq. floating & receipt of offers for Control valves- Offsites & Utilities | 20d | 2017-04-10 A | 2017-04-27 A | 109022 | 100% |  | 2017-05-01 | 2017-05-26 |  | MH-Wtg [4 h] | 1,800 | 1,800 | 003 |
| 112291 |  | Enq. floating & receipt of offers for On/Off valves- CNA Plants | 20d | 2017-04-19 A | 2017-05-03 A | 109031 | 100% |  | 2017-04-17 | 2017-05-12 |  | MH-Wtg [3 h] | 1,350 | 1,350 | 002 |
| 112321 |  | Enq. floating & receipt of offers for Analysers/Gas detectors- CNA Plants | 20d | 2017-04-24 A | 2017-06-16 A | 109061 | 100% |  | 2017-05-24 | 2017-06-20 |  | MH-Wtg [2.26 h] | 1,017 | 1,017 | 002 |
| 112322 |  | Enq. floating & receipt of offers for Analysers/Gas detectors- Offsites & Utilities | 20d | 2017-04-24 A | 2017-06-16 A | 109062 | 100% |  | 2017-07-10 | 2017-08-04 |  | MH-Wtg [3 h] | 1,350 | 1,350 | 003 |
| 112310 |  | Enq. floating & receipt of offers for Flow meters-WNA Plants | 20d | 2017-05-03 A | 2017-05-16 A | 109050 | 100% |  | 2017-05-23 | 2017-06-19 |  | MH-Wtg [4 h] | 1,800 | 1,800 | 001 |
| 112311 |  | Enq. floating & receipt of offers for Flow meters- CNA Plants | 20d | 2017-05-03 A | 2017-10-05 A | 109051 | 100% |  | 2017-06-14 | 2017-07-11 |  | MH-Wtg [2.83 h] | 1,274 | 1,274 | 002 |
| 112300 |  | Enq. floating & receipt of offers for Transmitters- WNA Plant | 20d | 2017-05-25 A | 2017-11-17 A | 109040 | 100% |  | 2017-05-11 | 2017-06-07 |  | MH-Wtg [5 h] | 2,250 | 2,250 | 001 |
| 112301 |  | Enq. floating & receipt of offers for Transmitters- CNA Plants | 20d | 2017-05-25 A | 2017-06-16 A | 109041 | 100% |  | 2017-05-23 | 2017-06-19 |  | MH-Wtg [22 h] | 9,900 | 9,900 | 002 |
| 112302 |  | Enq. floating & receipt of offers for Transmitters- Offsites & Utilities | 20d | 2017-05-25 A | 2017-11-17 A | 109042 | 100% |  | 2017-06-14 | 2017-07-11 |  | MH-Wtg [18 h] | 8,100 | 8,100 | 003 |
| 112350 |  | Enq. floating & receipt of offers for Gauges- WNA Plant | 20d | 2017-05-31 A | 2017-12-08 A | 109090 | 100% |  | 2017-07-03 | 2017-07-28 |  | MH-Wtg [5.28 h] | 2,376 | 2,376 | 001 |
| 112350.1 |  | Enq. floating & receipt of offers for Gauges- CNA Plants | 20d | 2017-05-31 A | 2017-12-08 A | 109090.1 | 100% |  | 2017-05-08 | 2017-06-02 |  | MH-Wtg [1.32 h] | 594 | 594 | 002 |
| 112350.2 |  | Enq. floating & receipt of offers for Gauges- Offsites & Utilities | 20d | 2017-05-31 A | 2017-12-08 A | 109090.2 | 100% |  | 2017-07-26 | 2017-08-23 |  | MH-Wtg [2.83 h] | 1,274 | 1,274 | 003 |
| 112290 |  | Enq. floating & receipt of offers for On/Off valves- WNA Plant | 20d | 2017-07-10 A | 2017-07-25 A | 109030 | 100% |  | 2017-08-16 | 2017-09-12 |  | MH-Wtg [5 h] | 2,250 | 2,250 | 001 |
| 112292 |  | Enq. floating & receipt of offers for On/Off valves- Offsites & Utilities | 20d | 2017-07-10 A | 2017-07-25 A | 109032 | 100% |  | 2017-09-01 | 2017-09-28 |  | MH-Wtg [9 h] | 4,050 | 4,050 | 003 |
| 112312 |  | Enq. floating & receipt of offers for Flow meters- Offsites & Utlities | 20d | 2017-07-26 A | 2017-10-05 A | 109052 | 100% |  | 2017-08-16 | 2017-09-12 |  | MH-Wtg [9 h] | 4,050 | 4,050 | 003 |
| 112350.4 |  | Enq. floating & receipt of offers for Anti surge controller | 20d | 2017-08-04 A | 2017-09-01 A | 109090.4 | 100% |  | 2017-09-15 | 2017-10-12 |  |  |  |  | 001 |
| 112350.5 |  | Enq. floating & receipt of offers for Governor | 20d | 2017-08-04 A | 2017-09-01 A | 109090.5 | 100% |  | 2017-09-15 | 2017-10-12 |  |  |  |  | 001 |
| 112330 |  | Enq. floating & receipt of offers for Saftey items- WNA Plant | 20d | 2017-08-16 A | 2017-09-06 A | 109070 | 100% |  | 2017-09-28 | 2017-10-25 |  | MH-Wtg [5 h] | 2,250 | 2,250 | 001 |
| 112331 |  | Enq. floating & receipt of offers for Saftey items- CNA Plants | 20d | 2017-08-16 A | 2017-09-06 A | 109071 | 100% |  | 2017-09-08 | 2017-10-05 |  | MH-Wtg [1.32 h] | 594 | 594 | 002 |
| 112332 |  | Enq. floating & receipt of offers for Saftey items- Offsites & Utilities | 20d | 2017-08-16 A | 2017-09-06 A | 109072 | 100% |  | 2017-09-13 | 2017-10-10 |  | MH-Wtg [2.45 h] | 1,103 | 1,103 | 003 |
| 112351 |  | Enq. floating & receipt of offers for Cable trays | 15d | 2017-08-31 A | 2017-10-03 A | 109091, 111330 FF | 100% |  | 2017-11-17 | 2017-12-07 |  | MH-Wtg [3 h] | 1,350 | 1,350 | 003 |
| 112352 |  | Enq. floating & receipt of offers for Instrument cables | 20d | 2017-10-27 A | 2017-11-22 A | 109092 | 100% |  | 2017-10-12 | 2017-11-08 |  | MH-Wtg [3 h] | 1,350 | 1,350 | 003 |
| 112390 |  | Enq. floating & receipt of offers for Fire alarm system | 20d | 2017-11-01 A | 2017-12-11 A | 109130 | 100% |  | 2017-10-02 | 2017-10-27 |  | MH-Wtg [5 h] | 2,250 | 2,250 | 003 |
| 112370 |  | Enq. floating & receipt of offers for bulk materials (Deleted) | 20d | 2017-12-29 A | 2018-08-28 |  |  | 20d | 2018-01-08 | 2018-02-05 | 52163.9d | MH-Wtg |  |  | 003 |
| 112400 |  | Tender floating & receipt of offers for Instrument installation | 15d | 2017-12-29 A | 2018-01-22 A | 109140 | 100% |  | 2018-01-01 | 2018-01-19 |  | MH-Wtg [9 h] | 4,050 | 4,050 | 003 |
| 112342 |  | Enq. floating & receipt of offers for Switches- Offsites & Utilities | 20d | 2018-01-02 A | 2018-01-17 A | 109082 | 100% |  | 2018-02-01 | 2018-02-28 |  | MH-Wtg [1 h] | 450 | 450 | 003 |
| 112360 |  | Enq. floating & receipt of offers for Junction boxes | 15d | 2018-01-10 A | 2018-01-31 A | 109100 | 100% |  | 2018-02-01 | 2018-02-21 |  | MH-Wtg [3 h] | 1,350 | 1,350 | 003 |
| A127450 |  | Enquiry floating and receipt of offers for Gas detectors | 1d | 2018-03-06 A | 2018-04-27 A |  | 100% |  | 2018-03-01 | 2018-03-01 |  |  |  |  | 003 |
| 112301.1 |  | Enq. floating & receipt of offers for DIN Rail Transmitters- CNA Plants (Deleted) | 20d | 2018-08-01 | 2018-08-28 |  |  |  |  |  | 52163.9d |  |  |  | 002 |
| 112320 |  | Enq. floating & receipt of offers for Analysers/Gas detectors- WNA Plant (Deleted) | 20d | 2018-08-01 | 2018-08-28 |  |  |  |  |  | 52163.9d | MH-Wtg |  |  | 001 |
| 112340 |  | Enq. floating & receipt of offers for Switches- WNA Plant (Deleted) | 20d | 2018-08-01 | 2018-08-28 |  |  |  |  |  | 52163.9d | MH-Wtg |  |  | 001 |
| 112341 |  | Enq. floating & receipt of offers for Switches- CNA Plants (Deleted) | 20d | 2018-08-01 | 2018-08-28 |  |  |  |  |  | 52163.9d | MH-Wtg |  |  | 002 |

| ID | WBS | Activity | Duration | Start | Finish | Predecessors | Complete | Planned start | Planned finish | Total float | Resources | Cost | Actual cost | UNIT DESCRIPTION |
| --- | --- | --- | --- | --- | --- | --- | --- | --- | --- | --- | --- | --- | --- | --- |
|  | 3 | **Bid Evaluation & Technical Recomendation** |  | 2017-04-27 | 2018-08-28 |  |  |  |  |  |  |  |  |  |
| 112561 |  | Bid evaluation & TR for Control valves- CNA Plants | 18d | 2017-04-27 A | 2017-08-21 A | 112281 | 100% | 2017-08-01 | 2017-08-25 |  | MH-Wtg [6 h] | 2,700 | 2,700 | 002 |
| 112562 |  | Bid evaluation & TR for Control valves- Offsites & Utilities | 20d | 2017-04-27 A | 2017-09-22 A | 112282 | 100% | 2017-09-01 | 2017-09-28 |  | MH-Wtg [10 h] | 4,500 | 4,500 | 003 |
| 112550 |  | Bid evaluation & TR for DCS system | 20d | 2017-05-01 A | 2017-06-14 A | 112270 | 100% | 2017-05-01 | 2017-05-26 |  | MH-Wtg [40 h] | 18,000 | 18,000 | 003 |
| 112570 |  | Bid evaluation & TR for On/Off valves- WNA Plant | 20d | 2017-05-03 A | 2017-08-29 A | 112290 | 100% | 2017-09-01 | 2017-09-28 |  | MH-Wtg [11 h] | 4,950 | 4,950 | 001 |
| 112571 |  | Bid evaluation & TR for On/Off valves- CNA Plants | 20d | 2017-05-03 A | 2017-08-29 A | 112291 | 100% | 2017-09-01 | 2017-09-28 |  | MH-Wtg [6 h] | 2,700 | 2,700 | 002 |
| 112572 |  | Bid evaluation & TR for On/Off valves- Offstites & Utilities | 20d | 2017-05-03 A | 2017-08-29 A | 112292 | 100% | 2017-09-01 | 2017-09-28 |  | MH-Wtg [23 h] | 10,350 | 10,350 | 003 |
| 112560 |  | Bid evaluation & TR for Control valves- WNA Plant | 15d | 2017-05-08 A | 2017-08-22 A | 112280 | 100% | 2017-09-01 | 2017-09-21 |  | MH-Wtg [24 h] | 10,800 | 10,800 | 001 |
| 112660 |  | Bid evaluation & TR for Weigh bridge | 20d | 2017-05-09 A | 2017-05-09 A | 112380 | 100% | 2017-05-01 | 2017-05-26 |  | MH-Wtg [18 h] | 8,100 | 8,100 | 003 |
| 112590 |  | Bid evaluation & TR for Flow meters- WNA Plant | 20d | 2017-05-16 A | 2017-09-18 A | 112310 | 100% | 2017-09-01 | 2017-09-28 |  | MH-Wtg [10 h] | 4,500 | 4,500 | 001 |
| 112591 |  | Bid evaluation & TR for Flow meters- CNA Plants | 20d | 2017-05-16 A | 2017-10-31 A | 112311 | 100% | 2017-09-29 | 2017-10-26 |  | MH-Wtg [6 h] | 2,700 | 2,700 | 002 |
| 112630.3 |  | Bid evaluation & TR for Vibration monitoring system | 20d | 2017-05-18 A | 2017-05-18 A | 112350.3 | 100% | 2017-05-01 | 2017-05-26 |  |  |  |  | 001 |
| 112601 |  | Bid evaluation & TR for Analysers/Gas detectors- CNA Plants | 20d | 2017-06-17 A | 2017-11-02 A | 112321 | 100% | 2017-10-02 | 2017-10-27 |  | MH-Wtg [5.43 h] | 2,444 | 2,444 | 002 |
| 112602 |  | Bid evaluation & TR for Analysers/Gas detectors- Offsites & Utilities | 20d | 2017-06-17 A | 2017-11-02 A | 112322 | 100% | 2017-10-02 | 2017-10-27 |  | MH-Wtg [8 h] | 3,600 | 3,600 | 003 |
| 112630.4 |  | Bid evaluation & TR for Anti surge controller | 20d | 2017-09-01 A | 2017-09-22 A | 112350.4 | 100% | 2017-10-13 | 2017-11-09 |  |  |  |  | 001 |
| 112630.5 |  | Bid evaluation & TR for Governor | 20d | 2017-09-01 A | 2017-09-22 A | 112350.5 | 100% | 2017-10-13 | 2017-11-09 |  |  |  |  | 001 |
| 112610 |  | Bid evaluation & TR for Saftey items- WNA Plant | 20d | 2017-09-06 A | 2018-02-12 A | 112330 | 100% | 2018-02-01 | 2018-02-28 |  | MH-Wtg [12 h] | 5,400 | 5,400 | 001 |
| 112611 |  | Bid evaluation & TR for Saftey items- CNA Plants | 20d | 2017-09-06 A | 2018-02-02 A | 112331 | 100% | 2018-02-01 | 2018-02-28 |  | MH-Wtg [3.17 h] | 1,427 | 1,427 | 002 |
| 112612 |  | Bid evaluation & TR for Saftey items- Offsites & Utilities | 20d | 2017-09-06 A | 2018-02-02 A | 112332 | 100% | 2018-02-01 | 2018-02-28 |  | MH-Wtg [5 h] | 2,250 | 2,250 | 003 |
| 112592 |  | Bid evaluation & TR for Flow meters- Offsites & Utilities | 20d | 2017-09-18 A | 2017-10-31 A | 112312 | 100% | 2017-09-29 | 2017-10-26 |  | MH-Wtg [20 h] | 9,000 | 9,000 | 003 |
| 112631 |  | Bid evaluation & TR for Cable trays | 15d | 2017-10-04 A | 2017-12-22 A | 112351 | 100% | 2017-12-01 | 2017-12-21 |  | MH-Wtg [8 h] | 3,600 | 3,600 | 003 |
| 112632 |  | Bid evaluation & TR for Instrument cables | 20d | 2017-11-22 A | 2017-11-22 A | 112352 | 100% | 2017-11-22 | 2017-12-19 |  | MH-Wtg [8 h] | 3,600 | 3,600 | 003 |
| 112670 |  | Bid evaluation & TR for Fire alarm system | 20d | 2017-12-12 A | 2018-02-19 A | 112390 | 100% | 2018-02-01 | 2018-02-28 |  | MH-Wtg [12 h] | 5,400 | 5,400 | 003 |
| 112581 |  | Bid evaluation & TR for Transmitters- CNA Plants | 20d | 2017-12-26 A | 2018-04-20 A | 112301 | 100% | 2018-01-01 | 2018-01-29 |  | MH-Wtg [53 h] | 23,850 | 23,850 | 002 |
| 112582 |  | Bid evaluation & TR for Transmitters- Offsites & Utilities | 20d | 2017-12-26 A | 2018-04-20 A | 112302 | 100% | 2018-01-01 | 2018-01-29 |  | MH-Wtg [43 h] | 19,350 | 19,350 | 003 |
| 112622 |  | Bid evaluation & TR for Switches- Offsites & Utilities | 20d | 2018-01-18 A | 2018-03-30 A | 112342 | 100% | 2018-03-01 | 2018-03-28 |  | MH-Wtg [3 h] | 1,350 | 1,350 | 003 |
| 112680 |  | Bid evaluation & TR for Instrument installation | 15d | 2018-01-22 A | 2018-01-25 A | 112400 | 100% | 2018-02-22 | 2018-03-14 |  | MH-Wtg [20 h] | 9,000 | 9,000 | 003 |
| 112640 |  | Bid evaluation & TR for Junction boxes | 10d | 2018-02-01 A | 2018-02-19 A | 112360 | 100% | 2018-02-22 | 2018-03-07 |  | MH-Wtg [8 h] | 3,600 | 3,600 | 003 |
| 112580 |  | Bid evaluation & TR for Transmitters- WNA Plant | 12d | 2018-03-20 A | 2018-04-20 A | 112300 | 100% | 2018-03-01 | 2018-03-16 |  | MH-Wtg [11 h] | 4,950 | 4,950 | 001 |
| 112630 |  | Bid evaluation & TR for Gauges- WNA Plant | 20d | 2018-03-28 A | 2018-04-25 A | 112350 | 100% | 2018-03-01 | 2018-03-28 |  | MH-Wtg [11 h] | 4,950 | 4,950 | 001 |
| 112630.1 |  | Bid evaluation & TR for Gauges- CNA Plants | 20d | 2018-03-28 A | 2018-04-25 A | 112350.1 | 100% | 2018-03-01 | 2018-03-28 |  | MH-Wtg [3.17 h] | 1,427 | 1,427 | 002 |
| 112630.2 |  | Bid evaluation & TR for Gauges- Offsites & Utilities | 20d | 2018-03-28 A | 2018-04-25 A | 112350.2 | 100% | 2018-03-01 | 2018-03-28 |  | MH-Wtg [6 h] | 2,700 | 2,700 | 003 |
| A127460 |  | Bid evaluation & TR for Gas detetctors | 1d | 2018-04-27 A | 2018-04-27 A |  | 100% | 2018-05-01 | 2018-05-01 |  |  |  |  | 003 |
| 112581.1 |  | Bid evaluation & TR for DIN Rail Transmitters- CNA Plants (Deleted) | 20d | 2018-08-01 | 2018-08-28 |  |  |  |  | 52163.9d |  |  |  | 002 |
| 112600 |  | Bid evaluation & TR for Analysers/Gas detectors- WNA Plant (Deleted) | 20d | 2018-08-01 | 2018-08-28 |  |  |  |  | 52163.9d | MH-Wtg |  |  | 001 |
| 112620 |  | Bid evaluation & TR for Switches- WNA Plant (Deleted) | 19d | 2018-08-01 | 2018-08-27 |  |  |  |  | 52164.9d | MH-Wtg |  |  | 001 |
| 112621 |  | Bid evaluation & TR for Switches- CNA Plants (Deleted) | 19d | 2018-08-01 | 2018-08-27 |  |  |  |  | 52164.9d | MH-Wtg |  |  | 002 |
| 112650 |  | Bid evaluation & TR for bulk materials (Deleted) | 20d | 2018-08-01 | 2018-08-28 |  |  |  |  | 52163.9d | MH-Wtg |  |  | 003 |

| ID | WBS | Activity | Duration | Start | Finish | Predecessors | Complete | Planned start | Planned finish | Total float | Resources | Cost | Actual cost | UNIT DESCRIPTION |
| --- | --- | --- | --- | --- | --- | --- | --- | --- | --- | --- | --- | --- | --- | --- |
|  | 4 | **Technical Order Specifications** |  | 2017-09-15 | 2018-09-11 |  |  |  |  |  |  |  |  |  |
| 112800 |  | TOS for Weigh bridge | 10d | 2017-09-15 A | 2017-11-02 A | 113710 | 100% | 2017-10-02 | 2017-10-13 |  | MH-Wtg [3.4 h] | 1,530 | 1,530 | 003 |
| 112701 |  | TOS for Control valves- CNA Plants | 10d | 2017-09-20 A | 2017-10-13 A | 113611 | 100% | 2017-09-25 | 2017-10-06 |  | MH-Wtg [1.7 h] | 765 | 765 | 002 |
| 112690 |  | TOS for DCS system | 10d | 2017-10-05 A | 2017-11-02 A | 113600 | 100% | 2017-10-30 | 2017-11-10 |  | MH-Wtg [10 h] | 4,500 | 4,500 | 003 |
| 112710 |  | TOS for On/Off valves- WNA Plant | 9d | 2017-10-07 A | 2017-11-13 A | 113612.1 | 100% | 2017-11-01 | 2017-11-13 |  | MH-Wtg [3 h] | 1,350 | 1,350 | 001 |
| 112711 |  | TOS for On/Off valves- CNA Plants | 10d | 2017-10-07 A | 2017-11-13 A | 113621 | 100% | 2017-11-01 | 2017-11-14 |  | MH-Wtg [1.7 h] | 765 | 765 | 002 |
| 112712 |  | TOS for On/Off valves- Offsites & Utilities | 10d | 2017-10-07 A | 2017-11-13 A | 113621.1 | 100% | 2017-11-01 | 2017-11-14 |  | MH-Wtg [6 h] | 2,700 | 2,700 | 003 |
| 112700 |  | TOS for Control valves- WNA Plant | 10d | 2017-10-13 A | 2017-12-25 A | 113610 | 100% | 2017-10-30 | 2017-11-10 |  | MH-Wtg [6 h] | 2,700 | 2,700 | 001 |
| 112702 |  | TOS for Control valves- Offsites & Utilities | 10d | 2017-10-13 A | 2017-11-21 A | 113612 | 100% | 2017-10-30 | 2017-11-10 |  | MH-Wtg [2 h] | 900 | 900 | 003 |
| 112730 |  | TOS for Flow meters- WNA Plant | 10d | 2017-11-02 A | 2018-01-17 A | 113640 | 100% | 2017-12-29 | 2018-01-11 |  | MH-Wtg [2 h] | 900 | 900 | 001 |
| 112731 |  | TOS for Flow meters- CNA Plants | 10d | 2017-11-02 A | 2018-02-06 A | 113641 | 100% | 2017-12-29 | 2018-01-11 |  | MH-Wtg [1.7 h] | 765 | 765 | 002 |
| 112732 |  | TOS for Flow meters- Offsites & Utilities | 10d | 2017-11-02 A | 2018-02-06 A | 113642 | 100% | 2018-02-01 | 2018-02-14 |  | MH-Wtg [5 h] | 2,250 | 2,250 | 003 |
| 112770.3 |  | TOS for Vibration monitoring system | 10d | 2017-12-05 A | 2017-12-26 A | 113680.3 | 100% | 2018-01-01 | 2018-01-12 |  |  |  |  | 001 |
| 112770.4 |  | TOS for Anti surge controller | 10d | 2017-12-05 A | 2017-12-26 A | 113680.4 | 100% | 2018-01-01 | 2018-01-12 |  |  |  |  | 001 |
| 112770.5 |  | TOS for Governor | 10d | 2017-12-05 A | 2017-12-26 A | 113680.5 | 100% | 2018-01-01 | 2018-01-12 |  |  |  |  | 001 |
| 112772 |  | TOS for Instrument cables | 10d | 2018-01-12 A | 2018-02-02 A | 113682 | 100% | 2018-02-01 | 2018-02-14 |  | MH-Wtg [2.26 h] | 1,017 | 1,017 | 003 |
| 112771 |  | TOS for Cable trays | 10d | 2018-02-01 A | 2018-02-12 A | 113681 | 100% | 2018-02-01 | 2018-02-14 |  | MH-Wtg [2.26 h] | 1,017 | 1,017 | 003 |
| 112741 |  | TOS for Analysers/Gas detectors- CNA Plants | 10d | 2018-02-09 A | 2018-03-20 A | 113651 | 100% | 2018-03-01 | 2018-03-14 |  | MH-Wtg [1.36 h] | 612 | 612 | 002 |
| 112742 |  | TOS for Analysers/Gas detectors- Offsites & Utilities | 10d | 2018-02-09 A | 2018-03-20 A | 113652 | 100% | 2018-03-01 | 2018-03-14 |  | MH-Wtg [2.26 h] | 1,017 | 1,017 | 003 |
| 112780 |  | TOS for Junction boxes | 10d | 2018-03-22 A | 2018-04-03 A | 113690 | 100% | 2018-03-22 | 2018-04-04 |  | MH-Wtg [2.26 h] | 1,017 | 1,017 | 003 |
| 112750 |  | TOS for Saftey items- WNA Plant | 10d | 2018-03-30 A | 2018-04-16 A | 113660 | 100% | 2018-03-22 | 2018-04-04 |  | MH-Wtg [3.4 h] | 1,530 | 1,530 | 001 |
| 112751 |  | TOS for Saftey items- CNA Plants | 10d | 2018-03-30 A | 2018-04-16 A | 113661 | 100% | 2018-03-22 | 2018-04-04 |  | MH-Wtg [0.79 h] | 356 | 356 | 002 |
| 112752 |  | TOS for Saftey items- Offsites & Utilities | 10d | 2018-03-30 A | 2018-04-16 A | 113662 | 100% | 2018-03-22 | 2018-04-04 |  | MH-Wtg [1.47 h] | 662 | 662 | 003 |
| 112720 |  | TOS for Transmitters- WNA Plant | 10d | 2018-08-01 | 2018-08-14 | 113630 |  |  |  | 52173.9d | MH-Wtg [3 h] | 1,350 |  | 001 |
| 112721 |  | TOS for Transmitters- CNA Plants | 10d | 2018-08-01 | 2018-08-14 | 113631 |  |  |  | 52173.9d | MH-Wtg [12 h] | 5,400 |  | 002 |
| 112721.1 |  | TOS for DIN Rail Transmitters- CNA Plants (Deleted) | 10d | 2018-08-01 | 2018-08-14 |  |  |  |  | 52173.9d |  |  |  | 002 |
| 112722 |  | TOS for Transmitters- Offsites & Utilities | 10d | 2018-08-01 | 2018-08-14 | 113632 |  |  |  | 52173.9d | MH-Wtg [10 h] | 4,500 |  | 003 |
| 112740 |  | TOS for Analysers/Gas detectors- WNA Plant (Deleted) | 10d | 2018-08-01 | 2018-08-14 |  |  |  |  | 52173.9d | MH-Wtg |  |  | 001 |
| 112760 |  | TOS for Switches- WNA Plant (Deleted) | 10d | 2018-08-01 | 2018-08-14 |  |  |  |  | 52173.9d | MH-Wtg |  |  | 001 |
| 112761 |  | TOS for Switches- CNA Plants (Deleted) | 10d | 2018-08-01 | 2018-08-14 |  |  |  |  | 52173.9d | MH-Wtg |  |  | 002 |
| 112770 |  | TOS for Gauges- WNA Plant | 10d | 2018-08-01 | 2018-08-14 | 113680 |  |  |  | 52173.9d | MH-Wtg [3.17 h] | 1,427 |  | 001 |
| 112770.1 |  | TOS for Gauges- CNA Plants | 10d | 2018-08-01 | 2018-08-14 | 113680.1 |  |  |  | 52173.9d | MH-Wtg [0.79 h] | 356 |  | 002 |
| 112770.2 |  | TOS for Gauges- Offsites & Utilities | 10d | 2018-08-01 | 2018-08-14 | 113680.2 |  |  |  | 52173.9d | MH-Wtg [1.7 h] | 765 |  | 003 |
| 112790 |  | TOS for bulk materials (Deleted) | 10d | 2018-08-01 | 2018-08-14 |  |  |  |  | 52173.9d | MH-Wtg |  |  | 003 |
| 112810 |  | TOS for Fire alarm system | 10d | 2018-08-01 | 2018-08-14 | 113720 |  |  |  | 52173.9d | MH-Wtg [3.4 h] | 1,530 |  | 003 |
| 112820 |  | TOS for Instrument installation | 10d | 2018-08-01 | 2018-08-14 | 113730 |  |  |  | 52173.9d | MH-Wtg [5 h] | 2,250 |  | 003 |
| A127470 |  | TOS for Gas detectors | 1d | 2018-08-01 | 2018-08-01 |  |  |  |  | 52182.9d |  |  |  | 003 |
| 112762 |  | TOS for Switches- Offsites & Utilities | 10d | 2018-08-29 | 2018-09-11 | 113672 |  |  |  | 52153.9d | MH-Wtg [0.91 h] | 410 |  | 003 |

| ID | WBS | Activity | Duration | Start | Finish | Complete | Planned start | Planned finish | Total float | UNIT DESCRIPTION |
| --- | --- | --- | --- | --- | --- | --- | --- | --- | --- | --- |
|  | 7 | **Addition from Jan'18** |  | 2018-01-05 | 2018-08-01 |  |  |  |  |  |
| A126820 |  | TOS for Nitric acid concentrator (MEE) | 1d | 2018-01-05 A | 2018-01-17 A | 100% | 2018-02-01 | 2018-02-01 |  | 003 |
| A126790 |  | Enquiry floating and receipt of offers for Bearing temperature RTD | 1d | 2018-01-17 A | 2018-01-30 A | 100% | 2018-02-01 | 2018-02-01 |  | 001 |
| A126800 |  | Enquiry floating and receipt of offers for Stack analyzer (CEMS) | 1d | 2018-01-22 A | 2018-04-18 A | 100% | 2018-02-01 | 2018-02-01 |  | 001 |
| A126810 |  | Enquiry floating and receipt of offers for Online effluent monitoring system (EQMS) | 1d | 2018-01-25 A | 2018-04-11 A | 100% | 2018-02-01 | 2018-02-01 |  | 003 |
| A126840 |  | TR for Bearing temperature RTD | 1d | 2018-01-30 A | 2018-02-13 A | 100% | 2018-03-01 | 2018-03-01 |  | 001 |
| A126710 |  | Enquiry floating & receipt of offers for CW pump for MEE | 1d | 2018-02-02 A | 2018-02-22 A | 100% | 2018-02-01 | 2018-02-01 |  | 003 |
| A126780 |  | Enquiry floating and receipt of offers for Self actuated control valves | 1d | 2018-02-03 A | 2018-03-20 A | 100% | 2018-03-01 | 2018-03-01 |  | 001 |
| A127000 |  | Enquiry floating and receipt of offers Tail gas vent silencer | 1d | 2018-02-21 A | 2018-03-16 A | 100% | 2018-03-01 | 2018-03-01 |  | 001 |
| A126700 |  | Enquiry floating & receipt of offers for RW intake pumps | 1d | 2018-02-23 A | 2018-03-31 A | 100% | 2018-03-01 | 2018-03-01 |  | 003 |
| A127320 |  | Bid evaluation & TR for Self actuated control valves | 1d | 2018-03-20 A | 2018-03-20 A | 100% | 2018-03-01 | 2018-03-01 |  | 001 |
| A127330 |  | Bid evaluation & TR for Stack analyzer (CEMS) | 1d | 2018-03-28 A | 2018-04-18 A | 100% | 2018-03-01 | 2018-03-01 |  | 001 |
| A127290 |  | Bid evaluation & TR for RW intake pumps | 1d | 2018-03-31 A | 2018-03-31 A | 100% | 2018-03-01 | 2018-03-01 |  | 003 |
| A127300 |  | Bid evaluation & TR for CW pump for MEE | 1d | 2018-03-31 A | 2018-03-31 A | 100% | 2018-03-01 | 2018-03-01 |  | 003 |
| A127100 |  | Bid evaluation & TR for Tail gas vent silencer | 1d | 2018-04-02 A | 2018-04-02 A | 100% | 2018-03-01 | 2018-03-01 |  | 001 |
| A127340 |  | Bid evaluation & TR for Online effluent monitoring system (EQMS) | 1d | 2018-04-11 A | 2018-04-11 A | 100% | 2018-05-01 | 2018-05-01 |  | 003 |
| A127380 |  | TOS for Self actuated control valves | 1d | 2018-04-17 A | 2018-04-17 A | 100% | 2018-05-01 | 2018-05-01 |  | 001 |
| A127070 |  | Enquiry floating and receipt of offers Electical work for GIDC pumping station | 1d | 2018-04-20 A | 2018-05-03 A | 100% | 2018-05-01 | 2018-05-01 |  | 003 |
| A127360 |  | TOS for CW pump for MEE | 1d | 2018-04-30 A | 2018-04-30 A | 100% | 2018-05-01 | 2018-05-01 |  | 003 |
| A127350 |  | TOS for RW intake pumps | 1d | 2018-05-02 A | 2018-05-02 A | 100% | 2018-05-01 | 2018-05-01 |  | 003 |
| A127170 |  | Bid evaluation & TR for Electrical work for GIDC pumping station | 1d | 2018-05-09 A | 2018-05-09 A | 100% | 2018-06-01 | 2018-06-01 |  | 003 |
| A127200 |  | TOS for Tail gas vent silencer | 1d | 2018-05-14 A | 2018-05-14 A | 100% | 2018-06-01 | 2018-06-01 |  | 001 |
| A127270 |  | TOS for Electrical work for GIDC pumping station | 1d | 2018-08-01 | 2018-08-01 |  |  |  | 52182.9d | 003 |
| A127390 |  | TOS for Stack analyzer (CEMS) | 1d | 2018-08-01 | 2018-08-01 |  |  |  | 52182.9d | 001 |
| A127400 |  | TOS for Online effluent monitoring system (EQMS) | 1d | 2018-08-01 | 2018-08-01 |  |  |  | 52182.9d | 003 |

| ID | WBS | Activity | Duration | Start | Finish | Predecessors | Complete | Remaining | Planned start | Planned finish | Total float | Free float | Constraint | Resources | Cost | Actual cost | UNIT DESCRIPTION |
| --- | --- | --- | --- | --- | --- | --- | --- | --- | --- | --- | --- | --- | --- | --- | --- | --- | --- |
|  | 3 | **Procurement** |  | 2016-09-29 | 2020-05-14 |  |  |  |  |  |  |  |  |  |  |  |  |
|  | 3 | **Refurbishment** |  | 2016-09-29 | 2018-08-30 |  |  |  |  |  |  |  |  |  |  |  |  |
| A112821 |  | Refurbishment of WNA Plant equipments | 349d | 2016-09-29 A | 2018-08-30 | 000001 | 94% | 22d | 2016-09-29 | 2018-01-31 | -151d | 0d | finish on 2018-01-31 | MH-Wtg [24154 h] | 10,869,300 | 10,760,607 | 001 |
|  | 1 | **Ordering** |  | 2016-10-25 | 2018-09-25 |  |  |  |  |  |  |  |  |  |  |  |  |
|  | 1 | **Process** |  | 2017-04-11 | 2018-08-28 |  |  |  |  |  |  |  |  |  |  |  |  |
| 113010 |  | Ordering of Chiller unit | 15d | 2017-04-11 A | 2017-06-20 A | 109890 | 100% |  | 2017-06-01 | 2017-06-21 |  |  |  | MH-Wtg [92 h] | 41,400 | 41,400 | 003 |
| 112980 |  | Ordering of Agitators | 20d | 2017-04-28 A | 2017-04-28 A | 109860 | 100% |  | 2017-08-01 | 2017-08-29 |  |  |  | MH-Wtg [15 h] | 6,750 | 6,750 | 002 |
| 112840 |  | Ordering of Raw water treatment plant | 20d | 2017-05-02 A | 2017-06-28 A | 109720 | 100% |  | 2017-08-01 | 2017-08-29 |  |  |  | MH-Wtg [241.06 h] | 108,477 | 108,477 | 003 |
| 112850 |  | Ordering of Cooling tower package | 20d | 2017-05-10 A | 2017-07-19 A | 109730 | 100% |  | 2017-08-01 | 2017-08-29 |  |  |  | MH-Wtg [241.06 h] | 108,477 | 108,477 | 003 |
| 112830 |  | Ordering of Fire fighting package | 20d | 2017-05-19 A | 2017-07-26 A | 109710 | 100% |  | 2017-08-01 | 2017-08-29 |  |  |  | MH-Wtg [301 h] | 135,450 | 135,450 | 003 |
| 112860 |  | Ordering of DM plant | 20d | 2017-06-02 A | 2017-06-28 A | 109740 | 100% |  | 2017-08-01 | 2017-08-29 |  |  |  | MH-Wtg [90.4 h] | 40,680 | 40,680 | 003 |
| 112931 |  | Ordering of API pumps- CNA Plants | 15d | 2017-06-13 A | 2017-10-06 A | 109811 | 100% |  | 2017-09-01 | 2017-09-21 |  |  |  | MH-Wtg [54 h] | 24,300 | 24,300 | 002 |
| 112990 |  | Ordering of Air compressor | 20d | 2017-07-05 A | 2017-08-16 A | 109870 | 100% |  | 2017-09-01 | 2017-09-28 |  |  |  | MH-Wtg [92 h] | 41,400 | 41,400 | 003 |
| 113000 |  | Ordering of Air drier | 20d | 2017-07-05 A | 2017-08-16 A | 109880 | 100% |  | 2017-09-01 | 2017-09-28 |  |  |  | MH-Wtg [60.26 h] | 27,117 | 27,117 | 003 |
| 113100.7 |  | Ordering of Deareator | 20d | 2017-07-25 A | 2017-09-06 A | 109980.7 | 100% |  | 2017-09-01 | 2017-09-28 |  |  |  |  |  |  | 001 |
| 112870 |  | Ordering of Boiler for CPP package | 20d | 2017-07-27 A | 2017-07-27 A |  | 100% |  | 2017-08-01 | 2017-08-29 |  |  | finish on or after 2017-07-07 | MH-Wtg [573 h] | 257,850 | 257,850 | 003 |
| 113100.3 |  | Ordering of Inlet air filter | 20d | 2017-08-02 A | 2017-09-26 A | 109980.3 | 100% |  | 2017-09-25 | 2017-10-20 |  |  |  |  |  |  | 001 |
| 112930 |  | Ordering of Non-API pumps- WNA Plant | 15d | 2017-08-11 A | 2017-09-20 A | 109810 | 100% |  | 2017-09-01 | 2017-09-21 |  |  |  | MH-Wtg [109 h] | 49,050 | 49,050 | 001 |
| 112940 |  | Ordering of Non-API pumps | 15d | 2017-08-11 A | 2017-09-18 A | 109820 | 100% |  | 2017-09-29 | 2017-10-19 |  |  |  | MH-Wtg [380 h] | 171,000 | 171,000 | 003 |
| 113100.1 |  | Ordering of Ejectors | 20d | 2017-08-20 A | 2017-10-26 A | 109980.1 | 100% |  | 2017-12-01 | 2017-12-28 |  |  |  | MH-Wtg [75.33 h] | 33,899 | 33,899 | 001 |
| 112950 |  | Ordering of Cooling water pumps | 20d | 2017-08-24 A | 2017-09-20 A | 109830 | 100% |  | 2017-10-27 | 2017-11-23 |  |  |  | MH-Wtg [150.66 h] | 67,797 | 67,797 | 003 |
| 112910 |  | Ordering of Side stream filter package | 20d | 2017-08-31 A | 2017-10-30 A | 109790 | 100% |  | 2017-09-29 | 2017-10-26 |  |  |  | MH-Wtg [45.2 h] | 20,340 | 20,340 | 003 |
| 113101 |  | Ordering of De-alkalizer (Deleted) | 20d | 2017-08-31 A | 2018-08-28 | 109981 |  | 20d | 2017-09-29 | 2017-10-26 | 52163.9d |  |  |  |  |  | 003 |
| 112870.1 |  | Ordering of STG for CPP package | 1d | 2017-09-14 A | 2017-09-14 A |  | 100% |  | 2017-09-25 | 2017-09-25 |  |  |  |  |  |  | 003 |
| 113101.4 |  | Ordering of PFAlined pumps | 20d | 2017-09-19 A | 2017-10-11 A | 109981.4 | 100% |  | 2017-10-02 | 2017-10-27 |  |  |  |  |  |  | 003 |
| 112960 |  | Ordering of Metering pumps | 20d | 2017-09-28 A | 2018-01-19 A | 109840 | 100% |  | 2017-12-01 | 2017-12-28 |  |  |  | MH-Wtg [60.26 h] | 27,117 | 27,117 | 003 |
| 112890 |  | Ordering of ETP package | 20d | 2017-09-29 A | 2017-12-19 A | 109770 | 100% |  | 2017-12-01 | 2017-12-28 |  |  |  | MH-Wtg [241.06 h] | 108,477 | 108,477 | 003 |
| 113101.1 |  | Ordering of Ammonia compressor | 20d | 2017-09-29 A | 2017-11-24 A | 109981.1 | 100% |  | 2017-12-01 | 2017-12-28 |  |  |  |  |  |  | 003 |
| 112910.1 |  | Ordering of Chlorination package | 20d | 2017-09-30 A | 2017-11-30 A | 109800 | 100% |  | 2017-12-01 | 2017-12-28 |  |  |  | MH-Wtg [25 h] | 11,250 | 11,250 | 003 |
| 113100.4 |  | Ordering of Filters | 20d | 2017-09-30 A | 2017-12-29 A | 109980.4 | 100% |  | 2017-12-01 | 2017-12-28 |  |  |  |  |  |  | 001 |
| 113100.6 |  | Ordering of Mist separator | 20d | 2017-10-10 A | 2017-10-26 A | 109980.6 | 100% |  | 2017-10-02 | 2017-10-27 |  |  |  |  |  |  | 001 |
| 113101.3 |  | Ordering of Surface condenser pump | 20d | 2017-10-14 A | 2017-11-13 A | 109981.3 | 100% |  | 2017-12-01 | 2017-12-28 |  |  |  |  |  |  | 001 |
| 113101.9.2 |  | Ordering of Rotary vane pumps | 20d | 2017-10-19 A | 2017-12-22 A | 109981.9.2 | 100% |  | 2017-12-01 | 2017-12-28 |  |  |  |  |  |  | 003 |
| 113101.9.1 |  | Ordering of Platinum filter (Internals) | 20d | 2017-10-28 A | 2017-12-14 A | 109981.9.1 | 100% |  | 2017-12-01 | 2017-12-28 |  |  |  |  |  |  | 001 |
| 113101.9.3 |  | Ordering of Ammonia transfer pumps | 20d | 2017-10-31 A | 2017-12-29 A | 109981.9.3 | 100% |  | 2017-12-01 | 2017-12-28 |  |  |  |  |  |  | 003 |
| 112970 |  | Ordering of Extended shaft pumps | 20d | 2017-11-01 A | 2018-01-25 A | 109850 | 100% |  | 2017-12-01 | 2017-12-28 |  |  |  | MH-Wtg [46 h] | 20,700 | 20,700 | 003 |
| 113060 |  | Ordering of Desuperheater | 20d | 2017-11-01 A | 2017-12-20 A | 109940 | 100% |  | 2017-12-01 | 2017-12-28 |  |  |  | MH-Wtg [12 h] | 5,400 | 5,400 | 003 |
| 113100.8 |  | Ordering of Vacuum jet | 20d | 2017-11-01 A | 2017-12-29 A | 109980.8 | 100% |  | 2017-12-01 | 2017-12-28 |  |  |  |  |  |  | 001 |
| 113101.5 |  | Ordering of Lube oil pumps | 20d | 2017-11-04 A | 2017-12-14 A | 109981.5 | 100% |  | 2017-12-01 | 2017-12-28 |  |  |  |  |  |  | 001 |
| 113040 |  | Ordering of Safety shower/Eye wash | 10d | 2017-11-05 A | 2017-12-20 A | 109920 | 100% |  | 2017-12-01 | 2017-12-14 |  |  |  | MH-Wtg [6 h] | 2,700 | 2,700 | 001 |
| 113101.2 |  | Ordering of Packings/Internals | 20d | 2017-11-15 A | 2017-12-11 A |  | 100% |  | 2018-01-04 | 2018-02-01 |  |  | finish on or after 2018-02-01 |  |  |  | 002 |
| 113101.8 |  | Ordering of Lift (CNA) | 20d | 2017-11-18 A | 2018-01-05 A | 109981.8 | 100% |  | 2017-12-01 | 2017-12-28 |  |  |  |  |  |  | 002 |
| 113101.9.5 |  | Ordering of Condensate transfer pumps | 20d | 2017-11-21 A | 2018-01-10 A | 109981.9.5 | 100% |  | 2017-12-01 | 2017-12-28 |  |  |  |  |  |  | 003 |
| 112900 |  | Ordering of HVAC package | 20d | 2017-11-23 A | 2018-01-09 A | 109780 | 100% |  | 2017-12-01 | 2017-12-28 |  |  |  | MH-Wtg [46 h] | 20,700 | 20,700 | 003 |
| 113100.5 |  | Ordering of Mixer | 20d | 2017-12-02 A | 2018-01-17 A | 109980.5 | 100% |  | 2017-12-01 | 2017-12-28 |  |  |  |  |  |  | 001 |
| 113100.2 |  | Ordering of Ammonia scrubber | 20d | 2017-12-07 A | 2018-01-30 A | 109980.2 | 100% |  | 2017-12-01 | 2017-12-28 |  |  |  | MH-Wtg [75.33 h] | 33,899 | 33,899 | 003 |
| 113101.6 |  | Ordering of Lube oil filters | 20d | 2017-12-16 A | 2018-02-27 A | 109981.6 | 100% |  | 2018-01-05 | 2018-02-02 |  |  |  |  |  |  | 001 |
| 113050 |  | Ordering of Loading arms | 15d | 2017-12-27 A | 2018-02-13 A | 109930 | 100% |  | 2018-02-01 | 2018-02-21 |  |  |  | MH-Wtg [9 h] | 4,050 | 4,050 | 003 |
| 113101.9 |  | Ordering of Chemical skids | 20d | 2017-12-27 A | 2018-02-12 A | 109981.9 | 100% |  | 2018-02-01 | 2018-02-28 |  |  |  |  |  |  | 001 |
| 113101.9.4 |  | Ordering of Silica gel | 20d | 2017-12-29 A | 2018-02-23 A | 109981.9.4 | 100% |  | 2018-02-01 | 2018-02-28 |  |  |  |  |  |  | 003 |
| 113101.9.6 |  | Ordering of Ammonia effluent transfer pumps (Mobile) | 20d | 2017-12-29 A | 2018-06-07 A | 109981.9.6 | 100% |  | 2018-02-01 | 2018-02-28 |  |  |  |  |  |  | 003 |
| 113100 |  | Ordering of EOT Cranes | 15d | 2018-01-03 A | 2018-02-19 A | 109980 | 100% |  | 2018-02-01 | 2018-02-21 |  |  |  | MH-Wtg [15.07 h] | 6,782 | 6,782 | 003 |
| 113101.9.7 |  | Ordering of Nitric acid concentration unit (MEE) | 1d | 2018-01-05 A | 2018-01-05 A |  | 100% |  | 2018-02-01 | 2018-02-01 |  |  |  |  |  |  | 003 |
| 113101.9.9 |  | Ordering of CW pump for MEE | 1d | 2018-04-13 A | 2018-04-13 A |  | 100% |  |  |  |  |  | start on or after 2018-04-13 |  |  |  | 003 |
| 113101.9.8 |  | Ordering of RW intake pumps | 1d | 2018-04-26 A | 2018-04-26 A |  | 100% |  | 2018-04-02 | 2018-04-02 |  |  |  |  |  |  | 003 |
| 113030 |  | Ordering of Non-metallic tanks | 10d | 2018-04-30 A | 2018-08-14 | 109910 |  | 10d | 2017-12-01 | 2017-12-14 | 52163.9d | 0d |  | MH-Wtg [6 h] | 2,700 | 1,350 | 003 |
| 113101.9.9.2 |  | Ordering of Tail gas vent silencer | 1d | 2018-05-11 A | 2018-05-11 A |  | 100% |  | 2018-05-01 | 2018-05-01 |  |  |  |  |  |  | 001 |
| 113101.9.9.3 |  | Ordering of PRDS | 1d | 2018-05-30 A | 2018-05-30 A |  | 100% |  | 2018-06-01 | 2018-06-01 |  |  |  |  |  |  | 003 |
| 113101.9.9.1 |  | Ordering of Pressure vacuum relief valve | 1d | 2018-06-01 A | 2018-06-01 A |  | 100% |  |  |  |  |  |  |  |  |  | 001 |
| 112932 |  | Ordering of API pumps- Offsites & Utilites (Deleted) | 15d | 2018-08-01 | 2018-08-21 |  |  |  |  |  | 52168.9d |  |  | MH-Wtg |  |  | 003 |
| 113020 |  | Ordering of Plate type exchangers (Deleted) | 20d | 2018-08-01 | 2018-08-28 |  |  |  |  |  | 52163.9d |  |  | MH-Wtg |  |  | 003 |
| 113070 |  | Ordering of Flame arrestors (Deleted) | 10d | 2018-08-01 | 2018-08-14 |  |  |  |  |  | 52173.9d |  |  | MH-Wtg |  |  | 003 |
| 113080 |  | Ordering of Breather valves (Deleted) | 9d | 2018-08-01 | 2018-08-13 |  |  |  |  |  | 52174.9d |  |  | MH-Wtg |  |  | 003 |
| 113090 |  | Ordering of NG station (Deleted) | 15d | 2018-08-01 | 2018-08-21 |  |  |  |  |  | 52168.9d |  |  | MH-Wtg |  |  | 003 |
| 113100.9 |  | Ordering of Roof vent fan (Deleted) | 20d | 2018-08-01 | 2018-08-28 |  |  |  |  |  | 52163.9d |  |  |  |  |  | 001 |
| 113101.7 |  | Ordering of Inlet air silencer (Deleted) | 20d | 2018-08-01 | 2018-08-28 |  |  |  |  |  | 52163.9d |  |  |  |  |  | 001 |

| ID | WBS | Activity | Duration | Start | Finish | Predecessors | Complete | Planned start | Planned finish | Total float | Constraint | Resources | Cost | Actual cost | UNIT DESCRIPTION |
| --- | --- | --- | --- | --- | --- | --- | --- | --- | --- | --- | --- | --- | --- | --- | --- |
|  | 2 | **Civil & Structural** |  | 2016-10-25 | 2018-08-21 |  |  |  |  |  |  |  |  |  |  |
| 113106 |  | Ordering of Soil testing | 26d | 2016-10-25 A | 2016-10-25 A | 103249 | 100% | 2017-03-01 | 2017-04-05 |  | start on 2016-10-25 | MH-Wtg [120.77 h] | 54,347 | 54,347 | 003 |
| 113111 |  | Ordering of Boundary wall | 10d | 2017-02-01 A | 2017-03-24 A | 110371 | 100% | 2017-04-03 | 2017-04-14 |  |  | MH-Wtg [120.77 h] | 54,347 | 54,347 | 003 |
| 113112 |  | Ordering of Pre-fabricated structure | 10d | 2017-02-26 A | 2017-03-24 A | 110372 | 100% | 2017-04-03 | 2017-04-14 |  |  | MH-Wtg [60.39 h] | 27,176 | 27,176 | 003 |
| 113110 |  | Ordering of Piling work | 10d | 2017-03-16 A | 2017-04-10 A | 110370 | 100% | 2017-04-03 | 2017-04-14 |  |  | MH-Wtg [241.54 h] | 108,693 | 108,693 | 003 |
| 113112.1 |  | Ordering of Civil & structural work (Part-I) | 10d | 2017-04-19 A | 2017-05-11 A | 110372.1 | 100% | 2017-06-01 | 2017-06-14 |  |  | MH-Wtg [181.16 h] | 81,522 | 81,522 | 003 |
| 113121 |  | Ordering of Roads & drain work (Covered in Part I & II) | 10d | 2017-04-19 A | 2017-10-23 A | 113120 FF | 100% | 2017-09-22 | 2017-10-05 |  |  | MH-Wtg [120.77 h] | 54,347 | 54,347 | 003 |
| 113130 |  | Ordering of Architectural work (Covered in Part I & II) | 20d | 2017-04-19 A | 2017-10-23 A | 113120 FF | 100% | 2017-10-27 | 2017-11-23 |  |  | MH-Wtg [60.39 h] | 27,176 | 27,176 | 003 |
| 113150 |  | Ordering of Industrial painting (Covered in Part I & II) | 20d | 2017-04-19 A | 2017-10-23 A | 113120 FF | 100% | 2017-10-27 | 2017-11-23 |  |  | MH-Wtg [60.39 h] | 27,176 | 27,176 | 003 |
| 113120 |  | Ordering of Civil & structural work (Part-II) | 10d | 2017-08-24 A | 2017-10-23 A | 110380 | 100% | 2017-10-13 | 2017-10-26 |  |  | MH-Wtg [181.16 h] | 81,522 | 81,522 | 003 |
| 113140 |  | Ordering of Acid resistant tiling (Covered in Part-II) | 20d | 2017-08-24 A | 2017-10-23 A | 113120 FF | 100% | 2017-10-27 | 2017-11-23 |  |  | MH-Wtg [60.39 h] | 27,176 | 27,176 | 003 |
| 114370 |  | Ordering of Boiler precast chimney | 10d | 2017-12-19 A | 2017-12-29 A | 112920 | 100% | 2018-01-01 | 2018-01-12 |  |  |  |  |  | 003 |
| 113107 |  | Ordering of Cement (Deleted) | 15d | 2018-08-01 | 2018-08-21 | 103250 |  |  |  | 52168.9d |  | MH-Wtg |  |  | 003 |
| 113108 |  | Ordering of Reinforcement steel (Deleted) | 15d | 2018-08-01 | 2018-08-21 |  |  |  |  | 52168.9d |  | MH-Wtg |  |  | 003 |
| 113109 |  | Ordering of Structural steel (Deleted) | 15d | 2018-08-01 | 2018-08-21 | 100590 |  |  |  | 52168.9d |  | MH-Wtg |  |  | 003 |
|  | 3 | **Mechanical** |  | 2017-03-31 | 2018-07-04 |  |  |  |  |  |  |  |  |  |  |
| 113170 |  | Ordering of WNA Plant equipments | 63d | 2017-03-31 A | 2018-03-21 A | 110580 FF+20d | 100% | 2017-06-01 | 2017-08-29 |  |  | MH-Wtg [725 h] | 326,250 | 326,250 | 001 |
| 113180 |  | Ordering of CNA Plant equipments | 33d | 2017-04-24 A | 2017-09-01 A | 110590 SS+20d, 110590 FF+20d | 100% | 2017-05-10 | 2017-06-23 |  |  | MH-Wtg [483.08 h] | 217,386 | 217,386 | 002 |
| 113160 |  | Ordering of OSBL equipments | 65d | 2017-04-28 A | 2018-01-24 A | 110570 FF+20d | 100% | 2017-06-01 | 2017-08-31 |  |  | MH-Wtg [483.08 h] | 217,386 | 217,386 | 003 |
| 113181 |  | Ordering of Absorber foundation bolt & template | 15d | 2017-08-14 A | 2017-09-07 A | 110591 | 100% | 2017-10-06 | 2017-10-26 |  |  |  |  |  | 001 |
| 113190 |  | Ordering of Mechanical erection & piping | 30d | 2017-12-02 A | 2017-12-25 A | 110600 | 100% | 2017-12-01 | 2018-01-11 |  |  | MH-Wtg [483.08 h] | 217,386 | 217,386 | 003 |
| 114810 |  | Ordering of Heat train gaskets | 1d | 2018-02-23 A | 2018-03-15 A |  | 100% | 2018-03-01 | 2018-03-01 |  |  |  |  |  | 001 |
| 113180.1 |  | Ordering of additional scope (MOM-078) equipments | 20d | 2018-03-28 A | 2018-04-03 A | 110590.1 | 100% | 2018-03-22 | 2018-04-18 |  |  |  |  |  | 003 |
| 114900 |  | Ordering of Foundation bolts of existing equipments | 1d | 2018-04-02 A | 2018-04-02 A |  | 100% |  |  |  |  |  |  |  | 001 |
| 113200 |  | Ordering of Insulation | 20d | 2018-06-06 A | 2018-07-04 A | 110610 | 100% | 2018-07-13 | 2018-08-09 |  |  | MH-Wtg [241.54 h] | 108,693 | 108,693 | 003 |

| ID | WBS | Activity | Duration | Start | Finish | Predecessors | Complete | Remaining | Planned start | Planned finish | Total float | Free float | Resources | Cost | Actual cost | UNIT DESCRIPTION |
| --- | --- | --- | --- | --- | --- | --- | --- | --- | --- | --- | --- | --- | --- | --- | --- | --- |
|  | 4 | **Piping** |  | 2017-11-25 | 2018-09-25 |  |  |  |  |  |  |  |  |  |  |  |
| 113210 |  | Ordering of Pipes | 10d | 2017-11-25 A | 2018-03-01 A | 110890 FF+15d | 100% |  | 2017-12-22 | 2018-01-04 |  |  | MH-Wtg [269.04 h] | 121,068 | 121,068 | 003 |
| 113240 |  | Ordering of Valves | 20d | 2017-12-07 A | 2018-03-28 A | 110920 | 100% |  | 2018-01-12 | 2018-02-09 |  |  | MH-Wtg [358.73 h] | 161,429 | 161,429 | 003 |
| 113230 |  | Ordering of Flanges | 10d | 2017-12-22 A | 2018-03-15 A | 110910 | 100% |  | 2018-01-22 | 2018-02-05 |  |  | MH-Wtg [269.04 h] | 121,068 | 121,068 | 003 |
| 113220 |  | Ordering of Fittings | 30d | 2018-01-03 A | 2018-02-16 A | 110900 SS | 100% |  | 2018-02-01 | 2018-03-14 |  |  | MH-Wtg [269.04 h] | 121,068 | 121,068 | 003 |
| 113310.1 |  | Ordering of Expansion bellows | 15d | 2018-03-20 A | 2018-05-15 A | 110990.1 | 100% |  | 2018-03-22 | 2018-04-11 |  |  | MH-Wtg [71.75 h] | 32,288 | 32,288 | 003 |
| 113250 |  | Ordering of Strainers | 13d | 2018-04-05 A | 2018-05-22 A | 110930 | 100% |  | 2018-05-01 | 2018-05-17 |  |  | MH-Wtg [89.68 h] | 40,356 | 40,356 | 003 |
| 113310.11 |  | Ordering of Excess flow check valves | 1d | 2018-04-18 A | 2018-04-18 A |  | 100% |  | 2018-04-02 | 2018-04-02 |  |  |  |  |  | 003 |
| 113260 |  | Ordering of Steam traps | 15d | 2018-04-24 A | 2018-06-26 A | 110940 | 100% |  | 2018-06-01 | 2018-06-21 |  |  | MH-Wtg [179.36 h] | 80,712 | 80,712 | 003 |
| 113280 |  | Ordering of Gaskets | 10d | 2018-04-26 A | 2018-06-07 A | 110960 | 100% |  | 2018-06-01 | 2018-06-14 |  |  | MH-Wtg [89.68 h] | 40,356 | 40,356 | 003 |
| 113310 |  | Ordering of Special supports | 15d | 2018-05-16 A | 2018-06-08 A | 110990 | 100% |  | 2018-06-22 | 2018-07-12 |  |  | MH-Wtg [53.81 h] | 24,215 | 24,215 | 003 |
| 113310.31 |  | Ordering of Flexible hoses | 1d | 2018-05-16 A | 2018-07-11 A |  | 100% |  | 2018-07-02 | 2018-07-02 |  |  |  |  |  | 003 |
| 113270 |  | Ordering of Sight glass | 20d | 2018-05-17 A | 2018-06-20 A | 110950 | 100% |  | 2018-06-29 | 2018-07-26 |  |  | MH-Wtg [44.84 h] | 20,178 | 20,178 | 003 |
| 113310.21 |  | Ordering of Spectacle blind | 1d | 2018-05-24 A | 2018-07-25 A |  | 100% |  | 2018-07-02 | 2018-07-02 |  |  |  |  |  | 003 |
| 113290 |  | Ordering of Stud bolts | 10d | 2018-06-06 A | 2018-06-06 A | 110970 | 100% |  | 2018-06-01 | 2018-06-14 |  |  | MH-Wtg [89.68 h] | 40,356 | 40,356 | 003 |
| 113310.61 |  | Ordering of PTFE package | 1d | 2018-06-07 A | 2018-07-23 A |  | 100% |  | 2018-07-02 | 2018-07-02 |  |  |  |  |  | 003 |
| 113310.41 |  | Ordering of Sluice gate | 1d | 2018-06-19 A | 2018-07-20 A |  | 100% |  | 2018-07-02 | 2018-07-02 |  |  |  |  |  | 003 |
| 113310.51 |  | Ordering of Flange guards | 1d | 2018-06-27 A | 2018-08-01 |  |  | 1d | 2018-07-02 | 2018-07-02 | 52182.9d |  |  |  |  | 003 |
| 113300 |  | Ordering of Primary supports (Deleted) | 10d | 2018-09-12 | 2018-09-25 | 110980 |  |  |  |  | 52083.9d | 0d | MH-Wtg |  |  | 003 |
|  | 5 | **Electrical** |  | 2017-04-27 | 2018-08-28 |  |  |  |  |  |  |  |  |  |  |  |
| 113580.3 |  | Ordering of Compact substation | 20d | 2017-04-27 A | 2017-06-06 A | 111960.3 | 100% |  | 2017-06-01 | 2017-06-28 |  |  |  |  |  | 003 |
| 113580.2 |  | Ordering of Construction power | 20d | 2017-06-14 A | 2017-06-14 A | 111960.2 | 100% |  | 2017-09-01 | 2017-09-28 |  |  |  |  |  | 003 |
| 113320 |  | Ordering of Transformers | 20d | 2017-07-27 A | 2017-09-11 A | 111700 | 100% |  | 2017-09-01 | 2017-09-28 |  |  | MH-Wtg [181.16 h] | 81,522 | 81,522 | 003 |
| 113330 |  | Ordering of HT panel | 20d | 2017-08-19 A | 2017-10-13 A | 111710 | 100% |  | 2017-09-29 | 2017-10-26 |  |  | MH-Wtg [90.58 h] | 40,761 | 40,761 | 003 |
| 113340 |  | Ordering of HT PCC | 20d | 2017-08-19 A | 2017-10-13 A | 111720 | 100% |  | 2017-09-29 | 2017-10-26 |  |  | MH-Wtg [90.58 h] | 40,761 | 40,761 | 003 |
| 113410 |  | Ordering of NGR | 20d | 2017-08-23 A | 2017-11-29 A | 111790 | 100% |  | 2017-10-27 | 2017-11-23 |  |  | MH-Wtg [36.23 h] | 16,304 | 16,304 | 003 |
| 113460 |  | Ordering of HT cables | 20d | 2017-09-09 A | 2017-10-06 A | 111840 | 100% |  | 2017-10-23 | 2017-11-17 |  |  | MH-Wtg [36.23 h] | 16,304 | 16,304 | 003 |
| 113380 |  | Ordering of DG | 20d | 2017-09-19 A | 2017-11-28 A | 111760 | 100% |  | 2017-10-27 | 2017-11-23 |  |  | MH-Wtg [54.35 h] | 24,458 | 24,458 | 003 |
| 113390 |  | Ordering of UPS | 20d | 2017-09-23 A | 2017-11-03 A | 111770 | 100% |  | 2017-10-27 | 2017-11-23 |  |  | MH-Wtg [27.17 h] | 12,227 | 12,227 | 003 |
| 113450 |  | Ordering of VFD | 20d | 2017-09-30 A | 2017-12-01 A | 111830 | 100% |  | 2017-11-01 | 2017-11-28 |  |  | MH-Wtg [90.58 h] | 40,761 | 40,761 | 003 |
| 113350 |  | Ordering of LT PCC | 20d | 2017-10-18 A | 2017-12-29 A | 111730 | 100% |  | 2017-12-01 | 2017-12-28 |  |  | MH-Wtg [90.58 h] | 40,761 | 40,761 | 003 |
| 113360 |  | Ordering of MCC | 20d | 2017-10-18 A | 2017-12-29 A | 111740 | 100% |  | 2017-12-01 | 2017-12-28 |  |  | MH-Wtg [90.58 h] | 40,761 | 40,761 | 003 |
| 113400 |  | Ordering of Battery and battery charger | 20d | 2017-10-19 A | 2017-12-29 A | 111780 | 100% |  | 2017-12-01 | 2017-12-28 |  |  | MH-Wtg [27.17 h] | 12,227 | 12,227 | 003 |
| 113420 |  | Ordering of Buss duct | 20d | 2017-10-25 A | 2017-12-02 A | 111800 | 100% |  | 2017-11-01 | 2017-11-28 |  |  | MH-Wtg [36.23 h] | 16,304 | 16,304 | 003 |
| 113430 |  | Ordering of HT motors | 20d | 2017-11-01 A | 2017-12-22 A | 111810 | 100% |  | 2017-12-01 | 2017-12-28 |  |  | MH-Wtg [54.35 h] | 24,458 | 24,458 | 003 |
| 113370 |  | Ordering of APFC panel | 20d | 2017-11-18 A | 2017-12-29 A | 111750 | 100% |  | 2017-12-01 | 2017-12-28 |  |  | MH-Wtg [27.17 h] | 12,227 | 12,227 | 003 |
| 113440 |  | Ordering of LT motors | 20d | 2017-12-14 A | 2018-01-15 A | 111820 | 100% |  | 2017-12-01 | 2017-12-28 |  |  | MH-Wtg [54.35 h] | 24,458 | 24,458 | 003 |
| 113570 |  | Ordering of PA system | 20d | 2017-12-15 A | 2018-04-16 A | 111950 | 100% |  | 2018-04-02 | 2018-04-27 |  |  | MH-Wtg [54.35 h] | 24,458 | 24,458 | 003 |
| 113530 |  | Ordering of Cable tray | 16d | 2017-12-22 A | 2018-01-31 A | 111910 | 100% |  | 2018-01-01 | 2018-01-22 |  |  | MH-Wtg [36.23 h] | 16,304 | 16,304 | 003 |
| 113500 |  | Ordering of Local control stations | 20d | 2017-12-28 A | 2018-02-01 A | 111880 | 100% |  | 2018-01-15 | 2018-02-12 |  |  | MH-Wtg [36.23 h] | 16,304 | 16,304 | 003 |
| 113371 |  | Ordering of HT Capacitor bank | 18d | 2018-01-09 A | 2018-04-26 A | 111751 | 100% |  | 2018-05-01 | 2018-05-24 |  |  |  |  |  | 003 |
| 113470 |  | Ordering of LT cables | 20d | 2018-01-23 A | 2018-03-05 A | 111850 | 100% |  | 2018-03-01 | 2018-03-28 |  |  | MH-Wtg [36.23 h] | 16,304 | 16,304 | 003 |
| 113590 |  | Ordering of Electrical installation | 20d | 2018-02-03 A | 2018-03-22 A | 111970 | 100% |  | 2018-03-01 | 2018-03-28 |  |  | MH-Wtg [90.58 h] | 40,761 | 40,761 | 003 |
| 113540 |  | Ordering of Light fittings | 11d | 2018-03-02 A | 2018-03-29 A | 111920 | 100% |  | 2018-04-02 | 2018-04-16 |  |  | MH-Wtg [27.17 h] | 12,227 | 12,227 | 003 |
| 113390.1 |  | Ordering of UMPS | 20d | 2018-03-30 A | 2018-04-20 A | 111770.1 | 100% |  | 2018-04-02 | 2018-04-27 |  |  |  |  |  | 003 |
| 113510 |  | Ordering of Misc. panels | 20d | 2018-04-06 A | 2018-04-27 A | 111890 | 100% |  | 2018-04-02 | 2018-04-27 |  |  | MH-Wtg [27.17 h] | 12,227 | 12,227 | 003 |
| 114820 |  | Ordering of Flame proof light fittings | 1d | 2018-04-27 A | 2018-05-31 A |  | 100% |  | 2018-06-01 | 2018-06-01 |  |  |  |  |  | 003 |
| 113580 |  | Ordering of CCTV | 15d | 2018-04-30 A | 2018-06-22 A | 111960 | 100% |  | 2018-05-28 | 2018-06-15 |  |  | MH-Wtg [54.35 h] | 24,458 | 24,458 | 003 |
| 113580.1 |  | Ordering of Electrical heat tracing | 20d | 2018-05-26 A | 2018-06-28 A | A113521 SF-41d | 100% |  | 2018-07-25 | 2018-08-22 |  |  | MH-Wtg [54.35 h] | 24,458 | 24,458 | 002 |
| 114830 |  | Ordering of Electrical work for GIDC pumping station | 1d | 2018-05-28 A | 2018-05-28 A |  | 100% |  | 2018-05-01 | 2018-05-01 |  |  |  |  |  | 003 |
| 113319 |  | Ordering of Switchyard (Deleted) | 20d | 2018-08-01 | 2018-08-28 |  |  |  |  |  | 52163.9d |  | MH-Wtg |  |  | 003 |
| 113480 |  | Ordering of Control cables (Deleted) | 20d | 2018-08-01 | 2018-08-28 |  |  |  |  |  | 52163.9d |  | MH-Wtg |  |  | 003 |
| 113490 |  | Ordering of Jointing kits (Deleted) | 20d | 2018-08-01 | 2018-08-28 |  |  |  |  |  | 52163.9d |  | MH-Wtg |  |  | 003 |
| 113520 |  | Ordering of Lighting transformers (Deleted) | 20d | 2018-08-01 | 2018-08-28 |  |  |  |  |  | 52163.9d |  | MH-Wtg |  |  | 003 |
| 113550 |  | Ordering of Earthing strips (Deleted) | 20d | 2018-08-01 | 2018-08-28 |  |  |  |  |  | 52163.9d |  | MH-Wtg |  |  | 003 |
| 113560 |  | Ordering of Lightening arrestors (Deleted) | 20d | 2018-08-01 | 2018-08-28 |  |  |  |  |  | 52163.9d |  | MH-Wtg |  |  | 003 |
| 113570.1 |  | Ordering of EPBAX system (Deleted) | 20d | 2018-08-01 | 2018-08-28 | 111950.1 |  |  |  |  | -91d | 0d |  |  |  | 003 |

Notes:
- 113210: Explanation: CS-40 / SS-40 / LTCS-15 / GI-5
- 113240: Explanation: Gate-20 / Globe-20 / Check-20 / Ball-10 / Butterfly-10 / Plug-15 / 3 Way-5
- 113230: Explanation: CS-60 / IBR-10 / SS-30
- 113220: Explanation: CS-60 / IBR-10 / SS-30
- 113580.2: Explanation: PO copy not provided

| ID | WBS | Activity | Duration | Start | Finish | Predecessors | Complete | Planned start | Planned finish | Total float | Free float | Constraint | Resources | Cost | Actual cost | UNIT DESCRIPTION |
| --- | --- | --- | --- | --- | --- | --- | --- | --- | --- | --- | --- | --- | --- | --- | --- | --- |
|  | 6 | **Instrumentation** |  | 2017-05-09 | 2018-08-28 |  |  |  |  |  |  |  |  |  |  |  |
| 113710 |  | Ordering of Weigh bridge | 20d | 2017-05-09 A | 2017-09-14 A | 112660 | 100% | 2017-09-25 | 2017-10-20 |  |  |  | MH-Wtg [54.35 h] | 24,458 | 24,458 | 003 |
| 113680.3 |  | Ordering ofVibration montoring system | 20d | 2017-05-19 A | 2017-12-02 A | 112630.3 | 100% | 2017-12-01 | 2017-12-28 |  |  |  | MH-Wtg [73 h] | 32,850 | 32,850 | 001 |
| 113600 |  | Ordering of DCS system | 20d | 2017-06-14 A | 2017-10-05 A | 112550 | 100% | 2017-09-01 | 2017-09-28 |  |  |  | MH-Wtg [181 h] | 81,450 | 81,450 | 003 |
| 113611 |  | Ordering of Control valves- CNA Plants | 20d | 2017-07-21 A | 2017-09-22 A | 112561 | 100% | 2017-09-27 | 2017-10-24 |  |  |  | MH-Wtg [27.17 h] | 12,227 | 12,227 | 002 |
| 113612.1 |  | Ordering of On/Off valves- WNA Plant | 20d | 2017-08-29 A | 2017-10-06 A | 112570 | 100% | 2017-10-02 | 2017-10-27 |  |  |  | MH-Wtg [20 h] | 9,000 | 9,000 | 001 |
| 113621 |  | Ordering of On/Off valves- CNA Plants | 20d | 2017-08-29 A | 2017-10-06 A | 112571 | 100% | 2017-10-02 | 2017-10-27 |  |  |  | MH-Wtg [27.17 h] | 12,227 | 12,227 | 002 |
| 113621.1 |  | Ordering of On/Off valves- Offsites & Utilities | 19d | 2017-08-29 A | 2017-10-06 A | 112572 | 100% | 2017-10-02 | 2017-10-26 |  |  |  | MH-Wtg [40 h] | 18,000 | 18,000 | 003 |
| 113642 |  | Ordering of Flow meters- Offsites & Utilities | 20d | 2017-09-19 A | 2018-01-18 A | 112592 | 100% | 2018-01-01 | 2018-01-29 |  |  |  | MH-Wtg [90.58 h] | 40,761 | 40,761 | 003 |
| 113612 |  | Ordering of Control valves- Offsites & Utilities | 20d | 2017-09-22 A | 2017-11-08 A | 112562 | 100% | 2017-09-29 | 2017-10-26 |  |  |  | MH-Wtg [45.29 h] | 20,381 | 20,381 | 003 |
| 113610 |  | Ordering of Control valves- WNA Plant | 20d | 2017-09-22 A | 2017-11-08 A | 112560 | 100% | 2017-09-22 | 2017-10-19 |  |  |  | MH-Wtg [108.69 h] | 48,911 | 48,911 | 001 |
| 113680.4 |  | Ordering of Anti surge controller | 20d | 2017-09-23 A | 2017-12-02 A | 112630.4 | 100% | 2017-12-01 | 2017-12-28 |  |  |  | MH-Wtg [54.35 h] | 24,458 | 24,458 | 001 |
| 113680.5 |  | Ordering of Governor | 20d | 2017-09-23 A | 2017-12-02 A | 112630.5 | 100% | 2017-12-01 | 2017-12-28 |  |  |  | MH-Wtg [54.35 h] | 24,458 | 24,458 | 001 |
| 113640 |  | Ordering of Flow meters- WNA Plant | 20d | 2017-10-26 A | 2017-12-28 A | 112590 | 100% | 2017-11-01 | 2017-11-28 |  |  |  | MH-Wtg [45.29 h] | 20,381 | 20,381 | 001 |
| 113641 |  | Ordering of Flow meters- CNA Plants | 20d | 2017-10-26 A | 2018-01-18 A | 112591 | 100% | 2017-11-01 | 2017-11-28 |  |  |  | MH-Wtg [27.17 h] | 12,227 | 12,227 | 002 |
| 113651 |  | Ordering of Analysers/Gas detectors- CNA Plants | 15d | 2017-11-02 A | 2018-02-08 A | 112601 | 100% | 2018-01-01 | 2018-01-19 |  |  |  | MH-Wtg [21.74 h] | 9,783 | 9,783 | 002 |
| 113652 |  | Ordering of Analysers/Gas detectors- Offsites & Utilities | 15d | 2017-11-02 A | 2018-02-08 A | 112602 | 100% | 2018-01-01 | 2018-01-19 |  |  |  | MH-Wtg [36.23 h] | 16,304 | 16,304 | 003 |
| 113682 |  | Ordering of Instrument cables | 15d | 2017-11-22 A | 2018-01-12 A | 112632 | 100% | 2018-01-01 | 2018-01-19 |  |  |  | MH-Wtg [36.23 h] | 16,304 | 16,304 | 003 |
| 113681 |  | Ordering of Cable trays | 16d | 2017-12-22 A | 2018-01-31 A | 112631 | 100% | 2018-01-01 | 2018-01-22 |  |  |  | MH-Wtg [36.23 h] | 16,304 | 16,304 | 003 |
| 113730 |  | Ordering of Instrument installation | 20d | 2018-01-26 A | 2018-03-27 A | 112680 | 100% | 2018-03-01 | 2018-03-28 |  |  |  | MH-Wtg [90.58 h] | 40,761 | 40,761 | 003 |
| 113660 |  | Ordering of Saftey items- WNA Plant | 15d | 2018-02-13 A | 2018-03-20 A | 112610 | 100% | 2018-03-01 | 2018-03-21 |  |  |  | MH-Wtg [54.35 h] | 24,458 | 24,458 | 001 |
| 113661 |  | Ordering of Saftey items- CNA Plants | 15d | 2018-02-13 A | 2018-03-20 A | 112611 | 100% | 2018-03-01 | 2018-03-21 |  |  |  | MH-Wtg [12.68 h] | 5,706 | 5,706 | 002 |
| 113662 |  | Ordering of Saftey items- Offsites & Utilities | 15d | 2018-02-13 A | 2018-03-20 A | 112612 | 100% | 2018-03-01 | 2018-03-21 |  |  |  | MH-Wtg [23 h] | 10,350 | 10,350 | 003 |
| 114840 |  | Ordering of Bearing temperature RTD | 1d | 2018-02-13 A | 2018-02-19 A |  | 100% | 2018-03-01 | 2018-03-01 |  |  |  |  |  |  | 001 |
| 113690 |  | Ordering of Junction boxes | 15d | 2018-02-20 A | 2018-03-21 A | 112640 | 100% | 2018-03-01 | 2018-03-21 |  |  |  | MH-Wtg [36.23 h] | 16,304 | 16,304 | 003 |
| 113720 |  | Ordering of Fire alarm system | 20d | 2018-02-20 A | 2018-03-28 A | 112670 | 100% | 2018-03-01 | 2018-03-28 |  |  |  | MH-Wtg [54.35 h] | 24,458 | 24,458 | 003 |
| 113632 |  | Ordering of Transmitters- Offsites & Utilities | 20d | 2018-03-06 A | 2018-05-11 A | 112582 | 100% | 2018-03-29 | 2018-04-25 |  |  |  | MH-Wtg [192 h] | 86,400 | 86,400 | 003 |
| 114880 |  | Ordering of Self actuated control valves | 1d | 2018-04-16 A | 2018-04-16 A |  | 100% | 2018-04-02 | 2018-04-02 |  |  |  |  |  |  | 001 |
| 113630 |  | Ordering of Transmitters- WNA Plant | 20d | 2018-04-20 A | 2018-05-11 A | 112580 | 100% | 2018-05-17 | 2018-06-13 |  |  |  | MH-Wtg [49 h] | 22,050 | 22,050 | 001 |
| 113631 |  | Ordering of Transmitters- CNA Plants | 20d | 2018-04-20 A | 2018-05-11 A | 112581 | 100% | 2018-05-29 | 2018-06-25 |  |  |  | MH-Wtg [239 h] | 107,550 | 107,550 | 002 |
| 113680 |  | Ordering of Gauges- WNA Plant | 20d | 2018-04-30 A | 2018-06-04 A | 112630 | 100% | 2018-06-01 | 2018-06-28 |  |  |  | MH-Wtg [50.72 h] | 22,824 | 22,824 | 001 |
| 113680.1 |  | Ordering of Gauges- CNA Plants | 20d | 2018-04-30 A | 2018-06-04 A | 112630.1 | 100% | 2018-06-01 | 2018-06-28 |  |  |  | MH-Wtg [12.68 h] | 5,706 | 5,706 | 002 |
| 113680.2 |  | Ordering of Gauges- Offsites & Utilities | 20d | 2018-04-30 A | 2018-06-04 A | 112630.2 | 100% | 2018-06-01 | 2018-06-28 |  |  |  | MH-Wtg [27.17 h] | 12,227 | 12,227 | 003 |
| 114850 |  | Ordering of Stack analyzer (CEMS) | 1d | 2018-05-22 A | 2018-05-22 A |  | 100% | 2018-05-01 | 2018-05-01 |  |  |  |  |  |  | 001 |
| 114870 |  | Ordering of Online effluent monitoring system (EQMS) | 1d | 2018-05-22 A | 2018-05-22 A |  | 100% |  |  |  |  | start on or after 2018-05-22 |  |  |  | 003 |
| 114890 |  | Ordering of Gas detectors | 1d | 2018-05-25 A | 2018-05-25 A |  | 100% | 2018-05-01 | 2018-05-01 |  |  |  |  |  |  | 003 |
| 113631.1 |  | Ordering of DIN Rail Transmitters- CNA Plant (Deleted) | 20d | 2018-08-01 | 2018-08-28 |  |  |  |  | 52163.9d |  |  |  |  |  | 002 |
| 113650 |  | Ordering of Analysers/Gas detectors- WNA Plant (Deleted) | 14d | 2018-08-01 | 2018-08-20 |  |  |  |  | 52169.9d |  |  | MH-Wtg |  |  | 001 |
| 113670 |  | Ordering of Switches- WNA Plant (Deleted) | 20d | 2018-08-01 | 2018-08-28 |  |  |  |  | 52163.9d |  |  | MH-Wtg |  |  | 001 |
| 113671 |  | Ordering of Switches- CNA Plants (Deleted) | 20d | 2018-08-01 | 2018-08-28 |  |  |  |  | 52163.9d |  |  | MH-Wtg |  |  | 002 |
| 113672 |  | Ordering of Switches- Offsites & Utilities | 20d | 2018-08-01 | 2018-08-28 | 112622 |  |  |  | 52153.9d | 0d |  | MH-Wtg [15 h] | 6,750 |  | 003 |
| 113700 |  | Ordering of bulk materials (Deleted) | 20d | 2018-08-01 | 2018-08-28 |  |  |  |  | 52163.9d |  |  | MH-Wtg |  |  | 003 |

| ID | WBS | Activity | Duration | Start | Finish | Predecessors | Complete | Remaining | Planned start | Planned finish | Total float | Free float | Resources | Cost | Actual cost | UNIT DESCRIPTION |
| --- | --- | --- | --- | --- | --- | --- | --- | --- | --- | --- | --- | --- | --- | --- | --- | --- |
|  | 2 | **Manufacturing, Inspection, Expediting & Delivery** |  | 2017-03-24 | 2020-05-14 |  |  |  |  |  |  |  |  |  |  |  |
|  | 1 | **Process Boughtout & Pakages** |  | 2017-04-28 | 2019-04-15 |  |  |  |  |  |  |  |  |  |  |  |
| 114790 |  | Mfg. & delivery of Agitators | 142d | 2017-04-28 A | 2017-12-01 A | 112980 | 100% |  | 2017-10-02 | 2018-04-18 |  |  | MH-Wtg [130 h] | 58,500 | 58,500 | 002 |
| 115000 |  | Mfg. & delivery of Chiller unit | 132d | 2017-06-20 A | 2017-12-11 A | 113010 | 100% |  | 2017-08-01 | 2018-02-02 |  |  | MH-Wtg [759 h] | 341,550 | 341,550 | 003 |
| 113810 |  | Mfg. & delivery of Raw water treatment plant | 142d | 2017-06-28 A | 2018-08-14 | 112840 | 93% | 10d | 2017-08-01 | 2018-02-16 | 52173.9d |  | MH-Wtg [2028 h] | 912,600 | 903,474 | 003 |
| 113950 |  | Mfg. & delivery of DM plant | 142d | 2017-06-28 A | 2018-04-30 A | 112860 | 100% |  | 2017-08-01 | 2018-02-16 |  |  | MH-Wtg [757 h] | 340,650 | 340,650 | 003 |
| 113880 |  | Mfg. & delivery of Cooling tower package | 186d | 2017-07-19 A | 2018-10-04 | 112850 | 75% | 47d | 2017-09-01 | 2018-05-21 | 52136.9d |  | MH-Wtg [2028 h] | 912,600 | 894,348 | 003 |
| 113740 |  | Mfg. & delivery of Fire fighting package | 186d | 2017-07-26 A | 2018-10-11 | 112830 | 72% | 52d | 2017-09-01 | 2018-05-21 | 52131.9d |  | MH-Wtg [2530 h] | 1,138,500 | 1,127,115 | 003 |
| 114020 |  | Mfg. & delivery of Boiler for CPP package | 176d | 2017-07-27 A | 2018-10-30 | 112870 | 63% | 65d | 2017-09-29 | 2018-06-04 | 52118.9d |  | MH-Wtg [2530 h] | 1,138,500 | 1,092,960 | 003 |
| 114860 |  | Mfg. & delivery of Air compressors | 186d | 2017-08-16 A | 2018-03-27 A | 112990 | 100% |  | 2017-09-29 | 2018-06-18 |  |  | MH-Wtg [757 h] | 340,650 | 340,650 | 003 |
| 114930 |  | Mfg. & delivery of Air drier | 186d | 2017-08-16 A | 2018-02-05 A | 113000 | 100% |  | 2017-09-29 | 2018-06-18 |  |  | MH-Wtg [508 h] | 228,600 | 228,600 | 003 |
| 119590.5 |  | Mfg. & delivery of Deareator | 88d | 2017-09-06 A | 2018-03-23 A | 113100.7 | 100% |  | 2017-09-25 | 2018-01-24 |  |  |  |  |  | 001 |
| 114020.1 |  | Mfg. & delivery of STG for CPP package | 176d | 2017-09-14 A | 2018-12-17 |  | 44% | 99d | 2017-09-25 | 2018-05-29 | 51987.9d | 0d |  |  |  | 003 |
| 114440 |  | Mfg. & delivery of Non-API pumps (WNA) | 154d | 2017-09-18 A | 2018-06-29 A | 112930 | 100% |  | 2017-09-25 | 2018-04-27 |  |  | MH-Wtg [912 h] | 410,400 | 410,400 | 002 |
| 114510 |  | Mfg. & delivery of Non-API pumps (Offsites) | 142d | 2017-09-18 A | 2018-07-04 A | 112940 | 100% |  | 2017-09-25 | 2018-04-11 |  |  | MH-Wtg [3190 h] | 1,435,500 | 1,435,500 | 003 |
| 114580 |  | Mfg. & delivery of Cooling water pumps | 142d | 2017-09-20 A | 2018-03-30 A | 112950 | 100% |  | 2017-09-25 | 2018-04-11 |  |  | MH-Wtg [1265 h] | 569,250 | 569,250 | 003 |
| 119590.1 |  | Mfg. & delivery of Inlet air filter | 132d | 2017-09-26 A | 2018-03-22 A | 113100.3 | 100% |  | 2017-09-25 | 2018-03-28 |  |  |  |  |  | 001 |
| 114440.1 |  | Mfg. & delivery ofAPI pumps (CNA) | 132d | 2017-10-06 A | 2018-07-10 A | 112931 | 100% |  | 2017-11-01 | 2018-05-04 |  |  |  |  |  | 002 |
| 119590.93 |  | Mfg. & delivery of PFA lined pumps | 132d | 2017-10-11 A | 2018-02-06 A | 113101.4 | 100% |  | 2017-10-30 | 2018-05-02 |  |  |  |  |  | 003 |
| 119390 |  | Mfg. & delivery of Ejectors | 88d | 2017-10-26 A | 2018-05-28 A | 113100.1 | 100% |  | 2017-12-29 | 2018-05-02 |  |  | MH-Wtg [633 h] | 284,850 | 284,850 | 001 |
| 119590.4 |  | Mfg. & delivery of Mist separator | 88d | 2017-10-26 A | 2018-03-16 A | 113100.6 | 100% |  | 2017-11-01 | 2018-03-05 |  |  |  |  |  | 001 |
| 114300 |  | Mfg. & delivery of Side stream filter package | 120d | 2017-10-30 A | 2018-03-27 A | 112910 | 100% |  | 2017-11-01 | 2018-04-18 |  |  | MH-Wtg [379 h] | 170,550 | 170,550 | 003 |
| 119590.92 |  | Mfg. & delivery of Surface condenser pump | 132d | 2017-11-14 A | 2018-02-16 A | 113101.3 | 100% |  | 2017-12-29 | 2018-07-03 |  |  |  |  |  | 001 |
| 119590.91 |  | Mfg. & delivery of Packings/Internals | 88d | 2017-11-15 A | 2018-09-14 | 113101.2 | 62% | 33d | 2018-02-02 | 2018-06-05 | -55d | 11d |  |  |  | 002 |
| 119590.9 |  | Mfg. & delivery of Ammonia compressor | 110d | 2017-11-24 A | 2018-06-26 A | 113101.1 | 100% |  | 2017-12-29 | 2018-06-01 |  |  |  |  |  | 003 |
| 114300.1 |  | Mfg. & delivery of Chlorination package | 120d | 2017-11-30 A | 2018-06-14 A | 112910.1 | 100% |  | 2017-12-29 | 2018-06-15 |  |  | MH-Wtg [250 h] | 112,500 | 112,500 | 003 |
| 119590.99 |  | Mfg. & delivery of Platinum filter (Internals) | 88d | 2017-12-14 A | 2018-06-20 A | 113101.9.1 | 100% |  | 2018-02-01 | 2018-06-04 |  |  |  |  |  | 001 |
| 119590.94 |  | Mfg. & delivery of Lube oil pumps | 87d | 2017-12-14 A | 2018-03-29 A | 113101.5 | 100% |  | 2017-12-14 | 2018-04-16 |  |  |  |  |  | 001 |
| 114160 |  | Mfg. & delivery of ETP package | 108d | 2017-12-19 A | 2018-11-15 | 112890 | 29% | 77d | 2018-01-01 | 2018-05-31 | -129d | 0d | MH-Wtg [2028 h] | 912,600 | 866,970 | 003 |
| 115210 |  | Mfg. & delivery of Safety shower/Eye wash | 88d | 2017-12-20 A | 2018-07-18 A | 113040 | 100% |  | 2018-01-01 | 2018-05-03 |  |  | MH-Wtg [52 h] | 23,400 | 23,400 | 003 |
| 115350 |  | Mfg. & delivery of Desuperheater | 98d | 2017-12-20 A | 2018-04-24 A | 113060 | 100% |  | 2018-01-01 | 2018-05-17 |  |  | MH-Wtg [104 h] | 46,800 | 46,800 | 003 |
| 119590.99.1 |  | Mfg. & delivery of Rotary vane pumps | 88d | 2017-12-22 A | 2018-04-26 A | 113101.9.2 | 100% |  | 2018-01-01 | 2018-05-03 |  |  |  |  |  | 003 |
| 119590.2 |  | Mfg. & delivery of Filters | 150d | 2017-12-29 A | 2018-06-26 A | 113100.4 | 100% |  | 2018-01-01 | 2018-07-30 |  |  |  |  |  | 001 |
| 119590.6 |  | Mfg. & delivery of Vacuum jet | 88d | 2017-12-29 A | 2018-10-30 | 113100.8 | 26% | 65d | 2018-01-01 | 2018-05-03 | -61.4d | 13d |  |  |  | 001 |
| 119590.99.2 |  | Mfg. & delivery of Ammonia transfer pumps | 88d | 2017-12-29 A | 2019-01-24 | 113101.9.3 |  | 127d | 2018-01-01 | 2018-05-03 | -127d | 0d |  |  |  | 003 |
| 119590.97 |  | Mfg. & delivery of Lift (CNA) | 110d | 2018-01-05 A | 2018-12-06 | 113101.8 | 16% | 92d | 2018-02-01 | 2018-07-04 | -89d | 6d |  |  |  | 002 |
| 119590.99.6 |  | Mfg. & delivery of Nitric acid concentrator (MEE) | 80d | 2018-01-05 A | 2018-10-25 |  | 22% | 62d | 2018-01-05 | 2018-04-27 | 52121.9d |  |  |  |  | 003 |
| 114230 |  | Mfg. & delivery of HVAC package | 88d | 2018-01-09 A | 2018-12-14 | 112900 |  | 97.78d | 2018-02-01 | 2018-06-04 | -98.78d | 229.16d | MH-Wtg [385 h] | 173,250 | 171,518 | 003 |
| 119590.99.4 |  | Mfg. & delivery of Condensate transfer pumps | 88d | 2018-01-10 A | 2018-06-19 A | 113101.9.5 | 100% |  | 2018-02-01 | 2018-06-04 |  |  |  |  |  | 003 |
| 119590.3 |  | Mfg. & delivery of Mixer | 88d | 2018-01-17 A | 2018-05-16 A | 113100.5 | 100% |  | 2018-02-01 | 2018-06-04 |  |  |  |  |  | 001 |
| 114650 |  | Mfg. & delivery of Metering pumps | 88d | 2018-01-19 A | 2018-07-06 A | 112960 | 100% |  | 2018-02-01 | 2018-06-04 |  |  | MH-Wtg [508 h] | 228,600 | 228,600 | 003 |
| 114720 |  | Mfg. & delivery of Extended shaft pumps | 80d | 2018-01-25 A | 2018-07-18 A | 112970 | 100% |  | 2018-02-01 | 2018-05-23 |  |  | MH-Wtg [389 h] | 175,050 | 175,050 | 003 |
| 119590 |  | Mfg. & delivery of Ammonia scrubber | 88d | 2018-01-30 A | 2018-11-28 | 113100.2 | 2% | 86d | 2018-02-01 | 2018-06-04 | -101d | 0d | MH-Wtg [633 h] | 284,850 | 227,880 | 003 |
| 119590.98 |  | Mfg. & delivery of Chemical skids | 88d | 2018-02-12 A | 2018-11-30 | 113101.9 |  | 88d | 2018-03-01 | 2018-07-02 | -42d | 12d |  |  |  | 001 |
| 115280 |  | Mfg. & delivery of Loading arms | 88d | 2018-02-13 A | 2018-11-30 | 113050 |  | 88d | 2018-02-22 | 2018-06-25 | -87d | 0d | MH-Wtg [78 h] | 35,100 | 28,080 | 003 |
| 115630 |  | Mfg. & delivery of EOT Cranes | 88d | 2018-02-19 A | 2018-05-24 A | 113100 | 100% |  | 2018-02-22 | 2018-06-25 |  |  | MH-Wtg [124 h] | 55,800 | 55,800 | 003 |
| 119590.99.3 |  | Mfg. & delivery of Silica gel | 88d | 2018-02-23 A | 2018-11-30 | 113101.9.4 |  | 88d | 2018-03-01 | 2018-07-02 | -57d | 30d |  |  |  | 003 |
| 119590.95 |  | Mfg. & delivery of Lube oil filters | 88d | 2018-02-27 A | 2018-11-30 | 113101.6 |  | 88d | 2018-03-01 | 2018-07-02 | -42d | 12d |  |  |  | 001 |
| 119590.99.8 |  | Mfg. & delivery of CW pump for MEE | 1d | 2018-04-13 A | 2018-08-01 |  |  | 1d | 2018-05-01 | 2018-05-01 | 52182.9d |  |  |  |  | 003 |
| 119590.99.7 |  | Mfg. & delivery of RW intake pumps | 1d | 2018-04-26 A | 2018-06-30 A |  | 100% |  | 2018-05-01 | 2018-05-01 |  |  |  |  |  | 003 |
| 115140 |  | Mfg. & delivery of Non-metallic tanks | 120d | 2018-04-30 A | 2019-01-15 | 113030 |  | 120d | 2018-04-16 | 2018-09-28 | 52063.9d |  | MH-Wtg [52 h] | 23,400 | 11,700 | 003 |
| 119590.99.9.1 |  | Mfg. & delivery of Tail gas vent silencer | 1d | 2018-05-11 A | 2018-08-01 |  |  | 1d | 2018-05-01 | 2018-05-01 | 52182.9d |  |  |  |  | 001 |
| 119590.99.9.2 |  | Mfg. & delivery of PRDS | 1d | 2018-05-30 A | 2018-08-01 |  |  | 1d | 2018-06-01 | 2018-06-01 | 52182.9d |  |  |  |  | 003 |
| 119590.99.9 |  | Mfg. & delivery of Pressure vacuum relief valve | 1d | 2018-06-01 A | 2018-08-01 |  |  | 1d | 2018-06-01 | 2018-06-01 | 52182.9d |  |  |  |  | 001 |
| 119590.99.5 |  | Mfg. & delivery of Ammonia effluent transfer pumps (Mobile) | 110d | 2018-06-07 A | 2019-01-01 | 113101.9.6 |  | 110d | 2018-06-29 | 2018-11-29 | 52073.9d |  |  |  |  | 003 |
| 115070 |  | Mfg. & delivery of Plate type exchangers (Deleted) | 184d | 2018-08-01 | 2019-04-15 |  |  |  |  |  | 51999.9d |  | MH-Wtg |  |  | 003 |
| 115420 |  | Mfg. & delivery of Flame arrestors (Deleted) | 118d | 2018-08-01 | 2019-01-11 |  |  |  |  |  | 52065.9d |  | MH-Wtg |  |  | 003 |
| 115490 |  | Mfg. & delivery of Breather valves (Deleted) | 119d | 2018-08-01 | 2019-01-14 |  |  |  |  |  | 52064.9d |  | MH-Wtg |  |  | 003 |
| 115560 |  | Mfg. & delivery of NG Station (Deleted) | 140d | 2018-08-01 | 2019-02-12 |  |  |  |  |  | 52043.9d |  | MH-Wtg |  |  | 003 |
| 119590.7 |  | Mfg. & delivery of Roof vent fan (Deleted) | 88d | 2018-08-01 | 2018-11-30 |  |  |  |  |  | 52095.9d |  |  |  |  | 001 |
| 119590.8 |  | Mfg. & delivery of De-alkalizer (Deleted) | 88d | 2018-08-01 | 2018-11-30 |  |  |  |  |  | 52095.9d |  |  |  |  | 003 |
| 119590.96 |  | Mfg. & delivery of Inlet air silencer (Deleted) | 88d | 2018-08-01 | 2018-11-30 |  |  |  |  |  | 52095.9d |  |  |  |  | 001 |

Notes:
- 115420: Steps: (New step)

| ID | WBS | Activity | Duration | Start | Finish | Predecessors | Complete | Remaining | Planned start | Planned finish | Total float | Free float | Constraint | Resources | Cost | Actual cost | UNIT DESCRIPTION |
| --- | --- | --- | --- | --- | --- | --- | --- | --- | --- | --- | --- | --- | --- | --- | --- | --- | --- |
|  | 2 | **Civil Construction Materials** |  | 2017-03-24 | 2018-11-29 |  |  |  |  |  |  |  |  |  |  |  |  |
| 115790 |  | PEB Structure | 27d | 2017-03-24 A | 2017-07-31 A | 113112 | 100% |  | 2017-06-01 | 2017-07-07 |  |  | finish on or before 2017-07-09 | MH-Wtg [1820 h] | 819,000 | 819,000 | 003 |
| 115700 |  | MRO and delivery of cement at site (Deleted) | 65d | 2018-08-01 | 2018-10-30 |  |  |  |  |  | 52118.9d |  |  | MH-Wtg |  |  | 003 |
| 115710 |  | MRO and delivery of reinforcement steel at site (Deleted) | 87d | 2018-08-01 | 2018-11-29 |  |  |  |  |  | 52096.9d |  |  | MH-Wtg |  |  | 003 |
| 115720 |  | MRO and delivery of structural steel at site (Deleted) | 87d | 2018-08-01 | 2018-11-29 |  |  |  |  |  | 52096.9d |  |  | MH-Wtg |  |  | 003 |
|  | 3 | **Fabricated Equipments** |  | 2017-04-05 | 2019-05-31 |  |  |  |  |  |  |  |  |  |  |  |  |
|  | 1 | **OSBL Equipments** |  | 2017-06-06 | 2019-01-15 |  |  |  |  |  |  |  |  |  |  |  |  |
| 115740 |  | Mfg. & delivery of Ammonia storage tanks | 242d | 2017-06-06 A | 2018-04-05 A | 113160 SS+20d | 100% |  | 2017-06-29 | 2018-06-05 |  |  |  |  |  |  | 003 |
| 115730 |  | Mfg. & delivery of CNA storage tanks | 220d | 2017-06-09 A | 2018-11-13 | 113160 SS | 66% | 75d | 2017-06-01 | 2018-04-06 | -117d | 0d |  | MH-Wtg [952 h] | 428,400 | 278,460 | 003 |
| 115750 |  | Mfg. & delivery of Offsite tanks & vessels | 142d | 2017-08-16 A | 2018-06-13 A | 113160 | 100% |  | 2017-09-01 | 2018-03-20 |  |  |  |  |  |  | 003 |
| 115780 |  | Mfg & delivery of Double pipe heat exchangers | 88d | 2017-12-15 A | 2018-04-23 A | 113160 FS-15d | 100% |  | 2018-01-08 | 2018-05-10 |  |  |  |  |  |  | 003 |
| 115920 |  | Mfg & delivery of additional scope (MOM-078) equipments | 60d | 2018-04-06 A | 2018-10-23 | 113180.1 |  | 60d | 2018-04-02 | 2018-06-22 | -83d | 0d |  |  |  |  | 003 |
| 115760 |  | Mfg. & delivery of Ammonial vaporiser (Deleted) | 120d | 2018-08-01 | 2019-01-15 |  |  |  |  |  | 52063.9d |  |  |  |  |  | 003 |
| 115770 |  | Mfg. & delivery of Ammonia condenser (Deleted) | 120d | 2018-08-01 | 2019-01-15 |  |  |  |  |  | 52063.9d |  |  |  |  |  | 003 |
|  | 2 | **WNA Plant equipments** |  | 2017-04-06 | 2019-01-15 |  |  |  |  |  |  |  |  |  |  |  |  |
| 115810 |  | Mfg. & delivery of VGH package (KBR) | 242d | 2017-04-06 A | 2018-05-10 A |  | 100% |  | 2017-04-03 | 2018-03-08 |  |  | start on 2017-04-06 |  |  |  | 001 |
| 115800 |  | Mfg. & delivery of IBR long delivery equipments | 220d | 2017-06-06 A | 2018-10-09 | 113170 SS | 77% | 50d | 2017-08-01 | 2018-06-06 | -44d | 0d |  | MH-Wtg [4227 h] | 1,902,150 | 1,673,892 | 001 |
| 115840 |  | Mfg. & delvery of Intercooler tube bundles | 160d | 2017-07-05 A | 2018-04-25 A | 113170 SS+40d | 100% |  | 2017-09-25 | 2018-05-07 |  |  |  |  |  |  | 001 |
| 115820 |  | Mfg. & delivery of Ammonia vaporizer | 150d | 2017-09-01 A | 2018-04-23 A | 113170 SS+20d | 100% |  | 2017-09-25 | 2018-04-23 |  |  |  |  |  |  | 001 |
| 115830 |  | Mfg. & delivery of WNA plant tanks & vessels | 110d | 2017-09-06 A | 2018-09-06 | 113170 | 75% | 27d | 2017-12-11 | 2018-05-14 | 9d | 63d |  |  |  |  | 001 |
| 115860 |  | Mfg. & delivery of Absorber foundation bolts & templates | 66d | 2017-09-07 A | 2017-10-30 A | 113181 | 100% |  | 2017-09-25 | 2017-12-25 |  |  |  |  |  |  | 001 |
| 115930 |  | Mfg. & delivery of Heat train gaskets | 1d | 2018-03-15 A | 2018-05-24 A |  | 100% |  | 2018-05-01 | 2018-05-01 |  |  |  |  |  |  | 001 |
| 115950 |  | Mfg & delivery of Foundation bolts of existing equipments | 1d | 2018-04-02 A | 2018-04-07 A |  | 100% |  | 2018-04-02 | 2018-04-02 |  |  |  |  |  |  | 001 |
| 115850 |  | Mfg. & delivery of Condenser heater (Deleted) | 120d | 2018-08-01 | 2019-01-15 | 113170 |  |  |  |  | 52063.9d |  |  |  |  |  | 001 |

Notes:
- 115810: Explanation: DFPCL informed order has been finalised with KBR for supply of VGH. Refer MOM / dated 7-Apr-17 / 70% Wtg for Indian supply and 30% Wtg for US supply

| ID | WBS | Activity | Duration | Start | Finish | Predecessors | Complete | Remaining | Planned start | Planned finish | Total float | Free float | Resources | Cost | Actual cost | UNIT DESCRIPTION |
| --- | --- | --- | --- | --- | --- | --- | --- | --- | --- | --- | --- | --- | --- | --- | --- | --- |
|  | 3 | **CNA Plant equipments** |  | 2017-04-05 | 2019-05-31 |  |  |  |  |  |  |  |  |  |  |  |
| 115870 |  | Mfg. & delivery of Glass lined columns | 234d | 2017-04-05 A | 2019-05-31 A | 113180 SS | 100% |  | 2017-05-01 | 2018-03-26 |  |  | MH-Wtg [951 h] | 427,950 | 427,950 | 002 |
| 115890 |  | Mfg. & delivery of Columns | 132d | 2017-04-26 A | 2017-12-01 A | 113180 SS+20d | 100% |  | 2017-05-22 | 2017-11-22 |  |  |  |  |  | 002 |
| 115900 |  | Mfg. & delivery of Heat exchangers | 176d | 2017-04-27 A | 2018-01-01 A | 113180 SS+30d | 100% |  | 2017-06-05 | 2018-02-07 |  |  |  |  |  | 002 |
| 115910 |  | Mfg. & delivery of CNA plant tanks & vessels | 132d | 2017-04-28 A | 2018-06-13 A | 113180 | 100% |  | 2017-06-26 | 2017-12-27 |  |  |  |  |  | 002 |
| 115880 |  | Mfg. & delivery of Glass equipment package | 132d | 2017-09-01 A | 2018-03-16 A | 113180 | 100% |  | 2017-09-25 | 2018-03-28 |  |  |  |  |  | 002 |
|  | 4 | **Piping Materials** |  | 2017-12-07 | 2019-01-01 |  |  |  |  |  |  |  |  |  |  |  |
| 116120 |  | Mfg. & delivery of Valves | 110d | 2017-12-07 A | 2019-01-01 | 113240 |  | 110d | 2018-03-29 | 2018-08-29 | -99d | 356.67d | MH-Wtg [2511 h] | 1,129,950 | 847,463 | 003 |
| 116060 |  | Mfg. & delivery of Flanges | 88d | 2017-12-22 A | 2018-11-30 | 113230 SS+15d |  | 88d | 2018-03-01 | 2018-07-02 | -74.4d | 0d | MH-Wtg [1883 h] | 847,350 | 762,615 | 003 |
| 116000 |  | Mfg. & delivery of Fittings | 88d | 2018-01-03 A | 2018-11-30 | 113220 SS+15d |  | 88d | 2018-03-01 | 2018-07-02 | -74.4d | 0d | MH-Wtg [1883 h] | 847,350 | 593,145 | 003 |
| 115940 |  | Mfg. & delivery of Pipes | 88d | 2018-01-23 A | 2018-11-30 | 113210 SS+15d |  | 88d | 2018-02-01 | 2018-06-04 | -74.4d | 0d | MH-Wtg [1883 h] | 847,350 | 762,615 | 003 |
| 119760 |  | Mfg. & delivery of Expansion bellows | 88d | 2018-03-20 A | 2018-11-30 | 113310.1 |  | 88d | 2018-06-22 | 2018-10-23 | -77d | 378.67d | MH-Wtg [502 h] | 225,900 | 146,835 | 003 |
| 119760.1 |  | Mfg. & delivery of Excess flow check valves | 1d | 2018-04-18 A | 2018-06-26 A |  | 100% |  | 2018-06-01 | 2018-06-01 |  |  |  |  |  | 003 |
| 116180 |  | Mfg. & delivery of Strainers | 88d | 2018-05-03 A | 2018-11-30 | 113250 |  | 88d | 2018-06-01 | 2018-10-02 | -89d | 0d | MH-Wtg [628 h] | 282,600 | 113,040 | 003 |
| 116360 |  | Mfg. & delivery of Gaskets | 60d | 2018-06-07 A | 2018-10-23 | 113280 |  | 60d | 2018-06-15 | 2018-09-06 | -49d | 406.67d | MH-Wtg [628 h] | 282,600 | 127,170 | 003 |
| 116540 |  | Mfg. & delivery of Special supports | 88d | 2018-06-08 A | 2018-11-30 | 113310 |  | 88d | 2018-07-13 | 2018-11-13 | -77d | 378.67d | MH-Wtg [377 h] | 169,650 | 67,860 | 003 |
| 116420 |  | Mfg. & delivery of Stud bolts | 60d | 2018-06-18 A | 2018-10-23 | 113290 |  | 60d | 2018-06-15 | 2018-09-06 | 52123.9d |  | MH-Wtg [628 h] | 282,600 | 254,340 | 003 |
| 116300 |  | Mfg. & delivery of Sight glass | 88d | 2018-06-20 A | 2018-11-30 | 113270 |  | 88d | 2018-07-27 | 2018-11-27 | -77d | 378.67d | MH-Wtg [314 h] | 141,300 | 28,260 | 003 |
| 116240 |  | Mfg. & delivery of Steam traps | 88d | 2018-06-26 A | 2018-11-30 | 113260 |  | 88d | 2018-06-22 | 2018-10-23 | -77d | 378.67d | MH-Wtg [1256 h] | 565,200 | 141,300 | 003 |
| 119760.2 |  | Mfg. & delivery of Spectacle blind | 1d | 2018-07-02 A | 2018-08-01 |  |  | 1d | 2018-07-02 | 2018-07-02 | 52182.9d |  |  |  |  | 003 |
| 119760.4 |  | Mfg. & delivery of Sluice gate | 1d | 2018-08-01 A | 2018-08-01 |  |  | 1d | 2018-07-02 | 2018-07-02 | 52182.9d |  |  |  |  | 003 |
| 119760.3 |  | Mfg. & delivery of Flexible hoses | 1d | 2018-08-01 | 2018-08-01 |  |  |  |  |  | 52182.9d |  |  |  |  | 003 |
| 119760.5 |  | Mfg. & delivery of Flange guards | 1d | 2018-08-01 | 2018-08-01 |  |  |  |  |  | 52182.9d |  |  |  |  | 003 |
| 119760.6 |  | Mfg. & delivery of PTFE package | 1d | 2018-08-02 A | 2018-08-01 |  |  | 1d | 2018-07-02 | 2018-07-02 | 52182.9d |  |  |  |  | 003 |
| 116480 |  | Mfg. & delivery of Primary supports (Deleted) | 60d | 2018-09-26 | 2018-12-18 | 113300 |  |  |  |  | 52083.9d |  | MH-Wtg |  |  | 003 |

Notes:
- 116060: Explanation: CS-60%, IBR-10%, SS-30% / 8" & Above- 75% / Upto 80"-25% / Flanges-90% / Blind- 10%
- 116000: Explanation: Upto 8"- 25%Wtg, 8" and above- 75%, IBR-10% / Elbow-30 / Cap-5 / Couplings-3 / Nipple-2 / Reducers-25 / Outlets-5 / Tees-30

| ID | WBS | Activity | Duration | Start | Finish | Predecessors | Complete | Remaining | Planned start | Planned finish | Total float | Free float | Resources | Cost | Actual cost | UNIT DESCRIPTION |
| --- | --- | --- | --- | --- | --- | --- | --- | --- | --- | --- | --- | --- | --- | --- | --- | --- |
|  | 5 | **Electrical Items** |  | 2017-06-06 | 2019-04-17 |  |  |  |  |  |  |  |  |  |  |  |
| 118420 |  | Mfg. & delivery of Compact substation | 88d | 2017-06-06 A | 2017-10-26 A | 113580.3 | 100% |  | 2017-06-29 | 2017-10-31 |  |  |  |  |  | 003 |
| 116670 |  | Mfg. & delivery of Transformers | 142d | 2017-09-11 A | 2018-02-24 A | 113320 | 100% |  | 2017-09-25 | 2018-04-11 |  |  | MH-Wtg [1649 h] | 742,050 | 742,050 | 003 |
| 117650 |  | Mfg. & delivery of HT Cable | 88d | 2017-10-06 A | 2018-03-27 A | 113460 | 100% |  | 2017-11-01 | 2018-03-05 |  |  | MH-Wtg [254 h] | 114,300 | 114,300 | 003 |
| 116740 |  | Mfg. & delivery of HT Panel | 110d | 2017-10-13 A | 2018-03-28 A | 113330 | 100% |  | 2017-11-01 | 2018-04-04 |  |  | MH-Wtg [634 h] | 285,300 | 285,300 | 003 |
| 116810 |  | Mfg. & delivery of HT PCC | 110d | 2017-10-13 A | 2018-03-28 A | 113340 | 100% |  | 2017-11-01 | 2018-04-04 |  |  | MH-Wtg [634 h] | 285,300 | 285,300 | 003 |
| 117160 |  | Mfg. & delivery of UPS | 88d | 2017-11-03 A | 2018-03-15 A | 113390 | 100% |  | 2017-11-29 | 2018-04-02 |  |  | MH-Wtg [190 h] | 85,500 | 85,500 | 003 |
| 117090 |  | Mfg. & delivery of DG | 110d | 2017-11-28 A | 2018-05-08 A | 113380 | 100% |  | 2017-12-01 | 2018-05-04 |  |  | MH-Wtg [380 h] | 171,000 | 171,000 | 003 |
| 117300 |  | Mfg. & delivery of NGR | 110d | 2017-12-04 A | 2018-02-21 A | 113410 | 100% |  | 2017-11-29 | 2018-05-02 |  |  | MH-Wtg [254 h] | 114,300 | 114,300 | 003 |
| 117370 |  | Mfg. & delivery of Buss duct | 88d | 2017-12-04 A | 2018-06-13 A | 113420 | 100% |  | 2017-11-29 | 2018-04-02 |  |  | MH-Wtg [254 h] | 114,300 | 114,300 | 003 |
| 117580 |  | Mfg. & delivery of VFD | 110d | 2017-12-04 A | 2018-05-02 A | 113450 | 100% |  | 2017-11-29 | 2018-05-02 |  |  | MH-Wtg [634 h] | 285,300 | 285,300 | 003 |
| 117440 |  | Mfg. & delivery of HT Motors | 113d | 2017-12-22 A | 2018-05-04 A | 113430 | 100% |  | 2018-01-01 | 2018-06-07 |  |  | MH-Wtg [380 h] | 171,000 | 171,000 | 003 |
| 116880 |  | Mfg. & delivery of LT PCC | 110d | 2017-12-29 A | 2018-05-24 A | 113350 | 100% |  | 2018-02-01 | 2018-07-04 |  |  | MH-Wtg [634 h] | 285,300 | 285,300 | 003 |
| 116950 |  | Mfg. & delivery of MCC | 110d | 2017-12-29 A | 2018-05-24 A | 113360 | 100% |  | 2018-02-01 | 2018-07-04 |  |  | MH-Wtg [634 h] | 285,300 | 285,300 | 003 |
| 117020 |  | Mfg. & delivery of APFC Panel | 110d | 2017-12-29 A | 2018-06-21 A | 113370 | 100% |  | 2018-02-01 | 2018-07-04 |  |  | MH-Wtg [190 h] | 85,500 | 85,500 | 003 |
| 117230 |  | Mfg. & delivery of Battery & battery charger | 88d | 2017-12-29 A | 2018-03-29 A | 113400 | 100% |  | 2018-02-01 | 2018-06-04 |  |  | MH-Wtg [190 h] | 85,500 | 85,500 | 003 |
| 117510 |  | Mfg. & delivery of LT Motors | 88d | 2018-01-15 A | 2018-05-22 A | 113440 | 100% |  | 2018-02-01 | 2018-06-04 |  |  | MH-Wtg [380 h] | 171,000 | 171,000 | 003 |
| 118100 |  | Mfg. & delivery of Cable trays | 88d | 2018-01-31 A | 2018-12-13 | 113530 |  | 96.67d | 2018-02-01 | 2018-06-04 | 52087.2d |  | MH-Wtg [254 h] | 114,300 | 108,585 | 003 |
| 117890 |  | Mfg. & delivery of Local control stations | 55d | 2018-02-01 A | 2018-05-08 A | 113500 | 100% |  | 2018-03-01 | 2018-05-16 |  |  | MH-Wtg [254 h] | 114,300 | 114,300 | 003 |
| 117710 |  | Mfg. & delivery of LT Cables | 88d | 2018-03-05 A | 2018-11-30 | 113470 |  | 88d | 2018-04-02 | 2018-08-01 | 52095.9d |  | MH-Wtg [254 h] | 114,300 | 102,870 | 003 |
| 118160 |  | Mfg. & delivery of Light fittings | 43d | 2018-03-29 A | 2018-09-28 | 113540 |  | 43d | 2018-04-02 | 2018-05-30 | -33d | 0d | MH-Wtg [190 h] | 85,500 | 81,225 | 003 |
| 118340 |  | Mfg. & delivery of PA System | 110d | 2018-04-16 A | 2019-01-01 | 113570 |  | 110d | 2018-04-30 | 2018-09-28 | -76d | 371.67d | MH-Wtg [380 h] | 171,000 | 162,450 | 003 |
| 117160.1 |  | Mfg. & delivery of UMPS | 88d | 2018-04-20 A | 2018-11-30 | 113390.1 |  | 88d | 2018-05-01 | 2018-08-30 | 52085.9d | 22d |  |  |  | 003 |
| 117021 |  | Mfg. & delivery of HT Capacitor bank | 110d | 2018-04-26 A | 2019-01-01 | 113371 |  | 110d | 2018-05-25 | 2018-10-25 | 52063.9d | 0d |  |  |  | 003 |
| 117960 |  | Mfg. & delivery of Misc panels | 88d | 2018-04-27 A | 2018-06-22 A | 113510 | 100% |  | 2018-05-01 | 2018-08-30 |  |  | MH-Wtg [190 h] | 85,500 | 85,500 | 003 |
| 118410 |  | Mfg. & delivery of CCTV | 110d | 2018-04-30 A | 2019-01-01 | 113580 |  | 110d | 2018-06-18 | 2018-11-16 | -71d | 376.67d | MH-Wtg [380 h] | 171,000 | 85,500 | 003 |
| 118430 |  | Mfg. & delivery of Flame proof light fittings | 1d | 2018-05-31 A | 2018-08-01 |  |  | 1d | 2018-06-01 | 2018-06-01 | 52182.9d |  |  |  |  | 003 |
| 116600 |  | Mfg. & delivery of GIS Switchyard (Deleted) | 186d | 2018-08-01 | 2019-04-17 |  |  |  |  |  | 51997.9d |  | MH-Wtg |  |  | 003 |
| 117770 |  | Mfg. & delivery of Control cables (Deleted) | 88d | 2018-08-01 | 2018-11-30 |  |  |  |  |  | 52095.9d |  | MH-Wtg |  |  | 003 |
| 117830 |  | Mfg. & delivery of Jointing kits (Deleted) | 88d | 2018-08-01 | 2018-11-30 |  |  |  |  |  | 52095.9d |  | MH-Wtg |  |  | 003 |
| 118030 |  | Mfg. & delivery of Lighting transformers (Deleted) | 88d | 2018-08-01 | 2018-11-30 |  |  |  |  |  | 52095.9d |  | MH-Wtg |  |  | 003 |
| 118220 |  | Mfg. & delivery of Earthing strips (Deleted) | 88d | 2018-08-01 | 2018-11-30 |  |  |  |  |  | 52095.9d |  | MH-Wtg |  |  | 003 |
| 118280 |  | Mfg. & delivery of Lightening arrestors (Deleted) | 88d | 2018-08-01 | 2018-11-30 |  |  |  |  |  | 52095.9d |  | MH-Wtg |  |  | 003 |
| 118340.1 |  | Mfg. & delivery of EPBAX system (Deleted) | 110d | 2018-08-29 | 2019-01-29 | 113570.1 |  |  |  |  | -91d | 356.67d |  |  |  | 003 |

| ID | WBS | Activity | Duration | Start | Finish | Predecessors | Complete | Remaining | Planned start | Planned finish | Total float | Free float | Resources | Cost | Actual cost | UNIT DESCRIPTION |
| --- | --- | --- | --- | --- | --- | --- | --- | --- | --- | --- | --- | --- | --- | --- | --- | --- |
|  | 6 | **Instrument Items** |  | 2017-08-22 | 2020-05-14 |  |  |  |  |  |  |  |  |  |  |  |
| 118550 |  | Mfg. & delivery of Control valves | 186d | 2017-08-22 A | 2020-05-14 | 113610 |  | 466.67d | 2017-10-23 | 2018-07-10 | -455.67d | 0d | MH-Wtg [1340 h] | 603,000 | 590,940 | 003 |
| 119250 |  | Mfg. & delivery of Weigh bridge | 88d | 2017-09-14 A | 2017-12-14 A | 113710 | 100% |  | 2017-09-14 | 2018-01-15 |  |  | MH-Wtg [397 h] | 178,650 | 178,650 | 003 |
| 118480 |  | Mfg. & delivery of DCS System | 142d | 2017-10-05 A | 2018-04-24 A | 113600 | 100% |  | 2017-11-01 | 2018-05-18 |  |  | MH-Wtg [1341 h] | 603,450 | 603,450 | 003 |
| 118620 |  | Mfg. & delivery of On/Off Valves | 142d | 2017-10-06 A | 2018-10-22 | 113612.1 | 58% | 59d | 2017-11-01 | 2018-05-18 | -66d | 0d | MH-Wtg [203 h] | 91,350 | 89,523 | 003 |
| 118760 |  | Mfg. & delivery of Flow meters | 142d | 2017-10-26 A | 2018-11-09 | 113640 | 49% | 73d | 2017-11-29 | 2018-06-15 | -80d | 15d | MH-Wtg [1207 h] | 543,150 | 532,287 | 003 |
| 119820 |  | Mfg. & delivery of Vibration monitoring system | 132d | 2017-12-02 A | 2018-12-04 | 113680.3 | 32% | 90d | 2017-12-29 | 2018-07-03 | -84d | 371.67d | MH-Wtg [537 h] | 241,650 | 239,234 | 001 |
| 119890 |  | Mfg. & delivery of Anti surge controller | 132d | 2017-12-02 A | 2018-12-04 | 113680.4 | 32% | 90d | 2017-12-29 | 2018-07-03 | -84d | 371.67d | MH-Wtg [397 h] | 178,650 | 176,864 | 001 |
| 119960 |  | Mfg. & delivery of Governor | 132d | 2017-12-02 A | 2018-12-04 | 113680.5 | 32% | 90d | 2017-12-29 | 2018-07-03 | -84d | 371.67d | MH-Wtg [397 h] | 178,650 | 176,864 | 001 |
| 119108 |  | Mfg. & delivery of Instrument cables | 70d | 2018-01-12 A | 2018-10-29 | 113682 | 10% | 63.33d | 2018-02-01 | 2018-05-09 | 52120.6d |  | MH-Wtg [265 h] | 119,250 | 107,325 | 003 |
| 119101 |  | Mfg. & delivery of Cable trays | 88d | 2018-01-31 A | 2018-12-13 | 113681 |  | 96.67d | 2018-02-01 | 2018-06-04 | 52087.2d |  | MH-Wtg [265 h] | 119,250 | 113,288 | 003 |
| 118830 |  | Mfg. & delivery of Analysers | 88d | 2018-02-08 A | 2018-06-27 A | 113651 | 100% |  | 2018-04-02 | 2018-08-01 |  |  | MH-Wtg [428 h] | 192,600 | 192,600 | 003 |
| 119970 |  | Mfg. & delivery of Bearing temperature RTD | 1d | 2018-02-19 A | 2018-03-19 A |  | 100% |  | 2018-03-01 | 2018-03-01 |  |  |  |  |  | 001 |
| 118900 |  | Mfg. & delivery of Safety items | 88d | 2018-03-20 A | 2018-11-30 | 113660 |  | 88d | 2018-04-02 | 2018-08-01 | -95d | 0d | MH-Wtg [662 h] | 297,900 | 238,320 | 003 |
| 119115 |  | Mfg. & delivery of Junction boxes | 60d | 2018-03-21 A | 2018-04-24 A | 113690 | 100% |  | 2018-03-22 | 2018-06-13 |  |  | MH-Wtg [265 h] | 119,250 | 119,250 | 003 |
| 119320 |  | Mfg. & delivery of Fire alarm system | 120d | 2018-03-28 A | 2019-01-15 | 113720 |  | 120d | 2018-04-02 | 2018-09-14 | -81d | 366.67d | MH-Wtg [397 h] | 178,650 | 175,077 | 003 |
| 119990.1 |  | Mfg. & delivery of Self actuated control valves | 1d | 2018-04-16 A | 2018-08-01 |  |  | 1d | 2018-05-01 | 2018-05-01 | 52182.9d |  |  |  |  | 001 |
| 119040 |  | Mfg. & delivery of Gauges | 88d | 2018-04-30 A | 2018-11-30 | 113680 |  | 88d | 2018-06-29 | 2018-10-30 | -95d | 0d | MH-Wtg [670 h] | 301,500 | 241,200 | 003 |
| 118690 |  | Mfg. & delivery of Transmitters | 87d | 2018-05-11 A | 2018-11-29 | 113630 |  | 87d | 2018-06-14 | 2018-10-12 | -94d | 1d | MH-Wtg [3536 h] | 1,591,200 | 1,241,136 | 003 |
| 119980 |  | Mfg. & delivery of Stack analyzer (CEMS) | 1d | 2018-05-22 A | 2018-08-01 |  |  | 1d | 2018-05-01 | 2018-05-01 | 52182.9d |  |  |  |  | 001 |
| 119990 |  | Mfg. & delivery of Online effluent monitoring system (EQMS) | 1d | 2018-05-22 A | 2018-08-01 |  |  | 1d | 2018-05-01 | 2018-05-01 | 52182.9d |  |  |  |  | 003 |
| 119990.2 |  | Mfg. & delivery of Gas detectors | 1d | 2018-05-25 A | 2018-08-01 |  |  | 1d | 2018-05-01 | 2018-05-01 | 52182.9d |  |  |  |  | 003 |
| 118690.1 |  | Mfg. & delivery of DIN Rail Transmitters (Deleted) | 1d | 2018-08-01 | 2018-08-01 |  |  |  |  |  | 52182.9d |  |  |  |  | 002 |
| 118970 |  | Mfg. & delivery of Switches | 88d | 2018-08-01 | 2018-11-30 |  |  |  |  |  | -95d | 0d | MH-Wtg [109 h] | 49,050 |  | 003 |
| 119180 |  | Mfg. & delivery of Bulk materials (Deleted) | 88d | 2018-08-01 | 2018-11-30 |  |  |  |  |  | 52095.9d |  | MH-Wtg |  |  | 003 |

| ID | WBS | Activity | Type | Duration | Start | Finish | Predecessors | Complete | Remaining | Planned start | Planned finish | Total float | Free float | Constraint | Calendar | Resources | Cost | Actual cost | UNIT DESCRIPTION | user_end_date1 |
| --- | --- | --- | --- | --- | --- | --- | --- | --- | --- | --- | --- | --- | --- | --- | --- | --- | --- | --- | --- | --- |
|  | 4 | **Construction & Commissioning** |  |  | 2017-04-06 |  |  |  |  |  |  |  |  |  |  |  |  |  |  |  |
|  | 1 | **Construction & Erection** |  |  | 2017-04-06 |  |  |  |  |  |  |  |  |  |  |  |  |  |  |  |
| A126620 |  | Mobilisation of Mechanical erection contractor | milestone | 0d | 2018-01-25 A | 2018-01-25 A | 113190 | 100% |  | 2018-02-01 | 2018-02-01 |  |  | start on 2018-01-25 |  |  |  |  |  |  |
| A126630 |  | Mobilisation of Electrical installation contractor | milestone | 0d | 2018-04-04 A | 2018-04-04 A | 113590 | 100% |  | 2018-03-29 | 2018-03-29 |  |  | start on 2018-03-15 |  |  |  |  |  |  |
| A126640 |  | Mobilisation of Instrument installation contractor | milestone | 0d | 2018-08-01 | 2018-08-01 | 113730 |  |  |  |  | -96d | 52183.9d | start on 2018-03-20 |  |  |  |  |  |  |
| A126650 |  | Mobilisation of Insulation contractor | milestone | 0d | 2018-08-01 | 2018-08-01 | 113200 |  |  |  |  | -56d | 52183.9d | start on 2018-05-15 |  |  |  |  |  |  |
| A126660 |  | Commencement of piping erection | milestone | 0d | 2018-08-01 | 2018-08-01 |  |  |  |  |  | -116d | 52183.9d | start on 2018-02-20 |  |  |  |  |  |  |
|  | 1 | **B101A- WNA Plant** |  |  | 2017-06-01 | 2020-07-02 |  |  |  |  |  |  |  |  |  |  |  |  |  |  |
|  | 1 | **Civil & Structural Work** |  |  | 2017-06-01 | 2019-01-16 |  |  |  |  |  |  |  |  |  |  |  |  |  |  |
| A112920 |  | Piling work |  | 47d | 2017-06-01 A | 2017-06-28 A | 113110 FS+10d, 100450 | 100% |  | 2017-07-10 | 2017-10-09 |  |  |  | Monsoon | MH-Wtg [952.36 h] | 428,562 | 428,562 | 001 |  |
| A112930 |  | Equipment foundations |  | 75d | 2017-07-25 A | 2018-07-05 A | A112920, 100490, 113112.1 FS+10d, 115860 FF | 100% |  | 2017-10-16 | 2018-01-29 |  |  |  |  | MH-Wtg [476.18 h] | 214,281 | 214,281 | 001 | 2018-02-15 |
| A112940 |  | RCC/Civil construction work |  | 98d | 2017-08-18 A | 2018-10-29 | A112920, 100460 | 35% | 64d | 2017-09-22 | 2018-02-07 | 52119.9d |  |  |  | MH-Wtg [714.27 h] | 321,422 | 305,350 | 001 | 2018-03-31 |
| A112970 |  | Painting work |  | 44d | 2017-08-18 A | 2018-10-01 | A113000 SS, 113150 FS+10d |  | 44d | 2018-10-04 | 2018-12-04 | 22d | 477.67d |  |  | MH-Wtg [238.09 h] | 107,141 | 101,783 | 001 |  |
| A112950 |  | Structural steel erection |  | 65d | 2018-02-17 A | 2018-10-30 | A112940 FS-44d |  | 65d | 2018-03-29 | 2018-06-27 | -29d | 0d |  |  | MH-Wtg [2142.8 h] | 964,260 | 867,834 | 001 | 2018-04-30 |
| A112960 |  | Anti-corrosive lining work |  | 32.4d | 2018-12-03 | 2019-01-16 | A112990, 113140 FS+10d |  |  |  |  | -74.4d | 381.27d |  |  | MH-Wtg [238.09 h] | 107,141 |  | 001 |  |
|  | 2 | **Mechanical Erection & Piping** |  |  | 2018-03-07 | 2020-06-05 |  |  |  |  |  |  |  |  |  |  |  |  |  |  |
| A112980 |  | Equipment installation |  | 100d | 2018-03-07 A | 2018-12-18 | A112930 FS-30d, 113190 FS+10d, A112821 FS-40d, A112980.8 FF, A112980.1 FF, A112980.2 FF, A112980.5 FF, A112980.9 FF, A112981 FF, A112980.3 FF, A112980.4 FF, 114440 FF+15d, 114720 FF+15d, 119590.4 FF+5d, 119590.5 FF+10d, 115820 FF+10d, 115830 FF+10d, 115840 FF+15d, 117440 FF+20d, 119590.92 FF, 119590.93 FF, 119590.94 FF, 119590.95 FF, 119590.98 FF, 119590.99 FF |  | 100d | 2018-03-08 | 2018-07-25 | -54d | 0d |  |  | MH-Wtg [1428.53 h] | 642,839 | 555,412 | 001 |  |
| A112990 |  | Piping erection |  | 80d | 2018-04-18 A | 2018-11-30 | A112980 SS+30d, 119590.3 FF+10d, 119590.6 FF+10d, 115940 FF, 116000 FF, 116060 FF, 115210 FF+10d, 105940 SS+15d |  | 80d | 2018-04-26 | 2018-08-15 | -74.4d | 0d |  |  | MH-Wtg [1904.71 h] | 857,120 | 385,763 | 001 |  |
| A113020 |  | Painting work |  | 40d | 2018-04-25 A | 2018-09-25 | A113000 FS-23d, 113150 FS+10d |  | 40d | 2018-11-05 | 2018-12-28 | 26d | 481.67d |  |  | MH-Wtg [238.09 h] | 107,141 | 50,356 | 001 |  |
| A113000 |  | Testing and boxup |  | 45d | 2018-06-20 A | 2020-05-14 | A112990 FS-20d, 116180 FF, 116240 FF, 116300 FF, 116360 FF, 119760 FF, 118550 FF, 116540 FF, 116420 FS-20d, 116120 FF, 119590.2 FF+10d |  | 45d | 2018-10-04 | 2018-12-05 | -455.67d | 0d |  |  | MH-Wtg [714.27 h] | 321,422 | 80,355 | 001 |  |
| A112980.3 |  | Installation of Compressor train |  | 40d | 2018-09-19 | 2018-11-13 | A112950 FS-30d, A112821 |  |  |  |  | -29d | 25d |  |  |  |  |  | 001 |  |
| A112980.1 |  | Installation of Steam superheater |  | 10d | 2018-10-10 | 2018-10-23 | 115800 |  |  |  |  | -24d | 0d |  |  |  |  |  | 001 |  |
| A112980.7 |  | Installation of Water jacketed shell |  | 10d | 2018-10-10 | 2018-10-23 | 115800 |  |  |  |  | -44d | 0d |  |  |  |  |  | 001 |  |
| A112980.2 |  | Installation of Economizer |  | 10d | 2018-10-24 | 2018-11-06 | A112980.1, 115800 |  |  |  |  | -24d | 30d |  |  |  |  |  | 001 |  |
| A112980.5 |  | Installation of HP waste heat boiler & accumulator |  | 20d | 2018-10-24 | 2018-11-20 | 115800, A112980.7 |  |  |  |  | -44d | 0d |  |  |  |  |  | 001 |  |
| A112980.8 |  | Installation of VGH package |  | 30d | 2018-10-24 | 2018-12-04 | 115810, A112980.7 |  |  |  |  | -44d | 0d |  |  |  |  |  | 001 |  |
| A112980.4 |  | Installation of Inlet air filter |  | 10d | 2018-10-31 | 2018-11-13 | A112950, 119590.1 |  |  |  |  | -29d | 25d |  |  |  |  |  | 001 |  |
| A112980.9 |  | Installation of Convertor steam accumulator |  | 5d | 2018-10-31 | 2018-11-06 | A112950, 115800 |  |  |  |  | -24d | 30d |  |  |  |  |  | 001 |  |
| A112980.6 |  | Installation HP tail gas boiler & accumulator (Deleted) |  | 10d | 2018-11-21 | 2018-12-04 | 115800, A112980.8 FF |  |  |  |  | 52093.9d |  |  |  |  |  |  | 001 |  |
| A112981 |  | Installation of LP waste heat boiler & accumulator |  | 10d | 2018-11-21 | 2018-12-04 | 115800, A112980.5 |  |  |  |  | -44d | 10d |  |  |  |  |  | 001 |  |
| A113010 |  | Insulation of equipments and piping |  | 60d | 2020-03-13 | 2020-06-05 | A113000 FS-44d, 113200 FS+10d |  |  |  |  | -436.67d | 19d |  |  | MH-Wtg [476.18 h] | 214,281 |  | 001 |  |

Notes:
- A112940: Explanation: 75 % for Compresssor house (45%) & VEGH foundations / (30%)

| ID | WBS | Activity | Duration | Start | Finish | Predecessors | Complete | Remaining | Planned start | Planned finish | Total float | Free float | Calendar | Resources | Cost | Actual cost | UNIT DESCRIPTION | user_end_date1 |
| --- | --- | --- | --- | --- | --- | --- | --- | --- | --- | --- | --- | --- | --- | --- | --- | --- | --- | --- |
|  | 3 | **Electrical Installation** |  | 2018-06-08 | 2018-12-18 |  |  |  |  |  |  |  |  |  |  |  |  |  |
| A113080 |  | Earthing work | 30d | 2018-06-08 A | 2018-12-18 | A112980 FF |  | 30d | 2018-10-08 | 2018-11-16 | -54d | 401.67d |  | MH-Wtg [308.87 h] | 138,992 | 118,143 | 001 |  |
| A113030 |  | Cable tray installation | 40d | 2018-07-11 A | 2018-09-25 | 113590 FS+10d, A112950 FS-20d |  | 40d | 2018-09-03 | 2018-10-26 | 52143.9d |  |  | MH-Wtg [411.83 h] | 185,324 | 22,239 | 001 |  |
| A113040 |  | Cable laying | 40d | 2018-07-20 A | 2018-09-25 | A113030 FS-20d |  | 40d | 2018-10-01 | 2018-11-23 | -39d | 0d |  | MH-Wtg [514.79 h] | 231,655 | 11,583 | 001 |  |
| A113050 |  | Installation of electrical items | 40d | 2018-08-29 | 2018-10-23 | A113040 FS-20d |  |  |  |  | -39d | 0d |  | MH-Wtg [308.87 h] | 138,992 |  | 001 |  |
| A113060 |  | Glanding and termination | 25d | 2018-10-24 | 2018-11-27 | A113050 |  |  |  |  | -39d | 416.67d |  | MH-Wtg [308.87 h] | 138,992 |  | 001 |  |
| A113070 |  | Installation of light fittings | 15d | 2018-10-24 | 2018-11-13 | A113050, 118160 FF+20d |  |  |  |  | -29d | 426.67d |  | MH-Wtg [205.91 h] | 92,660 |  | 001 |  |
|  | 4 | **Instrument Installation** |  | 2018-07-11 | 2020-07-02 |  |  |  |  |  |  |  |  |  |  |  |  |  |
| A113110 |  | Installation of JBs and Air headers | 20d | 2018-07-11 A | 2018-08-28 | A113090, 119115 |  | 20d | 2018-10-15 | 2018-11-09 | 11d | 466.67d |  | MH-Wtg [141.57 h] | 63,707 | 15,927 | 001 |  |
| A113090 |  | Cable tray installation | 30d | 2018-07-17 A | 2018-09-11 | A113030 SS, 113730 FS+10d |  | 30d | 2018-09-03 | 2018-10-12 | -14d | 0d |  | MH-Wtg [283.13 h] | 127,409 | 50,963 | 001 |  |
| A113100 |  | Cable laying | 30d | 2018-08-22 | 2018-10-02 | A113090 FS-15d |  |  |  |  | -14d | 441.67d |  | MH-Wtg [353.92 h] | 159,264 |  | 001 |  |
| A113120 |  | Installation of instruments | 30d | 2020-04-16 | 2020-05-28 | A113000 FF+10d, 119820 FF+15d, 119890 FF+15d, 119960 FF+15d |  |  |  |  | -455.67d | 0d |  | MH-Wtg [212.35 h] | 95,558 |  | 001 |  |
| A113130 |  | Glanding and termination | 20d | 2020-05-14 | 2020-06-11 | A113100 FF, A113110 FF, A113120 FS-10d |  |  |  |  | -455.67d | 0d |  | MH-Wtg [212.35 h] | 95,558 |  | 001 |  |
| A113140 |  | Hookup of instruments | 20d | 2020-05-14 | 2020-06-11 | A113120 FF+10d |  |  |  |  | -440.67d | 15d |  | MH-Wtg [141.57 h] | 63,707 |  | 001 |  |
| A113150 |  | Testing & calibration | 15d | 2020-06-11 | 2020-07-02 | A113140 FF, A113130 |  |  |  |  | -455.67d | 0d |  | MH-Wtg [70.78 h] | 31,851 |  | 001 |  |
|  | 2 | **B102A/B- CNA Plant-1&2** |  | 2017-05-02 | 2018-12-28 |  |  |  |  |  |  |  |  |  |  |  |  |  |
|  | 1 | **Civil & Structural Work** |  | 2017-05-02 | 2018-10-29 |  |  |  |  |  |  |  |  |  |  |  |  |  |
| A113400 |  | Piling work | 30d | 2017-05-02 A | 2017-05-25 A | 113110 FS+10d, 100540 | 100% |  | 2017-05-15 | 2017-08-11 |  |  | Monsoon | MH-Wtg [571.41 h] | 257,135 | 257,135 | 002 |  |
| A113420 |  | RCC/Civil construction work | 45d | 2017-07-10 A | 2018-01-10 A | A113400, 100550, 113112.1 FS+10d | 100% |  | 2017-07-24 | 2017-10-10 |  |  | Monsoon | MH-Wtg [635 h] | 285,750 | 285,750 | 002 | 2018-02-10 |
| A113430 |  | Structural steel erection | 30d | 2017-11-17 A | 2018-10-29 | A113420 FS-10d |  | 64d | 2018-11-20 | 2018-12-31 | 52099.9d | 0d |  | MH-Wtg [1285.68 h] | 578,556 | 572,770 | 002 | 2018-03-31 |
| A113450 |  | Painting work | 25d | 2017-11-17 A | 2018-09-04 | A113480 SS, 113150 FS+10d |  | 25d | 2018-08-17 | 2018-09-20 | -2d | 93d |  | MH-Wtg [142.85 h] | 64,283 | 63,640 | 002 |  |
| A113410 |  | Equipment foundations | 29d | 2018-01-02 A | 2018-01-10 A | A113420 FF, 100580 | 100% |  | 2018-02-01 | 2018-03-13 |  |  |  | MH-Wtg [79 h] | 35,550 | 35,550 | 002 | 2018-02-10 |
| A113440 |  | Anti-corrosive lining work | 20d | 2018-05-15 A | 2018-06-20 A | A113470, 113140 FS+10d | 100% |  | 2018-10-04 | 2018-10-31 |  |  |  | MH-Wtg [142.85 h] | 64,283 | 64,283 | 002 |  |
|  | 2 | **Mechanical Erection & Piping** |  | 2018-04-27 | 2018-11-26 |  |  |  |  |  |  |  |  |  |  |  |  |  |
| A113460 |  | Equipment installation | 30d | 2018-04-27 A | 2018-09-11 | 113190 FS+10d, A113460.1 SS, 115890 FF+10d, 115900 FF+10d, 114440.1 FF+10d |  | 30d | 2019-02-05 | 2019-03-18 | 52153.9d |  |  | MH-Wtg [857.12 h] | 385,704 | 316,277 | 002 |  |
| A113470 |  | Piping erection | 45d | 2018-05-08 A | 2018-10-02 | A113460 FS-15d, 119390 FF+10d |  | 45d | 2018-08-02 | 2018-10-03 | -62d | 4d |  | MH-Wtg [1142.83 h] | 514,274 | 401,133 | 002 |  |
| A113500 |  | Painting work | 15d | 2018-05-15 A | 2018-08-21 | A113480, 113150 FS+10d |  | 15d | 2018-09-21 | 2018-10-11 | 8d | 103d |  | MH-Wtg [142.85 h] | 64,283 | 51,426 | 002 |  |
| A113480 |  | Testing and boxup | 25d | 2018-09-18 | 2018-10-22 | A113470 FS-15d, 118620 FF, 119590.91 FF+15d |  |  |  |  | -66d | 0d |  | MH-Wtg [428.56 h] | 192,852 |  | 002 |  |
| A113460.1 |  | Installation of CNA columns (Glass lined) | 15d | 2018-10-23 | 2018-11-12 | A113430 FF+10d, 115870 |  |  |  |  | 52109.9d |  |  |  |  |  | 002 |  |
| A113490 |  | Insulation of equipments and piping | 20d | 2018-10-23 | 2018-11-19 | A113480, 113200 FS+10d, A113521 FF, 119590.91 FF |  |  |  |  | -66d | 29d |  | MH-Wtg [285.71 h] | 128,570 |  | 002 |  |
| A113460.11 |  | Installation of Glass equipment package | 20d | 2018-10-30 | 2018-11-26 | A113430, 115880, A113470 |  |  |  |  | 52099.9d |  |  |  |  |  | 002 |  |

| ID | WBS | Activity | Duration | Start | Finish | Predecessors | Complete | Remaining | Planned start | Planned finish | Total float | Free float | Resources | Cost | Actual cost | UNIT DESCRIPTION | user_end_date1 |
| --- | --- | --- | --- | --- | --- | --- | --- | --- | --- | --- | --- | --- | --- | --- | --- | --- | --- |
|  | 3 | **Electrical Installation** |  | 2017-12-20 | 2018-11-19 |  |  |  |  |  |  |  |  |  |  |  |  |
| A113560 |  | Earthing work | 20d | 2017-12-20 A | 2018-07-25 A | A113460 FF | 100% |  | 2018-04-09 | 2018-05-04 |  |  | MH-Wtg [123.55 h] | 55,598 | 55,598 | 002 |  |
| A113510 |  | Cable tray installation | 25d | 2018-06-20 A | 2018-09-04 | 113590 FS+10d, A113430 |  | 25d | 2018-09-28 | 2018-11-01 | 52158.9d |  | MH-Wtg [247.1 h] | 111,195 | 105,635 | 002 |  |
| A113520 |  | Cable laying | 20d | 2018-07-10 A | 2018-08-28 | A113510 FS-10d |  | 20d | 2018-10-19 | 2018-11-15 | -32d | 0d | MH-Wtg [308.87 h] | 138,992 | 125,092 | 002 |  |
| A113550 |  | Installation of light fittings | 15d | 2018-07-18 A | 2018-08-21 | A113530 |  | 15d | 2018-11-30 | 2018-12-20 | -2d | 93d | MH-Wtg [123.55 h] | 55,598 | 41,698 | 002 |  |
| A113530 |  | Installation of electrical items | 20d | 2018-08-15 | 2018-09-11 | A113520 FS-10d |  |  |  |  | -32d | 0d | MH-Wtg [185.32 h] | 83,394 |  | 002 |  |
| A113540 |  | Glanding and termination | 15d | 2018-09-12 | 2018-10-02 | A113530 |  |  |  |  | -32d | 63d | MH-Wtg [185.32 h] | 83,394 |  | 002 |  |
| A113521 |  | Electrical heat tracing | 20d | 2018-10-23 | 2018-11-19 | A113480 |  |  |  |  | -66d | 0d | MH-Wtg [61.77 h] | 27,797 |  | 002 |  |
|  | 4 | **Instrument Installation** |  | 2018-06-18 | 2018-12-28 |  |  |  |  |  |  |  |  |  |  |  |  |
| A113590 |  | Installation of JBs and Air headers | 15d | 2018-06-18 A | 2018-08-21 | A113570 |  | 15d | 2018-10-04 | 2018-10-24 | -17d | 78d | MH-Wtg [84.94 h] | 38,223 | 37,459 | 002 |  |
| A113570 |  | Cable tray installation | 25d | 2018-06-20 A | 2018-09-04 | A113510 SS, 113730 FS+10d |  | 25d | 2018-08-30 | 2018-10-03 | 52158.9d |  | MH-Wtg [169.88 h] | 76,446 | 72,624 | 002 |  |
| A113580 |  | Cable laying | 20d | 2018-07-18 A | 2018-08-28 | A113570 FS-10d |  | 20d | 2018-07-23 | 2018-08-17 | -22d | 73d | MH-Wtg [212.35 h] | 95,558 | 69,919 | 002 |  |
| A113600 |  | Installation of instruments | 30d | 2018-10-22 | 2018-11-30 | A113480 FF, 118690 FF, 118760 FF, 118900 FF, 118970 FF, 119040 FF, 118830 FF |  |  |  |  | -95d | 0d | MH-Wtg [127.41 h] | 57,335 |  | 002 |  |
| A113620 |  | Hookup of instruments | 25d | 2018-11-12 | 2018-12-14 | A113600 FF+10d |  |  |  |  | -85d | 10d | MH-Wtg [84.94 h] | 38,223 |  | 002 |  |
| A113610 |  | Glanding and termination | 15d | 2018-11-19 | 2018-12-07 | A113580 FF, A113590 FF, A113600 FF+5d |  |  |  |  | -95d | 0d | MH-Wtg [127.41 h] | 57,335 |  | 002 |  |
| A113630 |  | Testing & calibration | 15d | 2018-12-10 | 2018-12-28 | A113620 FF, A113610 |  |  |  |  | -95d | 0d | MH-Wtg [42.47 h] | 19,112 |  | 002 |  |
|  | 3 | **B102C- MGN Preparation** |  | 2017-11-10 | 2018-12-26 |  |  |  |  |  |  |  |  |  |  |  |  |
|  | 1 | **Civil & Structural Work** |  | 2017-11-10 | 2018-05-08 |  |  |  |  |  |  |  |  |  |  |  |  |
| A113650 |  | RCC/Civil construction work | 21d | 2017-11-10 A | 2018-01-10 A | A113640 | 100% |  | 2017-12-13 | 2018-01-10 |  |  | MH-Wtg [211.63 h] | 95,234 | 95,234 | 002 | 2018-01-10 |
| A113660 |  | Structural steel erection | 15d | 2017-11-20 A | 2018-05-08 A | A113650 | 100% |  | 2017-11-20 | 2017-12-08 |  |  | MH-Wtg [264.54 h] | 119,043 | 119,043 | 002 | 2017-12-29 |
| A113640 |  | Equipment foundations | 36d | 2017-11-21 A | 2018-01-10 A | A114330 | 100% |  | 2018-01-01 | 2018-02-20 |  |  | MH-Wtg [423.27 h] | 190,472 | 190,472 | 002 | 2017-12-30 |
| A113680 |  | Painting work | 5d | 2017-11-25 A | 2018-04-30 A | A113710 SS | 100% |  | 2018-10-05 | 2018-10-11 |  |  | MH-Wtg [52.91 h] | 23,810 | 23,810 | 002 | 2018-01-15 |
|  | 2 | **Mechanical Erection & Piping** |  | 2018-04-20 | 2018-10-02 |  |  |  |  |  |  |  |  |  |  |  |  |
| A113690 |  | Equipment installation | 20d | 2018-04-20 A | 2018-08-28 | A113640, 115910, 114790 FF, 114440.1 FF+10d |  | 20d | 2018-08-29 | 2018-09-25 | 52163.9d |  | MH-Wtg [285.71 h] | 128,570 | 115,713 | 002 |  |
| A113700 |  | Piping erection | 25d | 2018-06-05 A | 2018-09-04 | A113690 FS-10d |  | 25d | 2018-09-07 | 2018-10-11 | -32d | 0d | MH-Wtg [380.94 h] | 171,423 | 162,852 | 002 |  |
| A113730 |  | Painting work | 10d | 2018-06-07 A | 2018-07-12 A | A113710 | 100% |  | 2018-10-19 | 2018-11-01 |  |  | MH-Wtg [47.62 h] | 21,429 | 21,429 | 002 |  |
| A113710 |  | Testing and boxup | 10d | 2018-08-29 | 2018-09-11 | A113700 FS-5d |  |  |  |  | -32d | 0d | MH-Wtg [142.85 h] | 64,283 |  | 002 |  |
| A113720 |  | Insulation of equipments and piping | 15d | 2018-09-12 | 2018-10-02 | A113710 |  |  |  |  | -32d | 63d | MH-Wtg [95.24 h] | 42,858 |  | 002 |  |

| ID | WBS | Activity | Duration | Start | Finish | Predecessors | Complete | Remaining | Planned start | Planned finish | Total float | Free float | Calendar | Resources | Cost | Actual cost | UNIT DESCRIPTION | user_start_date1 | user_end_date1 |
| --- | --- | --- | --- | --- | --- | --- | --- | --- | --- | --- | --- | --- | --- | --- | --- | --- | --- | --- | --- |
|  | 3 | **Electrical Installation** |  | 2018-04-18 | 2018-12-26 |  |  |  |  |  |  |  |  |  |  |  |  |  |  |
| A113790 |  | Earthing work | 3d | 2018-04-18 A | 2018-12-26 A | A113690 | 100% |  | 2018-08-28 | 2018-08-30 |  |  |  | MH-Wtg [61.77 h] | 27,797 | 27,797 | 002 |  |  |
| A113740 |  | Cable tray installation | 8d | 2018-08-01 | 2018-08-10 | A113660, 113590 FS+10d |  |  |  |  | -8d | 0d |  | MH-Wtg [82.37 h] | 37,067 |  | 002 |  |  |
| A113750 |  | Cable laying | 5d | 2018-08-13 | 2018-08-17 | A113740 |  |  |  |  | -8d | 0d |  | MH-Wtg [102.96 h] | 46,332 |  | 002 |  |  |
| A113760 |  | Installation of electrical items | 5d | 2018-08-20 | 2018-08-24 | A113750 |  |  |  |  | -8d | 0d |  | MH-Wtg [61.77 h] | 27,797 |  | 002 |  |  |
| A113770 |  | Glanding and termination | 3d | 2018-08-27 | 2018-08-29 | A113760 |  |  |  |  | -8d | 87d |  | MH-Wtg [61.77 h] | 27,797 |  | 002 |  |  |
| A113780 |  | Installation of light fittings | 3d | 2018-10-01 | 2018-10-03 | A113760, 118160 |  |  |  |  | -33d | 62d |  | MH-Wtg [41.18 h] | 18,531 |  | 002 |  |  |
|  | 4 | **Instrument Installation** |  | 2018-06-20 | 2018-09-28 |  |  |  |  |  |  |  |  |  |  |  |  |  |  |
| A113820 |  | Installation of JBs and Air headers | 3d | 2018-06-20 A | 2018-06-22 A | A113800 | 100% |  | 2018-07-12 | 2018-07-16 |  |  |  | MH-Wtg [28.31 h] | 12,740 | 12,740 | 002 |  |  |
| A113800 |  | Cable tray installation | 8d | 2018-07-02 A | 2018-08-10 | A113740 SS, 113730 FS+10d |  | 8d | 2018-07-02 | 2018-07-11 | 52175.9d |  |  | MH-Wtg [56.63 h] | 25,484 | 24,368 | 002 |  |  |
| A113810 |  | Cable laying | 5d | 2018-07-12 A | 2018-08-07 | A113800 |  | 5d | 2018-07-12 | 2018-07-18 | 5d | 33d |  | MH-Wtg [70.78 h] | 31,851 | 28,666 | 002 |  |  |
| A113830 |  | Installation of instruments | 5d | 2018-09-12 | 2018-09-18 | A113710 |  |  |  |  | -30d | 0d |  | MH-Wtg [42.47 h] | 19,112 |  | 002 |  |  |
| A113840 |  | Glanding and termination | 3d | 2018-09-19 | 2018-09-21 | A113810 FF, A113820 FF, A113830 |  |  |  |  | -28d | 2d |  | MH-Wtg [42.47 h] | 19,112 |  | 002 |  |  |
| A113850 |  | Hookup of instruments | 5d | 2018-09-19 | 2018-09-25 | A113830 |  |  |  |  | -30d | 0d |  | MH-Wtg [28.31 h] | 12,740 |  | 002 |  |  |
| A113860 |  | Testing & calibration | 3d | 2018-09-26 | 2018-09-28 | A113850, A113840 |  |  |  |  | -30d | 65d |  | MH-Wtg [14.16 h] | 6,372 |  | 002 |  |  |
|  | 4 | **B103A- WNA Storage Tanks/Pumps** |  | 2017-07-05 | 2019-02-26 |  |  |  |  |  |  |  |  |  |  |  |  |  |  |
|  | 1 | **Civil & Structural Work** |  | 2017-11-14 | 2018-10-30 |  |  |  |  |  |  |  |  |  |  |  |  |  |  |
| A113870 |  | Equipment foundations | 30d | 2017-11-14 A | 2018-09-27 | 113120 FS+10d, 100720 |  | 42d | 2017-11-06 | 2017-12-15 | 52141.9d |  | Monsoon | MH-Wtg [642.84 h] | 289,278 | 260,350 | 003 | 2018-01-01 | 2018-02-28 |
| A113880 |  | RCC/Civil construction work | 45d | 2018-01-15 A | 2018-10-02 | A113870 |  | 45d | 2018-04-02 | 2018-06-01 | 52138.9d |  |  | MH-Wtg [428.56 h] | 192,852 | 154,282 | 003 |  |  |
| A113890 |  | Structural steel erection | 20d | 2018-04-10 A | 2018-08-28 | A113880 |  | 20d | 2018-07-03 | 2018-07-30 | 23d | 150d |  | MH-Wtg [214.28 h] | 96,426 | 88,712 | 003 |  |  |
| A113910 |  | Painting work | 10d | 2018-04-15 A | 2018-08-14 | A113940 SS, 113150 FS+10d |  | 10d | 2018-10-29 | 2018-11-09 | 48d | 175d |  | MH-Wtg [71.43 h] | 32,144 | 30,536 | 003 |  |  |
| A113900 |  | Anti-corrosive lining work | 25d | 2018-09-26 | 2018-10-30 | A113930, 113140 FS+10d |  |  |  |  | -22d | 105d |  | MH-Wtg [71.43 h] | 32,144 |  | 003 |  |  |
|  | 2 | **Mechanical Erection & Piping** |  | 2017-07-05 | 2018-11-20 |  |  |  |  |  |  |  |  |  |  |  |  |  |  |
| A113930 |  | Piping erection | 40d | 2017-07-05 A | 2018-09-25 | A113920 FS-20d, 114510 FF+15d, 106060 SS+10d |  | 40d | 2018-09-24 | 2018-11-16 | -32d | 0d |  | MH-Wtg [428.56 h] | 192,852 | 44,356 | 003 |  |  |
| A113920 |  | Equipment installation | 80d | 2018-01-29 A | 2018-11-20 | A113870 FS-15d, 115750 SS+30d |  | 80d | 2018-04-09 | 2018-07-27 | -107d | 0d |  | MH-Wtg [571.41 h] | 257,135 | 200,179 | 003 |  |  |
| A113960 |  | Painting work | 20d | 2018-07-10 A | 2018-08-28 | A113940 FS-10d, 113150 FS+10d |  | 20d | 2018-11-26 | 2018-12-21 | 38d | 165d |  | MH-Wtg [71.43 h] | 32,144 | 9,643 | 003 |  |  |
| A113940 |  | Testing and boxup | 30d | 2018-09-05 | 2018-10-16 | A113930 FS-15d |  |  |  |  | -32d | 0d |  | MH-Wtg [214.28 h] | 96,426 |  | 003 |  |  |
| A113950 |  | Insulation of equipments and piping (Deleted) | 30d | 2018-09-19 | 2018-10-30 | A113940 FS-20d, 113200 FS+10d |  |  |  |  | 52118.9d |  |  | MH-Wtg |  |  | 003 |  |  |

Notes:
- A113920: Explanation: 90% for site fab tanks

| ID | WBS | Activity | Duration | Start | Finish | Predecessors | Remaining | Planned start | Planned finish | Total float | Free float | Resources | Cost | Actual cost | UNIT DESCRIPTION |
| --- | --- | --- | --- | --- | --- | --- | --- | --- | --- | --- | --- | --- | --- | --- | --- |
|  | 3 | **Electrical Installation** |  | 2018-11-21 | 2019-02-26 |  |  |  |  |  |  |  |  |  |  |
| A113970 |  | Cable tray installation | 30d | 2018-11-21 | 2019-01-01 | 113590 FS+10d, A113920 |  |  |  | -107d | 0d | MH-Wtg [123.55 h] | 55,598 |  | 003 |
| A114020 |  | Earthing work | 15d | 2018-11-21 | 2018-12-11 | A113920 |  |  |  | -52d | 75d | MH-Wtg [92.66 h] | 41,697 |  | 003 |
| A113980 |  | Cable laying | 25d | 2018-12-19 | 2019-01-22 | A113970 FS-10d |  |  |  | -107d | 0d | MH-Wtg [154.44 h] | 69,498 |  | 003 |
| A113990 |  | Installation of electrical items | 20d | 2019-01-09 | 2019-02-05 | A113980 FS-10d |  |  |  | -107d | 0d | MH-Wtg [92.66 h] | 41,697 |  | 003 |
| A114000 |  | Glanding and termination | 25d | 2019-01-23 | 2019-02-26 | A113990 FS-10d |  |  |  | -107d | 20d | MH-Wtg [92.66 h] | 41,697 |  | 003 |
| A114010 |  | Installation of light fittings | 10d | 2019-02-06 | 2019-02-19 | A113990 |  |  |  | -102d | 25d | MH-Wtg [61.77 h] | 27,797 |  | 003 |
|  | 4 | **Instrument Installation** |  | 2018-07-04 | 2018-11-13 |  |  |  |  |  |  |  |  |  |  |
| A114030 |  | Cable tray installation | 30d | 2018-07-04 A | 2018-09-11 | A113970 SS, 113730 FS+10d | 30d | 2018-10-22 | 2018-11-30 | 52153.9d |  | MH-Wtg [84.94 h] | 38,223 | 30,578 | 003 |
| A114050 |  | Installation of JBs and Air headers | 10d | 2018-07-10 A | 2018-08-14 | A114030 | 10d | 2018-12-03 | 2018-12-14 | 18d | 50d | MH-Wtg [42.47 h] | 19,112 | 11,467 | 003 |
| A114040 |  | Cable laying | 25d | 2018-07-17 A | 2018-09-04 | A114030 FS-20d | 25d | 2018-11-05 | 2018-12-07 | 3d | 35d | MH-Wtg [106.17 h] | 47,777 | 28,666 | 003 |
| A114060 |  | Installation of instruments | 30d | 2018-09-05 | 2018-10-16 | A113940 FF |  |  |  | -32d | 0d | MH-Wtg [63.7 h] | 28,665 |  | 003 |
| A114070 |  | Glanding and termination | 25d | 2018-09-19 | 2018-10-23 | A114040 FF, A114050 FF, A114060 FS-20d |  |  |  | -32d | 0d | MH-Wtg [63.7 h] | 28,665 |  | 003 |
| A114080 |  | Hookup of instruments | 20d | 2018-09-26 | 2018-10-23 | A114060 FF, A113940 FS-15d |  |  |  | -17d | 15d | MH-Wtg [42.47 h] | 19,112 |  | 003 |
| A114090 |  | Testing & calibration | 15d | 2018-10-24 | 2018-11-13 | A114080 FF, A114070 |  |  |  | -32d | 95d | MH-Wtg [21.23 h] | 9,554 |  | 003 |
|  | 41 | **B103B- CNA Storage Tanks/Pumps** |  | 2017-11-18 | 2019-03-12 |  |  |  |  |  |  |  |  |  |  |
|  | 1 | **Civil & Structural Work** |  | 2017-11-18 | 2019-02-05 |  |  |  |  |  |  |  |  |  |  |
| A114100 |  | Equipment foundations | 60d | 2017-11-18 A | 2018-10-24 | 101550, 115730 FF-15d | 60d | 2018-01-01 | 2018-03-27 | -112d | 0d | MH-Wtg [571.41 h] | 257,135 | 231,421 | 003 |
| A114110 |  | RCC/Civil construction work | 40d | 2017-11-18 A | 2018-10-24 | A114100 FF, 101560 | 40d | 2018-01-30 | 2018-03-27 | 52123.9d |  | MH-Wtg [428.56 h] | 192,852 | 173,567 | 003 |
| A114120 |  | Structural steel erection | 15d | 2018-07-04 A | 2018-08-21 | A114150.1 | 15d | 2018-10-29 | 2018-11-16 | -27d | 0d | MH-Wtg [285.71 h] | 128,569 | 19,285 | 003 |
| A114140 |  | Painting work | 25d | 2018-07-10 A | 2018-09-04 | A114170 SS | 25d | 2018-11-26 | 2018-12-28 | 33d | 160d | MH-Wtg [71.43 h] | 32,144 | 2,571 | 003 |
| A114130 |  | Anti-corrosive lining work | 20d | 2019-01-09 | 2019-02-05 | A114160 |  |  |  | -92d | 35d | MH-Wtg [71.43 h] | 32,144 |  | 003 |
|  | 2 | **Mechanical Erection & Piping** |  | 2018-11-14 | 2019-02-19 |  |  |  |  |  |  |  |  |  |  |
| A114150 |  | Equipment installation | 20d | 2018-11-14 | 2018-12-11 | A114150.1 SS, 119590.93 FF+15d |  |  |  | 52088.9d |  | MH-Wtg [571.41 h] | 257,135 |  | 003 |
| A114150.1 |  | Installation of CNA storage tanks | 10d | 2018-11-14 | 2018-11-27 | 115730, A114100 FS+10d |  |  |  | -117d | 0d |  |  |  | 003 |
| A114160 |  | Piping erection | 30d | 2018-11-28 | 2019-01-08 | A114120 FF, A114150.1, 110330 |  |  |  | -117d | 0d | MH-Wtg [428.56 h] | 192,852 |  | 003 |
| A114170 |  | Testing and boxup | 20d | 2018-12-26 | 2019-01-22 | A114160 FS-10d |  |  |  | -117d | 0d | MH-Wtg [214.28 h] | 96,426 |  | 003 |
| A114180 |  | Insulation of equipments and piping | 20d | 2019-01-09 | 2019-02-05 | A114170 FS-10d |  |  |  | -92d | 35d | MH-Wtg [142.85 h] | 64,283 |  | 003 |
| A114190 |  | Painting work | 20d | 2019-01-23 | 2019-02-19 | A114170 |  |  |  | -87d | 40d | MH-Wtg [71.43 h] | 32,144 |  | 003 |

| ID | WBS | Activity | Duration | Start | Finish | Predecessors | Remaining | Planned start | Planned finish | Total float | Free float | Resources | Cost | Actual cost | UNIT DESCRIPTION | user_end_date1 |
| --- | --- | --- | --- | --- | --- | --- | --- | --- | --- | --- | --- | --- | --- | --- | --- | --- |
|  | 3 | **Electrical Installation** |  | 2018-04-13 | 2018-11-06 |  |  |  |  |  |  |  |  |  |  |  |
| A114250 |  | Earthing work | 15d | 2018-04-13 A | 2018-08-21 | A114150 | 15d | 2018-09-11 | 2018-10-01 | 28d | 155d | MH-Wtg [92.66 h] | 41,697 | 35,442 | 003 |  |
| A114200 |  | Cable tray installation | 25d | 2018-08-22 | 2018-09-25 | A114120 |  |  |  | -27d | 0d | MH-Wtg [123.55 h] | 55,598 |  | 003 |  |
| A114210 |  | Cable laying | 20d | 2018-09-12 | 2018-10-09 | A114200 FS-10d |  |  |  | -27d | 0d | MH-Wtg [154.44 h] | 69,498 |  | 003 |  |
| A114220 |  | Installation of electrical items | 15d | 2018-09-26 | 2018-10-16 | A114210 FS-10d |  |  |  | -27d | 0d | MH-Wtg [92.66 h] | 41,697 |  | 003 |  |
| A114230 |  | Glanding and termination | 20d | 2018-10-03 | 2018-10-30 | A114220 FS-10d |  |  |  | -22d | 105d | MH-Wtg [92.66 h] | 41,697 |  | 003 |  |
| A114240 |  | Installation of light fittings | 15d | 2018-10-17 | 2018-11-06 | A114220 |  |  |  | -27d | 100d | MH-Wtg [61.77 h] | 27,797 |  | 003 |  |
|  | 4 | **Instrument Installation** |  | 2018-08-22 | 2019-03-12 |  |  |  |  |  |  |  |  |  |  |  |
| A114260 |  | Cable tray installation | 25d | 2018-08-22 | 2018-09-25 | A114200 SS |  |  |  | -27d | 0d | MH-Wtg [84.94 h] | 38,223 |  | 003 |  |
| A114270 |  | Cable laying | 20d | 2018-09-12 | 2018-10-09 | A114260 FS-10d |  |  |  | -27d | 90d | MH-Wtg [106.17 h] | 47,777 |  | 003 |  |
| A114280 |  | Installation of JBs and Air headers | 10d | 2018-09-26 | 2018-10-09 | A114260 |  |  |  | -27d | 90d | MH-Wtg [42.47 h] | 19,112 |  | 003 |  |
| A114290 |  | Installation of instruments | 20d | 2018-12-26 | 2019-01-22 | A114170 FF |  |  |  | -117d | 0d | MH-Wtg [63.7 h] | 28,665 |  | 003 |  |
| A114300 |  | Glanding and termination | 25d | 2019-01-09 | 2019-02-12 | A114270 FF, A114280 FF, A114290 FS-10d |  |  |  | -117d | 0d | MH-Wtg [63.7 h] | 28,665 |  | 003 |  |
| A114310 |  | Hookup of instruments | 20d | 2019-01-09 | 2019-02-05 | A114290 FF, A114170 FS-10d |  |  |  | -92d | 25d | MH-Wtg [42.47 h] | 19,112 |  | 003 |  |
| A114320 |  | Testing & calibration | 20d | 2019-02-13 | 2019-03-12 | A114310 FF, A114300 |  |  |  | -117d | 10d | MH-Wtg [21.23 h] | 9,554 |  | 003 |  |
|  | 49 | **B103C- WWS Storage Tanks/Pumps** |  | 2017-11-14 | 2018-12-26 |  |  |  |  |  |  |  |  |  |  |  |
|  | 1 | **Civil & Structural Work** |  | 2017-11-14 | 2018-09-27 |  |  |  |  |  |  |  |  |  |  |  |
| A114330 |  | Equipment foundations | 30d | 2017-11-14 A | 2018-09-27 | A113870, 101850 | 42d | 2017-12-18 | 2018-01-29 | 52141.9d |  | MH-Wtg [336 h] | 151,200 | 136,080 | 003 | 2018-02-28 |
| A114340 |  | RCC/Civil construction work | 19d | 2017-12-25 A | 2018-08-27 | A114330 FS-5d | 19d | 2018-02-22 | 2018-03-20 | 24d | 151d | MH-Wtg [142.85 h] | 64,283 | 62,997 | 003 | 2018-03-20 |
|  | 2 | **Mechanical Erection & Piping** |  | 2018-01-29 | 2018-12-21 |  |  |  |  |  |  |  |  |  |  |  |
| A114380 |  | Equipment installation | 60d | 2018-01-29 A | 2018-10-23 | A114330 FS-20d, 115750 SS+30d | 60d | 2018-04-02 | 2018-06-22 | -62d | 0d | MH-Wtg [190.47 h] | 85,712 | 47,141 | 003 |  |
| A114390 |  | Piping erection | 25d | 2018-07-06 A | 2018-09-04 | A114380, 110520 SS+10d, 114510 FF+15d | 25d | 2018-09-24 | 2018-10-26 | -5d | 58d | MH-Wtg [142.85 h] | 64,283 | 35,658 | 003 |  |
| A114420 |  | Painting work | 15d | 2018-07-10 A | 2018-08-21 | A114400 | 15d | 2018-11-12 | 2018-11-30 | 43d | 170d | MH-Wtg [23.81 h] | 10,715 | 7,286 | 003 |  |
| A114400 |  | Testing and boxup | 20d | 2018-11-12 | 2018-12-07 | A114390 FS-10d, 116180 FF+5d |  |  |  | -63d | 0d | MH-Wtg [71.43 h] | 32,144 |  | 003 |  |
| A114410 |  | Insulation of equipments and piping (Deleted) | 10d | 2018-12-10 | 2018-12-21 | A114400 |  |  |  | 52080.9d |  | MH-Wtg |  |  | 003 |  |

Notes:
- A114380: Explanation: 90% for site fab tanks

| ID | WBS | Activity | Duration | Start | Finish | Predecessors | Complete | Remaining | Planned start | Planned finish | Total float | Free float | Resources | Cost | Actual cost | UNIT DESCRIPTION | user_start_date1 | user_end_date1 |
| --- | --- | --- | --- | --- | --- | --- | --- | --- | --- | --- | --- | --- | --- | --- | --- | --- | --- | --- |
|  | 3 | **Electrical Installation** |  | 2018-10-24 | 2018-12-25 |  |  |  |  |  |  |  |  |  |  |  |  |  |
| A114430 |  | Cable tray installation | 15d | 2018-10-24 | 2018-11-13 | A114380 |  |  |  |  | -62d | 0d | MH-Wtg [41.18 h] | 18,531 |  | 003 |  |  |
| A114480 |  | Earthing work | 10d | 2018-10-24 | 2018-11-06 | A114380 |  |  |  |  | -27d | 100d | MH-Wtg [30.89 h] | 13,901 |  | 003 |  |  |
| A114440 |  | Cable laying | 10d | 2018-11-14 | 2018-11-27 | A114430 |  |  |  |  | -62d | 0d | MH-Wtg [51.48 h] | 23,166 |  | 003 |  |  |
| A114450 |  | Installation of electrical items | 10d | 2018-11-28 | 2018-12-11 | A114440 |  |  |  |  | -62d | 0d | MH-Wtg [30.89 h] | 13,901 |  | 003 |  |  |
| A114460 |  | Glanding and termination | 10d | 2018-12-12 | 2018-12-25 | A114450 |  |  |  |  | -62d | 65d | MH-Wtg [30.89 h] | 13,901 |  | 003 |  |  |
| A114470 |  | Installation of light fittings | 10d | 2018-12-12 | 2018-12-25 | A114450 |  |  |  |  | -62d | 65d | MH-Wtg [20.59 h] | 9,266 |  | 003 |  |  |
|  | 4 | **Instrument Installation** |  | 2018-10-24 | 2018-12-26 |  |  |  |  |  |  |  |  |  |  |  |  |  |
| A114490 |  | Cable tray installation | 10d | 2018-10-24 | 2018-11-06 | A114430 SS |  |  |  |  | -42d | 0d | MH-Wtg [25 h] | 11,250 |  | 003 |  |  |
| A114500 |  | Cable laying | 10d | 2018-11-07 | 2018-11-20 | A114490 |  |  |  |  | -42d | 21d | MH-Wtg [35.39 h] | 15,926 |  | 003 |  |  |
| A114510 |  | Installation of JBs and Air headers | 5d | 2018-11-07 | 2018-11-13 | A114490 |  |  |  |  | -37d | 26d | MH-Wtg [14.16 h] | 6,372 |  | 003 |  |  |
| A114520 |  | Installation of instruments | 10d | 2018-11-26 | 2018-12-07 | A114400 FF |  |  |  |  | -63d | 0d | MH-Wtg [21.23 h] | 9,554 |  | 003 |  |  |
| A114530 |  | Glanding and termination | 8d | 2018-12-10 | 2018-12-19 | A114500 FF, A114510 FF, A114520 |  |  |  |  | -63d | 0d | MH-Wtg [21.23 h] | 9,554 |  | 003 |  |  |
| A114540 |  | Hookup of instruments | 10d | 2018-12-10 | 2018-12-21 | A114520 FF, A114400 |  |  |  |  | -60d | 3d | MH-Wtg [14.16 h] | 6,372 |  | 003 |  |  |
| A114550 |  | Testing & calibration | 5d | 2018-12-20 | 2018-12-26 | A114540 FF, A114530 |  |  |  |  | -63d | 64d | MH-Wtg [7.08 h] | 3,186 |  | 003 |  |  |
|  | 5 | **B103D- WNA Tanker Loading Bays** |  | 2018-04-10 | 2019-01-30 |  |  |  |  |  |  |  |  |  |  |  |  |  |
|  | 1 | **Civil & Structural Work** |  | 2018-04-10 | 2019-01-18 |  |  |  |  |  |  |  |  |  |  |  |  |  |
| A114580 |  | Structural steel erection | 21d | 2018-04-10 A | 2018-07-03 A | A114570 FS-15d | 100% |  | 2018-07-30 | 2018-08-27 |  |  | MH-Wtg [47.62 h] | 21,429 | 21,429 | 003 | 2018-03-30 | 2018-04-30 |
| A114600 |  | Painting work | 10d | 2018-04-10 A | 2018-06-15 A | A114630 SS | 100% |  | 2018-12-06 | 2018-12-19 |  |  | MH-Wtg [4.76 h] | 2,142 | 2,142 | 003 |  |  |
| A114570 |  | RCC/Civil construction work | 37d | 2018-04-12 A | 2018-09-20 | A113870 |  | 37d | 2018-06-28 | 2018-08-17 | 52146.9d |  | MH-Wtg [38.09 h] | 17,141 | 15,426 | 003 | 2018-02-28 | 2018-04-20 |
| A114590 |  | Anti-corrosive lining work | 10d | 2019-01-07 | 2019-01-18 | A114620 |  |  |  |  | -80d | 47d | MH-Wtg [4.76 h] | 2,142 |  | 003 |  |  |
|  | 2 | **Mechanical Erection & Piping** |  | 2018-12-03 | 2019-01-30 |  |  |  |  |  |  |  |  |  |  |  |  |  |
| A114610 |  | Equipment installation | 10d | 2018-12-03 | 2018-12-14 | A114580, 115280 |  |  |  |  | -87d | 0d | MH-Wtg [28.57 h] | 12,857 |  | 003 |  |  |
| A114620 |  | Piping erection | 15d | 2018-12-17 | 2019-01-04 | A114610, 106100 |  |  |  |  | -87d | 0d | MH-Wtg [38.09 h] | 17,141 |  | 003 |  |  |
| A114630 |  | Testing and boxup | 10d | 2019-01-07 | 2019-01-18 | A114620 |  |  |  |  | -87d | 0d | MH-Wtg [14.29 h] | 6,431 |  | 003 |  |  |
| A114640 |  | Insulation of equipments and piping (Deleted) | 8d | 2019-01-21 | 2019-01-30 | A114630 |  |  |  |  | 52052.9d |  | MH-Wtg |  |  | 003 |  |  |
| A114650 |  | Painting work | 5d | 2019-01-21 | 2019-01-25 | A114630 |  |  |  |  | -70d | 57d | MH-Wtg [4.76 h] | 2,142 |  | 003 |  |  |

| ID | WBS | Activity | Duration | Start | Finish | Predecessors | Complete | Remaining | Planned start | Planned finish | Total float | Free float | Resources | Cost | Actual cost | UNIT DESCRIPTION | user_start_date1 | user_end_date1 |
| --- | --- | --- | --- | --- | --- | --- | --- | --- | --- | --- | --- | --- | --- | --- | --- | --- | --- | --- |
|  | 3 | **Electrical Installation** |  | 2018-08-01 | 2018-12-19 |  |  |  |  |  |  |  |  |  |  |  |  |  |
| A114660 |  | Cable tray installation | 5d | 2018-08-01 | 2018-08-07 | A114580 |  |  |  |  | 30d | 0d | MH-Wtg [8.24 h] | 3,708 |  | 003 |  |  |
| A114670 |  | Cable laying | 3d | 2018-08-08 | 2018-08-10 | A114660 |  |  |  |  | 30d | 0d | MH-Wtg [10.3 h] | 4,635 |  | 003 |  |  |
| A114700 |  | Installation of light fittings | 3d | 2018-08-13 | 2018-08-15 | A114670 |  |  |  |  | 30d | 0d | MH-Wtg [8.24 h] | 3,708 |  | 003 |  |  |
| A114690 |  | Glanding and termination | 2d | 2018-08-16 | 2018-08-17 | A114700 |  |  |  |  | 30d | 157d | MH-Wtg [8.24 h] | 3,708 |  | 003 |  |  |
| A114710 |  | Earthing work | 3d | 2018-12-17 | 2018-12-19 | A114610 |  |  |  |  | -58d | 69d | MH-Wtg [6.18 h] | 2,781 |  | 003 |  |  |
|  | 4 | **Instrument Installation** |  | 2018-08-01 | 2019-01-29 |  |  |  |  |  |  |  |  |  |  |  |  |  |
| A114720 |  | Cable tray installation | 5d | 2018-08-01 | 2018-08-07 | A114660 SS |  |  |  |  | 33d | 0d | MH-Wtg [5.66 h] | 2,547 |  | 003 |  |  |
| A114730 |  | Cable laying | 3d | 2018-08-08 | 2018-08-10 | A114720 |  |  |  |  | 33d | 120d | MH-Wtg [7.08 h] | 3,186 |  | 003 |  |  |
| A114740 |  | Installation of JBs and Air headers | 2d | 2018-08-08 | 2018-08-09 | A114720 |  |  |  |  | 34d | 121d | MH-Wtg [2.83 h] | 1,274 |  | 003 |  |  |
| A114750 |  | Installation of instruments | 2d | 2019-01-21 | 2019-01-22 | A114630 |  |  |  |  | -87d | 0d | MH-Wtg [4.25 h] | 1,913 |  | 003 |  |  |
| A114770 |  | Hookup of instruments | 3d | 2019-01-21 | 2019-01-23 | A114750 FF, A114630 |  |  |  |  | -83d | 4d | MH-Wtg [2.83 h] | 1,274 |  | 003 |  |  |
| A114760 |  | Glanding and termination | 3d | 2019-01-23 | 2019-01-25 | A114730 FF, A114740 FF, A114750 |  |  |  |  | -87d | 0d | MH-Wtg [4.25 h] | 1,913 |  | 003 |  |  |
| A114780 |  | Testing & calibration | 2d | 2019-01-28 | 2019-01-29 | A114770 FF, A114760 |  |  |  |  | -87d | 40d | MH-Wtg [1.42 h] | 639 |  | 003 |  |  |
|  | 50 | **B103E- CNA Tanker Lading Bays** |  | 2018-04-10 | 2019-01-30 |  |  |  |  |  |  |  |  |  |  |  |  |  |
|  | 1 | **Civil & Structural Work** |  | 2018-04-10 | 2019-01-18 |  |  |  |  |  |  |  |  |  |  |  |  |  |
| A114810 |  | Structural steel erection | 21d | 2018-04-10 A | 2018-07-03 A | A114800 FS-15d | 100% |  | 2018-07-30 | 2018-08-27 |  |  | MH-Wtg [47.62 h] | 21,429 | 21,429 | 003 |  |  |
| A114830 |  | Painting work | 10d | 2018-04-10 A | 2018-06-15 A | A114860 SS | 100% |  | 2018-12-06 | 2018-12-19 |  |  | MH-Wtg [4.76 h] | 2,142 | 2,142 | 003 | 2018-04-30 | 2018-05-20 |
| A114800 |  | RCC/Civil construction work | 37d | 2018-04-12 A | 2018-09-20 | A114570 SS |  | 37d | 2018-06-28 | 2018-08-17 | 52146.9d | 0d | MH-Wtg [38.09 h] | 17,141 | 15,426 | 003 |  | 2018-04-30 |
| A114820 |  | Anti-corrosive lining work | 10d | 2019-01-07 | 2019-01-18 | A114850 |  |  |  |  | -80d | 47d | MH-Wtg [4.76 h] | 2,142 |  | 003 | 2018-04-30 | 2018-05-25 |
|  | 2 | **Mechanical Erection & Piping** |  | 2018-12-03 | 2019-01-30 |  |  |  |  |  |  |  |  |  |  |  |  |  |
| A114840 |  | Equipment installation | 10d | 2018-12-03 | 2018-12-14 | A114810, 115280 |  |  |  |  | -85d | 0d | MH-Wtg [28.57 h] | 12,857 |  | 003 |  |  |
| A114850 |  | Piping erection | 15d | 2018-12-17 | 2019-01-04 | A114840, 110560 |  |  |  |  | -85d | 0d | MH-Wtg [38.09 h] | 17,141 |  | 003 |  |  |
| A114860 |  | Testing and boxup | 10d | 2019-01-07 | 2019-01-18 | A114850 |  |  |  |  | -85d | 0d | MH-Wtg [14.29 h] | 6,431 |  | 003 |  |  |
| A114870 |  | Insulation of equipments and piping (Deleted) | 8d | 2019-01-21 | 2019-01-30 | A114860 |  |  |  |  | 52052.9d |  | MH-Wtg |  |  | 003 |  |  |
| A114880 |  | Painting work | 7d | 2019-01-21 | 2019-01-29 | A114860 |  |  |  |  | -72d | 55d | MH-Wtg [4.76 h] | 2,142 |  | 003 |  |  |

| ID | WBS | Activity | Duration | Start | Finish | Predecessors | Complete | Remaining | Planned start | Planned finish | Total float | Free float | Resources | Cost | Actual cost | UNIT DESCRIPTION | user_start_date1 | user_end_date1 |
| --- | --- | --- | --- | --- | --- | --- | --- | --- | --- | --- | --- | --- | --- | --- | --- | --- | --- | --- |
|  | 3 | **Electrical Installation** |  | 2018-08-01 | 2018-12-19 |  |  |  |  |  |  |  |  |  |  |  |  |  |
| A114890 |  | Cable tray installation | 5d | 2018-08-01 | 2018-08-07 | A114810 |  |  |  |  | 30d | 0d | MH-Wtg [8.24 h] | 3,708 |  | 003 |  |  |
| A114900 |  | Cable laying | 3d | 2018-08-08 | 2018-08-10 | A114890 |  |  |  |  | 30d | 0d | MH-Wtg [10.3 h] | 4,635 |  | 003 |  |  |
| A114930 |  | Installation of light fittings | 3d | 2018-08-13 | 2018-08-15 | A114900 |  |  |  |  | 30d | 0d | MH-Wtg [8.24 h] | 3,708 |  | 003 |  |  |
| A114920 |  | Glanding and termination | 2d | 2018-08-16 | 2018-08-17 | A114930 |  |  |  |  | 30d | 157d | MH-Wtg [8.24 h] | 3,708 |  | 003 |  |  |
| A114940 |  | Earthing work | 3d | 2018-12-17 | 2018-12-19 | A114840 |  |  |  |  | -58d | 69d | MH-Wtg [6.18 h] | 2,781 |  | 003 |  |  |
|  | 4 | **Instrument Installation** |  | 2018-08-01 | 2019-01-25 |  |  |  |  |  |  |  |  |  |  |  |  |  |
| A114950 |  | Cable tray installation | 5d | 2018-08-01 | 2018-08-07 | A114890 SS |  |  |  |  | 33d | 0d | MH-Wtg [5.66 h] | 2,547 |  | 003 |  |  |
| A114960 |  | Cable laying | 3d | 2018-08-08 | 2018-08-10 | A114950 |  |  |  |  | 33d | 118d | MH-Wtg [7.08 h] | 3,186 |  | 003 |  |  |
| A114970 |  | Installation of JBs and Air headers | 2d | 2018-08-08 | 2018-08-09 | A114950 |  |  |  |  | 34d | 119d | MH-Wtg [2.83 h] | 1,274 |  | 003 |  |  |
| A114980 |  | Installation of instruments | 2d | 2019-01-17 | 2019-01-18 | A114860 FF |  |  |  |  | -85d | 0d | MH-Wtg [4.25 h] | 1,913 |  | 003 |  |  |
| A114990 |  | Glanding and termination | 3d | 2019-01-21 | 2019-01-23 | A114960 FF, A114970 FF, A114980 |  |  |  |  | -85d | 0d | MH-Wtg [4.25 h] | 1,913 |  | 003 |  |  |
| A115000 |  | Hookup of instruments | 3d | 2019-01-21 | 2019-01-23 | A114980 FF, A114860 |  |  |  |  | -83d | 2d | MH-Wtg [2.83 h] | 1,274 |  | 003 |  |  |
| A115010 |  | Testing & calibration | 2d | 2019-01-24 | 2019-01-25 | A115000 FF, A114990 |  |  |  |  | -85d | 42d | MH-Wtg [1.42 h] | 639 |  | 003 |  |  |
|  | 6 | **B104A- Caustic, Sulphuric Storage** |  | 2018-02-12 | 2018-11-13 |  |  |  |  |  |  |  |  |  |  |  |  |  |
|  | 1 | **Civil & Structural Work** |  | 2018-02-12 | 2018-09-04 |  |  |  |  |  |  |  |  |  |  |  |  |  |
| A115020 |  | Equipment foundations | 42d | 2018-02-12 A | 2018-08-27 | 100850 | 56% | 18.67d | 2018-02-01 | 2018-03-30 | -32.67d | 6.33d | MH-Wtg [428.56 h] | 192,852 | 173,745 | 003 | 2018-01-01 | 2018-02-28 |
| A115030 |  | RCC/Civil construction work | 20d | 2018-02-14 A | 2018-08-28 | A115020 FS-10d |  | 20d | 2018-03-19 | 2018-04-13 | 52163.9d |  | MH-Wtg [285.71 h] | 128,570 | 126,126 | 003 | 2018-01-01 | 2018-02-28 |
| A115040 |  | Structural steel erection | 25d | 2018-04-10 A | 2018-09-04 | A115030 FS-13d |  | 25d | 2018-05-10 | 2018-06-13 | -27d | 5d | MH-Wtg [142.85 h] | 64,283 | 61,068 | 003 | 2018-02-28 | 2018-03-30 |
| A115060 |  | Painting work | 10d | 2018-04-14 A | 2018-07-12 A | A115090 SS | 100% |  | 2018-08-20 | 2018-08-31 |  |  | MH-Wtg [47.62 h] | 21,429 | 21,429 | 003 |  |  |
| A115050 |  | Anti-corrosive lining work | 15d | 2018-06-06 A | 2018-08-21 | A115080 |  | 15d | 2018-09-27 | 2018-10-17 | 28d | 155d | MH-Wtg [47.62 h] | 21,429 | 20,358 | 003 |  |  |
|  | 2 | **Mechanical Erection & Piping** |  | 2018-05-06 | 2018-10-23 |  |  |  |  |  |  |  |  |  |  |  |  |  |
| A115070 |  | Equipment installation | 20d | 2018-05-06 A | 2018-08-28 | A115020, 115750 |  | 20d | 2018-08-02 | 2018-08-29 | -32d | 0d | MH-Wtg [380.94 h] | 171,423 | 137,138 | 003 |  |  |
| A115080 |  | Piping erection | 30d | 2018-06-08 A | 2018-09-11 | A115040 FF, A115070 FS-10d, 106140 SS+10d, 114510 FF+10d |  | 30d | 2018-07-16 | 2018-08-24 | -32d | 0d | MH-Wtg [285.71 h] | 128,570 | 51,428 | 003 |  |  |
| A115110 |  | Painting work | 10d | 2018-06-08 A | 2018-08-14 | A115090 FS-10d |  | 10d | 2018-09-03 | 2018-09-14 | 48d | 175d | MH-Wtg [47.62 h] | 21,429 | 7,500 | 003 |  |  |
| A115090 |  | Testing and boxup | 20d | 2018-09-05 | 2018-10-02 | A115080 FS-5d, 114650 FF+10d |  |  |  |  | -32d | 0d | MH-Wtg [142.85 h] | 64,283 |  | 003 |  |  |
| A115100 |  | Insulation of equipments and piping (Deleted) | 30d | 2018-09-12 | 2018-10-23 | A115090 FS-15d |  |  |  |  | 52123.9d |  | MH-Wtg |  |  | 003 |  |  |

| ID | WBS | Activity | Duration | Start | Finish | Predecessors | Total float | Free float | Resources | Cost | UNIT DESCRIPTION |
| --- | --- | --- | --- | --- | --- | --- | --- | --- | --- | --- | --- |
|  | 3 | **Electrical Installation** |  | 2018-08-29 | 2018-11-13 |  |  |  |  |  |  |
| A115120 |  | Cable tray installation | 20d | 2018-08-29 | 2018-09-25 | A115070 | -32d | 0d | MH-Wtg [86.7 h] | 39,015 | 003 |
| A115170 |  | Earthing work | 10d | 2018-08-29 | 2018-09-11 | A115070 | 13d | 140d | MH-Wtg [65.03 h] | 29,264 | 003 |
| A115130 |  | Cable laying | 15d | 2018-09-19 | 2018-10-09 | A115120 FS-5d | -32d | 0d | MH-Wtg [108.38 h] | 48,771 | 003 |
| A115140 |  | Installation of electrical items | 15d | 2018-10-03 | 2018-10-23 | A115130 FS-5d | -32d | 0d | MH-Wtg [65.03 h] | 29,264 | 003 |
| A115150 |  | Glanding and termination | 20d | 2018-10-10 | 2018-11-06 | A115140 FS-10d | -27d | 100d | MH-Wtg [43.35 h] | 19,508 | 003 |
| A115160 |  | Installation of light fittings | 15d | 2018-10-24 | 2018-11-13 | A115140 | -32d | 95d | MH-Wtg [43.35 h] | 19,508 | 003 |
|  | 4 | **Instrument Installation** |  | 2018-08-29 | 2018-11-13 |  |  |  |  |  |  |
| A115180 |  | Cable tray installation | 20d | 2018-08-29 | 2018-09-25 | A115120 SS | -22d | 0d | MH-Wtg [56.63 h] | 25,484 | 003 |
| A115210 |  | Installation of instruments | 15d | 2018-09-12 | 2018-10-02 | A115090 FF | -32d | 0d | MH-Wtg [42.47 h] | 19,112 | 003 |
| A115190 |  | Cable laying | 15d | 2018-09-19 | 2018-10-09 | A115180 FS-5d | -22d | 10d | MH-Wtg [70.78 h] | 31,851 | 003 |
| A115200 |  | Installation of JBs and Air headers | 10d | 2018-09-19 | 2018-10-02 | A115180 FS-5d | -17d | 15d | MH-Wtg [28.31 h] | 12,740 | 003 |
| A115230 |  | Hookup of instruments | 20d | 2018-09-19 | 2018-10-16 | A115210 FF, A115090 FS-10d | -12d | 20d | MH-Wtg [28.31 h] | 12,740 | 003 |
| A115220 |  | Glanding and termination | 20d | 2018-09-26 | 2018-10-23 | A115190 FF, A115200 FF, A115210 FS-5d | -32d | 0d | MH-Wtg [42.47 h] | 19,112 | 003 |
| A115240 |  | Testing & calibration | 15d | 2018-10-24 | 2018-11-13 | A115230 FF, A115220 | -32d | 95d | MH-Wtg [14.16 h] | 6,372 | 003 |
|  | 7 | **B104B- HSD Storage (Deleted)** |  | 2018-08-01 | 2018-11-14 |  |  |  |  |  |  |
|  | 1 | **Civil & Structural Work** |  | 2018-08-01 | 2018-11-14 |  |  |  |  |  |  |
| A124250 |  | RCC/Civil construction work (Deleted) | 25d | 2018-08-01 | 2018-09-04 |  | 52158.9d |  | MH-Wtg |  | 003 |
| A124240 |  | Equipment foundations (Deleted) | 20d | 2018-10-18 | 2018-11-14 | A115710 | 52107.9d |  | MH-Wtg |  | 003 |
|  | 2 | **Mechanical Erection & Piping** |  | 2018-08-01 | 2018-08-28 |  |  |  |  |  |  |
| A124290 |  | Equipment installation (Deleted) | 20d | 2018-08-01 | 2018-08-28 |  | 52163.9d |  | MH-Wtg |  | 003 |
| A124300 |  | Piping erection (Deleted) | 20d | 2018-08-01 | 2018-08-28 |  | 52163.9d |  | MH-Wtg |  | 003 |
| A124310 |  | Testing and boxup (Deleted) | 10d | 2018-08-01 | 2018-08-14 |  | 52173.9d |  | MH-Wtg |  | 003 |
| A124330 |  | Painting work (Deleted) | 8d | 2018-08-01 | 2018-08-10 |  | 52175.9d |  | MH-Wtg |  | 003 |

| ID | WBS | Activity | Duration | Start | Finish | Predecessors | Complete | Remaining | Planned start | Planned finish | Total float | Free float | Resources | Cost | Actual cost | UNIT DESCRIPTION |
| --- | --- | --- | --- | --- | --- | --- | --- | --- | --- | --- | --- | --- | --- | --- | --- | --- |
|  | 3 | **Electrical Installation** |  | 2018-08-01 | 2018-08-10 |  |  |  |  |  |  |  |  |  |  |  |
| A124340 |  | Cable tray installation (Deleted) | 8d | 2018-08-01 | 2018-08-10 |  |  |  |  |  | 52175.9d |  | MH-Wtg |  |  | 003 |
| A124350 |  | Cable laying (Deleted) | 5d | 2018-08-01 | 2018-08-07 |  |  |  |  |  | 52178.9d |  | MH-Wtg |  |  | 003 |
| A124360 |  | Installation of electrical items (Deleted) | 3d | 2018-08-01 | 2018-08-03 |  |  |  |  |  | 52180.9d |  | MH-Wtg |  |  | 003 |
| A124370 |  | Glanding and termination (Deleted) | 3d | 2018-08-01 | 2018-08-03 |  |  |  |  |  | 52180.9d |  | MH-Wtg |  |  | 003 |
| A124380 |  | Installation of light fittings (Deleted) | 2d | 2018-08-01 | 2018-08-02 |  |  |  |  |  | 52181.9d |  | MH-Wtg |  |  | 003 |
| A124390 |  | Earthing work (Deleted) | 5d | 2018-08-01 | 2018-08-07 |  |  |  |  |  | 52178.9d |  | MH-Wtg |  |  | 003 |
|  | 4 | **Instrument Installation** |  | 2018-08-01 | 2018-08-10 |  |  |  |  |  |  |  |  |  |  |  |
| A124400 |  | Cable tray installation (Deleted) | 8d | 2018-08-01 | 2018-08-10 |  |  |  |  |  | 52175.9d |  | MH-Wtg |  |  | 003 |
| A124410 |  | Cable laying (Deleted) | 5d | 2018-08-01 | 2018-08-07 |  |  |  |  |  | 52178.9d |  | MH-Wtg |  |  | 003 |
| A124420 |  | Installation of JBs and Air headers (Deleted) | 2d | 2018-08-01 | 2018-08-02 |  |  |  |  |  | 52181.9d |  | MH-Wtg |  |  | 003 |
| A124430 |  | Installation of instruments (Deleted) | 3d | 2018-08-01 | 2018-08-03 |  |  |  |  |  | 52180.9d |  | MH-Wtg |  |  | 003 |
| A124440 |  | Glanding and termination (Deleted) | 3d | 2018-08-01 | 2018-08-03 |  |  |  |  |  | 52180.9d |  | MH-Wtg |  |  | 003 |
| A124450 |  | Hookup of instruments (Deleted) | 5d | 2018-08-01 | 2018-08-07 |  |  |  |  |  | 52178.9d |  | MH-Wtg |  |  | 003 |
| A124460 |  | Testing & calibration (Deleted) | 3d | 2018-08-01 | 2018-08-03 |  |  |  |  |  | 52180.9d |  | MH-Wtg |  |  | 003 |
|  | 8 | **B404C- Ammonia Storage** |  | 2017-11-14 | 2018-11-06 |  |  |  |  |  |  |  |  |  |  |  |
|  | 1 | **Civil & Structural Work** |  | 2017-11-14 | 2018-09-25 |  |  |  |  |  |  |  |  |  |  |  |
| A115250 |  | Equipment foundations | 65d | 2017-11-14 A | 2018-02-05 A | 115740 FF-10d | 100% |  | 2018-01-29 | 2018-04-30 |  |  | MH-Wtg [633 h] | 284,850 | 284,850 | 003 |
| A115260 |  | RCC/Civil construction work | 40d | 2018-04-25 A | 2018-09-25 | A115250 FS-30d |  | 40d | 2018-04-02 | 2018-05-25 | 52143.9d |  | MH-Wtg [257 h] | 115,650 | 98,303 | 003 |
| A115270 |  | Structural steel erection | 15d | 2018-05-03 A | 2018-08-21 | A115260 |  | 15d | 2018-07-27 | 2018-08-16 | -22d | 0d |  |  |  | 003 |
| A115280 |  | Painting work | 25d | 2018-05-10 A | 2018-09-04 | A115320 SS |  | 25d | 2018-08-20 | 2018-09-21 | 33d | 160d |  |  |  | 003 |
|  | 2 | **Mechanical Erection & Piping** |  | 2018-03-28 | 2018-10-30 |  |  |  |  |  |  |  |  |  |  |  |
| A115300 |  | Equipment installation | 15d | 2018-03-28 A | 2018-04-24 A | 115740, A115250 | 100% |  | 2018-06-25 | 2018-07-13 |  |  | MH-Wtg [476.18 h] | 214,281 | 214,281 | 003 |
| A115310 |  | Piping erection | 30d | 2018-07-20 A | 2018-09-11 | A115300, 106220 SS+10d |  | 30d | 2018-07-23 | 2018-08-31 | -27d | 0d | MH-Wtg [357.13 h] | 160,709 | 8,035 | 003 |
| A115320 |  | Testing and boxup | 25d | 2018-08-29 | 2018-10-02 | A115310 FS-10d |  |  |  |  | -27d | 0d | MH-Wtg [178.57 h] | 80,357 |  | 003 |
| A115330 |  | Insulation of equipments and piping | 30d | 2018-09-19 | 2018-10-30 | A115320 FS-10d |  |  |  |  | -22d | 105d | MH-Wtg [119.04 h] | 53,568 |  | 003 |
| A115340 |  | Painting work | 20d | 2018-09-19 | 2018-10-16 | A115320 FS-10d |  |  |  |  | 3d | 130d | MH-Wtg [59.52 h] | 26,784 |  | 003 |

| ID | WBS | Activity | Duration | Start | Finish | Predecessors | Complete | Remaining | Planned start | Planned finish | Total float | Free float | Resources | Cost | Actual cost | UNIT DESCRIPTION | user_start_date1 | user_end_date1 |
| --- | --- | --- | --- | --- | --- | --- | --- | --- | --- | --- | --- | --- | --- | --- | --- | --- | --- | --- |
|  | 3 | **Electrical Installation** |  | 2018-04-13 | 2018-10-30 |  |  |  |  |  |  |  |  |  |  |  |  |  |
| A115400 |  | Earthing work | 15d | 2018-04-13 A | 2018-04-20 A | A115300 | 100% |  | 2018-05-22 | 2018-06-11 |  |  | MH-Wtg [77.22 h] | 34,749 | 34,749 | 003 |  |  |
| A115350 |  | Cable tray installation | 20d | 2018-08-22 | 2018-09-18 | A115270 |  |  |  |  | -22d | 0d | MH-Wtg [102.96 h] | 46,332 |  | 003 |  |  |
| A115360 |  | Cable laying | 15d | 2018-09-12 | 2018-10-02 | A115350 FS-5d |  |  |  |  | -22d | 0d | MH-Wtg [128.7 h] | 57,915 |  | 003 |  |  |
| A115370 |  | Installation of electrical items | 15d | 2018-09-19 | 2018-10-09 | A115360 FS-10d |  |  |  |  | -22d | 0d | MH-Wtg [77.22 h] | 34,749 |  | 003 |  |  |
| A115380 |  | Glanding and termination | 20d | 2018-10-03 | 2018-10-30 | A115370 FS-5d |  |  |  |  | -22d | 105d | MH-Wtg [77.22 h] | 34,749 |  | 003 |  |  |
| A115390 |  | Installation of light fittings | 15d | 2018-10-10 | 2018-10-30 | A115370 |  |  |  |  | -22d | 105d | MH-Wtg [51.48 h] | 23,166 |  | 003 |  |  |
|  | 4 | **Instrument Installation** |  | 2018-08-22 | 2018-11-06 |  |  |  |  |  |  |  |  |  |  |  |  |  |
| A115410 |  | Cable tray installation | 20d | 2018-08-22 | 2018-09-18 | A115350 SS |  |  |  |  | -12d | 0d | MH-Wtg [70.78 h] | 31,851 |  | 003 |  |  |
| A115440 |  | Installation of instruments | 20d | 2018-09-05 | 2018-10-02 | A115320 FF |  |  |  |  | -27d | 0d | MH-Wtg [53.09 h] | 23,891 |  | 003 |  |  |
| A115420 |  | Cable laying | 15d | 2018-09-12 | 2018-10-02 | A115410 FS-5d |  |  |  |  | -12d | 15d | MH-Wtg [88.48 h] | 39,816 |  | 003 |  |  |
| A115430 |  | Installation of JBs and Air headers | 10d | 2018-09-12 | 2018-09-25 | A115410 FS-5d |  |  |  |  | -7d | 20d | MH-Wtg [35.39 h] | 15,926 |  | 003 |  |  |
| A115460 |  | Hookup of instruments | 20d | 2018-09-19 | 2018-10-16 | A115440 FF, A115320 FS-10d |  |  |  |  | -12d | 15d | MH-Wtg [35.39 h] | 15,926 |  | 003 |  |  |
| A115450 |  | Glanding and termination | 20d | 2018-09-26 | 2018-10-23 | A115420 FF, A115430 FF, A115440 FS-5d |  |  |  |  | -27d | 0d | MH-Wtg [53.09 h] | 23,891 |  | 003 |  |  |
| A115470 |  | Testing & calibration | 10d | 2018-10-24 | 2018-11-06 | A115460 FF, A115450 |  |  |  |  | -27d | 100d | MH-Wtg [17.7 h] | 7,965 |  | 003 |  |  |
|  | 51 | **B104D- Caustic, Sulphuric Tanker Unloading** |  | 2018-07-24 | 2019-01-30 |  |  |  |  |  |  |  |  |  |  |  |  |  |
|  | 1 | **Civil & Structural Work** |  | 2018-07-24 | 2019-01-18 |  |  |  |  |  |  |  |  |  |  |  |  |  |
| A115490 |  | RCC/Civil construction work | 25d | 2018-07-24 A | 2018-09-04 | A115020 FF |  | 25d | 2018-07-02 | 2018-08-03 | -39d | 0d | MH-Wtg [38.09 h] | 17,141 | 7,695 | 003 | 2018-02-01 | 2018-02-28 |
| A115500 |  | Structural steel erection | 20d | 2018-08-29 | 2018-09-25 | A115490 FS-5d |  |  |  |  | -39d | 0d | MH-Wtg [47.62 h] | 21,429 |  | 003 | 2018-02-20 | 2018-03-20 |
| A115510 |  | Anti-corrosive lining work | 10d | 2019-01-07 | 2019-01-18 | A115540 |  |  |  |  | -80d | 47d | MH-Wtg [4.76 h] | 2,142 |  | 003 | 2018-03-20 | 2018-04-10 |
| A115520 |  | Painting work | 10d | 2019-01-07 | 2019-01-18 | A115550 SS |  |  |  |  | -65d | 62d | MH-Wtg [4.76 h] | 2,142 |  | 003 | 2018-03-27 | 2018-04-10 |
|  | 2 | **Mechanical Erection & Piping** |  | 2018-12-03 | 2019-01-30 |  |  |  |  |  |  |  |  |  |  |  |  |  |
| A115530 |  | Equipment installation | 10d | 2018-12-03 | 2018-12-14 | A115500, 115280 |  |  |  |  | -87d | 0d | MH-Wtg [28.57 h] | 12,857 |  | 003 |  |  |
| A115540 |  | Piping erection | 15d | 2018-12-17 | 2019-01-04 | A115530, 106140 SS+10d |  |  |  |  | -87d | 0d | MH-Wtg [38.09 h] | 17,141 |  | 003 |  |  |
| A115550 |  | Testing and boxup | 10d | 2019-01-07 | 2019-01-18 | A115540, 119590.99.3 FF+5d |  |  |  |  | -87d | 0d | MH-Wtg [14.29 h] | 6,431 |  | 003 |  |  |
| A115560 |  | Insulation of equipments and piping (Deleted) | 8d | 2019-01-21 | 2019-01-30 | A115550 |  |  |  |  | 52052.9d |  | MH-Wtg |  |  | 003 |  |  |
| A115570 |  | Painting work | 5d | 2019-01-21 | 2019-01-25 | A115550 |  |  |  |  | -70d | 57d | MH-Wtg [4.76 h] | 2,142 |  | 003 |  |  |

| ID | WBS | Activity | Duration | Start | Finish | Predecessors | Complete | Remaining | Planned start | Planned finish | Total float | Free float | Resources | Cost | Actual cost | UNIT DESCRIPTION | user_start_date1 | user_end_date1 |
| --- | --- | --- | --- | --- | --- | --- | --- | --- | --- | --- | --- | --- | --- | --- | --- | --- | --- | --- |
|  | 3 | **Electrical Installation** |  | 2018-09-26 | 2018-12-19 |  |  |  |  |  |  |  |  |  |  |  |  |  |
| A115580 |  | Cable tray installation | 5d | 2018-09-26 | 2018-10-02 | A115500 |  |  |  |  | -10d | 0d | MH-Wtg [8.24 h] | 3,708 |  | 003 |  |  |
| A115590 |  | Cable laying | 3d | 2018-10-03 | 2018-10-05 | A115580 |  |  |  |  | -10d | 0d | MH-Wtg [10.3 h] | 4,635 |  | 003 |  |  |
| A115620 |  | Installation of light fittings | 3d | 2018-10-08 | 2018-10-10 | A115590, 118160 |  |  |  |  | -10d | 0d | MH-Wtg [8.24 h] | 3,708 |  | 003 |  |  |
| A115610 |  | Glanding and termination | 2d | 2018-10-11 | 2018-10-12 | A115620 |  |  |  |  | -10d | 117d | MH-Wtg [8.24 h] | 3,708 |  | 003 |  |  |
| A115630 |  | Earthing work | 3d | 2018-12-17 | 2018-12-19 | A115530 |  |  |  |  | -58d | 69d | MH-Wtg [6.18 h] | 2,781 |  | 003 |  |  |
|  | 4 | **Instrument Installation** |  | 2018-09-26 | 2019-01-29 |  |  |  |  |  |  |  |  |  |  |  |  |  |
| A115640 |  | Cable tray installation | 5d | 2018-09-26 | 2018-10-02 | A115580 SS |  |  |  |  | -7d | 0d | MH-Wtg [5.66 h] | 2,547 |  | 003 |  |  |
| A115650 |  | Cable laying | 3d | 2018-10-03 | 2018-10-05 | A115640 |  |  |  |  | -7d | 80d | MH-Wtg [7.08 h] | 3,186 |  | 003 |  |  |
| A115660 |  | Installation of JBs and Air headers | 2d | 2018-10-03 | 2018-10-04 | A115640 |  |  |  |  | -6d | 81d | MH-Wtg [2.83 h] | 1,274 |  | 003 |  |  |
| A115670 |  | Installation of instruments | 2d | 2019-01-21 | 2019-01-22 | A115550 |  |  |  |  | -87d | 0d | MH-Wtg [4.25 h] | 1,913 |  | 003 |  |  |
| A115690 |  | Hookup of instruments | 3d | 2019-01-21 | 2019-01-23 | A115670 FF, A115550 |  |  |  |  | -83d | 4d | MH-Wtg [2.83 h] | 1,274 |  | 003 |  |  |
| A115680 |  | Glanding and termination | 3d | 2019-01-23 | 2019-01-25 | A115650 FF, A115660 FF, A115670 |  |  |  |  | -87d | 0d | MH-Wtg [4.25 h] | 1,913 |  | 003 |  |  |
| A115700 |  | Testing & calibration | 2d | 2019-01-28 | 2019-01-29 | A115690 FF, A115680 |  |  |  |  | -87d | 40d | MH-Wtg [1.42 h] | 639 |  | 003 |  |  |
|  | 52 | **B104E- SNA** |  | 2017-11-24 | 2019-02-05 |  |  |  |  |  |  |  |  |  |  |  |  |  |
|  | 1 | **Civil & Structural Work** |  | 2017-11-24 | 2018-10-17 |  |  |  |  |  |  |  |  |  |  |  |  |  |
| A115710 |  | Equipment foundations | 30d | 2017-11-24 A | 2018-10-17 | A114330 SS, 101910 |  | 56d | 2017-12-18 | 2018-01-29 | 52107.9d | 0d | MH-Wtg [214.28 h] | 96,426 | 86,783 | 003 | 2017-11-30 | 2018-03-20 |
| A115730 |  | Structural steel erection | 20d | 2018-04-10 A | 2018-08-28 | A115720 FS-10d |  | 20d | 2018-07-25 | 2018-08-21 | -22d | 15d | MH-Wtg [71.43 h] | 32,144 | 31,501 | 003 | 2018-03-15 | 2018-04-20 |
| A115750 |  | Painting work | 10d | 2018-04-15 A | 2018-06-20 A | A115780 SS | 100% |  | 2018-09-27 | 2018-10-10 |  |  | MH-Wtg [23.81 h] | 10,715 | 10,715 | 003 | 2018-04-20 | 2018-05-20 |
| A115720 |  | RCC/Civil construction work | 25d | 2018-04-18 A | 2018-09-04 | A115710 FS-10d |  | 25d | 2018-08-06 | 2018-09-07 | 52158.9d |  | MH-Wtg [142.85 h] | 64,283 | 54,640 | 003 | 2018-03-01 | 2018-03-30 |
| A115740 |  | Anti-corrosive lining work | 15d | 2018-09-19 | 2018-10-09 | A115770 |  |  |  |  | -7d | 120d | MH-Wtg [23.81 h] | 10,715 |  | 003 | 2018-03-30 | 2018-04-30 |
|  | 2 | **Mechanical Erection & Piping** |  | 2018-01-29 | 2018-12-28 |  |  |  |  |  |  |  |  |  |  |  |  |  |
| A115760 |  | Equipment installation | 80d | 2018-01-29 A | 2018-11-20 | A115710 FS-20d, 115750 SS+30d, 115780 FF+10d |  | 80d | 2018-04-20 | 2018-08-09 | -92d | 0d | MH-Wtg [190.47 h] | 85,712 | 72,855 | 003 |  |  |
| A115770 |  | Piping erection | 35d | 2018-07-19 A | 2018-09-18 | A115730 FF, A115760 FS-40d, 114200 SS+10d |  | 35d | 2018-08-27 | 2018-10-12 | -37d | 0d | MH-Wtg [142.85 h] | 64,283 | 8,479 | 003 |  |  |
| A115800 |  | Painting work | 20d | 2018-07-21 A | 2018-08-28 | A115780 FS-15d |  | 20d | 2018-10-18 | 2018-11-14 | 38d | 165d | MH-Wtg [23.81 h] | 10,715 | 1,071 | 003 |  |  |
| A115780 |  | Testing and boxup | 30d | 2018-10-29 | 2018-12-07 | A115770 FS-15d, 116180 FF+5d |  |  |  |  | -80d | 0d | MH-Wtg [71.43 h] | 32,144 |  | 003 |  |  |
| A115790 |  | Insulation of equipments and piping (Deleted) | 30d | 2018-11-19 | 2018-12-28 | A115780 FS-15d |  |  |  |  | 52075.9d |  | MH-Wtg |  |  | 003 |  |  |

| ID | WBS | Activity | Duration | Start | Finish | Predecessors | Complete | Remaining | Planned start | Planned finish | Total float | Free float | Resources | Cost | Actual cost | UNIT DESCRIPTION | user_start_date1 | user_end_date1 |
| --- | --- | --- | --- | --- | --- | --- | --- | --- | --- | --- | --- | --- | --- | --- | --- | --- | --- | --- |
|  | 3 | **Electrical Installation** |  | 2018-11-21 | 2019-02-05 |  |  |  |  |  |  |  |  |  |  |  |  |  |
| A115810 |  | Cable tray installation | 20d | 2018-11-21 | 2018-12-18 | A115760 |  |  |  |  | -92d | 0d | MH-Wtg [41.18 h] | 18,531 |  | 003 |  |  |
| A115860 |  | Earthing work | 10d | 2018-11-21 | 2018-12-04 | A115760 |  |  |  |  | -47d | 80d | MH-Wtg [30.89 h] | 13,901 |  | 003 |  |  |
| A115820 |  | Cable laying | 15d | 2018-12-12 | 2019-01-01 | A115810 FS-5d |  |  |  |  | -92d | 0d | MH-Wtg [51.48 h] | 23,166 |  | 003 |  |  |
| A115830 |  | Installation of electrical items | 15d | 2018-12-26 | 2019-01-15 | A115820 FS-5d |  |  |  |  | -92d | 0d | MH-Wtg [30.89 h] | 13,901 |  | 003 |  |  |
| A115840 |  | Glanding and termination | 20d | 2019-01-02 | 2019-01-29 | A115830 FS-10d |  |  |  |  | -87d | 40d | MH-Wtg [30.89 h] | 13,901 |  | 003 |  |  |
| A115850 |  | Installation of light fittings | 15d | 2019-01-16 | 2019-02-05 | A115830 |  |  |  |  | -92d | 35d | MH-Wtg [20.59 h] | 9,266 |  | 003 |  |  |
|  | 4 | **Instrument Installation** |  | 2018-07-06 | 2019-01-18 |  |  |  |  |  |  |  |  |  |  |  |  |  |
| A115870 |  | Cable tray installation | 20d | 2018-07-06 A | 2018-08-02 | A115810 SS | 95% | 1.05d | 2018-10-22 | 2018-11-16 | 52182.8d |  | MH-Wtg [28.31 h] | 12,740 | 12,740 | 003 |  |  |
| A115880 |  | Cable laying | 15d | 2018-07-10 A | 2018-08-21 | A115870 FS-5d |  | 15d | 2018-11-12 | 2018-11-30 | 13d | 93d | MH-Wtg [35.39 h] | 15,926 | 14,333 | 003 |  |  |
| A115890 |  | Installation of JBs and Air headers | 10d | 2018-07-13 A | 2018-07-14 A | A115870 FS-5d | 100% |  | 2018-11-12 | 2018-11-23 |  |  | MH-Wtg [14.16 h] | 6,372 | 6,372 | 003 |  |  |
| A115900 |  | Installation of instruments | 15d | 2018-11-19 | 2018-12-07 | A115780 FF |  |  |  |  | -80d | 0d | MH-Wtg [21.23 h] | 9,554 |  | 003 |  |  |
| A115920 |  | Hookup of instruments | 20d | 2018-11-26 | 2018-12-21 | A115900 FF, A115780 FS-10d |  |  |  |  | -60d | 20d | MH-Wtg [14.16 h] | 6,372 |  | 003 |  |  |
| A115910 |  | Glanding and termination | 20d | 2018-12-03 | 2018-12-28 | A115880 FF, A115890 FF, A115900 FS-5d |  |  |  |  | -80d | 0d | MH-Wtg [21.23 h] | 9,554 |  | 003 |  |  |
| A115930 |  | Testing & calibration | 15d | 2018-12-31 | 2019-01-18 | A115920 FF, A115910 |  |  |  |  | -80d | 47d | MH-Wtg [7.08 h] | 3,186 |  | 003 |  |  |
|  | 53 | **B104F- SNA Tanker Unloading** |  | 2018-04-10 | 2019-01-29 |  |  |  |  |  |  |  |  |  |  |  |  |  |
|  | 1 | **Civil & Structural Work** |  | 2018-04-10 | 2019-01-18 |  |  |  |  |  |  |  |  |  |  |  |  |  |
| A115960 |  | Structural steel erection | 21d | 2018-04-10 A | 2018-07-31 A | A115950 FS-15d | 100% |  | 2018-07-30 | 2018-08-27 |  |  | MH-Wtg [47.62 h] | 21,429 | 21,429 | 003 | 2018-04-10 | 2018-04-30 |
| A115980 |  | Painting work | 10d | 2018-04-10 A | 2018-06-15 A | A116010 SS | 100% |  | 2018-12-06 | 2018-12-19 |  |  | MH-Wtg [4.76 h] | 2,142 | 2,142 | 003 | 2018-04-30 | 2018-05-20 |
| A115950 |  | RCC/Civil construction work | 37d | 2018-04-12 A | 2018-09-20 | A114800 FF |  | 37d | 2018-06-28 | 2018-08-17 | 52146.9d |  | MH-Wtg [38.09 h] | 17,141 | 15,426 | 003 | 2018-03-10 | 2018-04-10 |
| A115970 |  | Anti-corrosive lining work | 10d | 2019-01-07 | 2019-01-18 | A116000 |  |  |  |  | -80d | 47d | MH-Wtg [4.76 h] | 2,142 |  | 003 | 2018-04-30 | 2018-05-15 |
|  | 2 | **Mechanical Erection & Piping** |  | 2018-12-03 | 2019-01-28 |  |  |  |  |  |  |  |  |  |  |  |  |  |
| A115990 |  | Equipment installation | 10d | 2018-12-03 | 2018-12-14 | A115960, 115280 |  |  |  |  | -87d | 0d | MH-Wtg [28.57 h] | 12,857 |  | 003 |  |  |
| A116000 |  | Piping erection | 15d | 2018-12-17 | 2019-01-04 | A115990, 114250 |  |  |  |  | -87d | 0d | MH-Wtg [38.09 h] | 17,141 |  | 003 |  |  |
| A116010 |  | Testing and boxup | 10d | 2019-01-07 | 2019-01-18 | A116000 |  |  |  |  | -87d | 0d | MH-Wtg [14.29 h] | 6,431 |  | 003 |  |  |
| A116020 |  | Insulation of equipments and piping (Deleted) | 6d | 2019-01-21 | 2019-01-28 | A116010 |  |  |  |  | 52054.9d |  | MH-Wtg |  |  | 003 |  |  |
| A116030 |  | Painting work | 5d | 2019-01-21 | 2019-01-25 | A116010 |  |  |  |  | -70d | 57d | MH-Wtg [4.76 h] | 2,142 |  | 003 |  |  |

| ID | WBS | Activity | Duration | Start | Finish | Predecessors | Complete | Remaining | Planned start | Planned finish | Total float | Free float | Resources | Cost | Actual cost | UNIT DESCRIPTION | user_start_date1 | user_end_date1 |
| --- | --- | --- | --- | --- | --- | --- | --- | --- | --- | --- | --- | --- | --- | --- | --- | --- | --- | --- |
|  | 3 | **Electrical Installation** |  | 2018-08-01 | 2018-12-19 |  |  |  |  |  |  |  |  |  |  |  |  |  |
| A116040 |  | Cable tray installation | 5d | 2018-08-01 | 2018-08-07 | A115960 |  |  |  |  | 30d | 0d | MH-Wtg [8.24 h] | 3,708 |  | 003 |  |  |
| A116050 |  | Cable laying | 3d | 2018-08-08 | 2018-08-10 | A116040 |  |  |  |  | 30d | 0d | MH-Wtg [10.3 h] | 4,635 |  | 003 |  |  |
| A116080 |  | Installation of light fittings | 3d | 2018-08-13 | 2018-08-15 | A116050 |  |  |  |  | 30d | 0d | MH-Wtg [8.24 h] | 3,708 |  | 003 |  |  |
| A116070 |  | Glanding and termination | 2d | 2018-08-16 | 2018-08-17 | A116080 |  |  |  |  | 30d | 157d | MH-Wtg [8.24 h] | 3,708 |  | 003 |  |  |
| A116090 |  | Earthing work | 3d | 2018-12-17 | 2018-12-19 | A115990 |  |  |  |  | -58d | 69d | MH-Wtg [6.18 h] | 2,781 |  | 003 |  |  |
|  | 4 | **Instrument Installation** |  | 2018-08-01 | 2019-01-29 |  |  |  |  |  |  |  |  |  |  |  |  |  |
| A116100 |  | Cable tray installation | 5d | 2018-08-01 | 2018-08-07 | A116040 SS |  |  |  |  | 33d | 0d | MH-Wtg [5.66 h] | 2,547 |  | 003 |  |  |
| A116110 |  | Cable laying | 3d | 2018-08-08 | 2018-08-10 | A116100 |  |  |  |  | 33d | 120d | MH-Wtg [7.08 h] | 3,186 |  | 003 |  |  |
| A116120 |  | Installation of JBs and Air headers | 2d | 2018-08-08 | 2018-08-09 | A116100 |  |  |  |  | 34d | 121d | MH-Wtg [2.83 h] | 1,274 |  | 003 |  |  |
| A116130 |  | Installation of instruments | 2d | 2019-01-21 | 2019-01-22 | A116010 |  |  |  |  | -87d | 0d | MH-Wtg [4.25 h] | 1,913 |  | 003 |  |  |
| A116150 |  | Hookup of instruments | 3d | 2019-01-21 | 2019-01-23 | A116130 FF, A116010 |  |  |  |  | -83d | 4d | MH-Wtg [2.83 h] | 1,274 |  | 003 |  |  |
| A116140 |  | Glanding and termination | 3d | 2019-01-23 | 2019-01-25 | A116110 FF, A116120 FF, A116130 |  |  |  |  | -87d | 0d | MH-Wtg [4.25 h] | 1,913 |  | 003 |  |  |
| A116160 |  | Testing & calibration | 2d | 2019-01-28 | 2019-01-29 | A116150 FF, A116140 |  |  |  |  | -87d | 40d | MH-Wtg [1.42 h] | 639 |  | 003 |  |  |
|  | 54 | **B104G- Ammonia Tanker Unloading** |  | 2018-03-10 | 2019-03-26 |  |  |  |  |  |  |  |  |  |  |  |  |  |
|  | 1 | **Civil & Structural Work** |  | 2018-03-10 | 2018-09-04 |  |  |  |  |  |  |  |  |  |  |  |  |  |
| A116180 |  | RCC/Civil construction work | 25d | 2018-03-10 A | 2018-09-04 | A116190 SF |  | 25d | 2018-03-12 | 2018-04-16 | 52158.9d |  | MH-Wtg [120 h] | 54,000 | 48,600 | 003 | 2018-02-10 | 2018-03-15 |
| A116179 |  | Equipment foundations | 20d | 2018-03-24 A | 2018-07-04 A | 111560, A116180 FF | 100% |  | 2018-03-19 | 2018-04-16 |  |  |  |  |  | 003 |  |  |
| A116190 |  | Structural steel erection | 20d | 2018-05-03 A | 2018-08-28 | 119590.9 FF-10d |  | 20d | 2018-07-17 | 2018-08-14 | 52163.9d |  | MH-Wtg [180 h] | 81,000 | 79,380 | 003 | 2018-03-10 | 2018-04-10 |
| A116210 |  | Painting work | 10d | 2018-05-10 A | 2018-06-28 A | A116240 SS | 100% |  | 2018-12-26 | 2019-01-08 |  |  | MH-Wtg [80 h] | 36,000 | 36,000 | 003 | 2018-04-10 | 2018-04-25 |
|  | 2 | **Mechanical Erection & Piping** |  | 2018-06-30 | 2019-03-14 |  |  |  |  |  |  |  |  |  |  |  |  |  |
| A116220 |  | Equipment installation | 30d | 2018-06-30 A | 2019-02-07 | 115280 FF+5d, 119590.99.1 FF+10d, 119590.9 FF+10d, A116179, A116190, 119590.99.2 FF+10d |  | 30d | 2018-10-30 | 2018-12-10 | -127d | 0d | MH-Wtg [28.57 h] | 12,857 | 9,642 | 003 |  |  |
| A116230 |  | Piping erection | 25d | 2019-01-11 | 2019-02-14 | A116220 FS-20d, 106220 SS+10d |  |  |  |  | -127d | 0d | MH-Wtg [38.09 h] | 17,141 |  | 003 |  |  |
| A116240 |  | Testing and boxup | 20d | 2019-01-25 | 2019-02-21 | A116230 FS-15d |  |  |  |  | -127d | 0d | MH-Wtg [14.29 h] | 6,431 |  | 003 |  |  |
| A116250 |  | Insulation of equipments and piping | 15d | 2019-02-22 | 2019-03-14 | A116240 |  |  |  |  | -119d | 8d | MH-Wtg [9.52 h] | 4,284 |  | 003 |  |  |
| A116260 |  | Painting work | 10d | 2019-02-22 | 2019-03-07 | A116240 |  |  |  |  | -99d | 28d | MH-Wtg [4.76 h] | 2,142 |  | 003 |  |  |

Notes:
- A116180: Explanation: Compressor area-60 / Loading bay-40

| ID | WBS | Activity | Duration | Start | Finish | Predecessors | Complete | Remaining | Planned start | Planned finish | Total float | Free float | Calendar | Resources | Cost | Actual cost | UNIT DESCRIPTION | user_start_date1 | user_end_date1 |
| --- | --- | --- | --- | --- | --- | --- | --- | --- | --- | --- | --- | --- | --- | --- | --- | --- | --- | --- | --- |
|  | 3 | **Electrical Installation** |  | 2019-01-25 | 2019-03-22 |  |  |  |  |  |  |  |  |  |  |  |  |  |  |
| A116320 |  | Earthing work | 10d | 2019-01-25 | 2019-02-07 | A116220 FF |  |  |  |  | -94d | 33d |  | MH-Wtg [4.34 h] | 1,953 |  | 003 |  |  |
| A116270 |  | Cable tray installation | 10d | 2019-02-08 | 2019-02-21 | A116220 |  |  |  |  | -125d | 0d |  | MH-Wtg [8.67 h] | 3,902 |  | 003 |  |  |
| A116280 |  | Cable laying | 8d | 2019-02-22 | 2019-03-05 | A116270 |  |  |  |  | -125d | 0d |  | MH-Wtg [10.84 h] | 4,878 |  | 003 |  |  |
| A116310 |  | Installation of light fittings | 5d | 2019-03-06 | 2019-03-12 | A116280 |  |  |  |  | -125d | 0d |  | MH-Wtg [8.67 h] | 3,902 |  | 003 |  |  |
| A116300 |  | Glanding and termination | 8d | 2019-03-13 | 2019-03-22 | A116310 |  |  |  |  | -125d | 2d |  | MH-Wtg [8.67 h] | 3,902 |  | 003 |  |  |
|  | 4 | **Instrument Installation** |  | 2019-02-08 | 2019-03-26 |  |  |  |  |  |  |  |  |  |  |  |  |  |  |
| A116330 |  | Cable tray installation | 10d | 2019-02-08 | 2019-02-21 | A116270 SS |  |  |  |  | -117d | 0d |  | MH-Wtg [5.66 h] | 2,547 |  | 003 |  |  |
| A116340 |  | Cable laying | 8d | 2019-02-22 | 2019-03-05 | A116330 |  |  |  |  | -117d | 10d |  | MH-Wtg [7.08 h] | 3,186 |  | 003 |  |  |
| A116350 |  | Installation of JBs and Air headers | 2d | 2019-02-22 | 2019-02-25 | A116330 |  |  |  |  | -111d | 16d |  | MH-Wtg [2.83 h] | 1,274 |  | 003 |  |  |
| A116360 |  | Installation of instruments | 10d | 2019-02-22 | 2019-03-07 | A116240 |  |  |  |  | -127d | 0d |  | MH-Wtg [4.25 h] | 1,913 |  | 003 |  |  |
| A116380 |  | Hookup of instruments | 5d | 2019-03-01 | 2019-03-07 | A116360 FF, A116240 |  |  |  |  | -114d | 13d |  | MH-Wtg [2.83 h] | 1,274 |  | 003 |  |  |
| A116370 |  | Glanding and termination | 8d | 2019-03-08 | 2019-03-19 | A116340 FF, A116350 FF, A116360 |  |  |  |  | -127d | 0d |  | MH-Wtg [4.25 h] | 1,913 |  | 003 |  |  |
| A116390 |  | Testing & calibration | 5d | 2019-03-20 | 2019-03-26 | A116380 FF, A116370 |  |  |  |  | -127d | 0d |  | MH-Wtg [1.42 h] | 639 |  | 003 |  |  |
|  | 9 | **B105A- Air Compressor** |  | 2017-11-28 | 2018-10-02 |  |  |  |  |  |  |  |  |  |  |  |  |  |  |
|  | 1 | **Civil & Structural Work** |  | 2017-11-28 | 2018-06-28 |  |  |  |  |  |  |  |  |  |  |  |  |  |  |
| A116400 |  | Equipment foundations | 30d | 2017-11-28 A | 2018-02-05 A | 100940, 114860 FF-25d | 100% |  | 2018-02-16 | 2018-03-30 |  |  | Monsoon | MH-Wtg [380.94 h] | 171,423 | 171,423 | 003 | 2017-12-15 | 2018-01-14 |
| A116410 |  | RCC/Civil construction work | 45d | 2017-11-28 A | 2018-02-05 A | A116400 FF | 100% |  | 2018-01-25 | 2018-03-30 |  |  |  | MH-Wtg [190.47 h] | 85,712 | 85,712 | 003 | 2018-01-14 | 2018-02-14 |
| A116420 |  | Structural steel erection | 20d | 2018-04-10 A | 2018-06-28 A | A116410 | 100% |  | 2018-05-01 | 2018-05-28 |  |  |  | MH-Wtg [333.32 h] | 149,994 | 149,994 | 003 | 2018-02-14 | 2018-03-16 |
| A116440 |  | Painting work | 20d | 2018-04-17 A | 2018-06-20 A | A116470 SS | 100% |  | 2018-07-30 | 2018-08-24 |  |  |  | MH-Wtg [47.62 h] | 21,429 | 21,429 | 003 | 2018-03-16 | 2018-03-31 |
|  | 2 | **Mechanical Erection & Piping** |  | 2018-04-09 | 2018-09-25 |  |  |  |  |  |  |  |  |  |  |  |  |  |  |
| A116450 |  | Equipment installation | 15d | 2018-04-09 A | 2018-04-23 A | A116400, 114860, A116420 | 100% |  | 2018-06-29 | 2018-07-19 |  |  |  | MH-Wtg [380.94 h] | 171,423 | 171,423 | 003 |  |  |
| A116460 |  | Piping erection | 30d | 2018-05-18 A | 2018-09-11 | A116450 FS-10d, 106260 |  | 30d | 2018-07-13 | 2018-08-23 | -69d | 0d |  | MH-Wtg [380.94 h] | 171,423 | 154,281 | 003 |  |  |
| A116490 |  | Painting work | 25d | 2018-05-22 A | 2018-09-04 | A116470 FS-10d |  | 25d | 2018-08-13 | 2018-09-14 | -21d | 48d |  | MH-Wtg [47.62 h] | 21,429 | 19,286 | 003 |  |  |
| A116470 |  | Testing and boxup | 20d | 2018-08-29 | 2018-09-25 | A116460 FS-10d |  |  |  |  | -69d | 0d |  | MH-Wtg [142.85 h] | 64,283 |  | 003 |  |  |

| ID | WBS | Activity | Duration | Start | Finish | Predecessors | Complete | Remaining | Planned start | Planned finish | Total float | Free float | Calendar | Resources | Cost | Actual cost | UNIT DESCRIPTION | user_start_date1 | user_end_date1 |
| --- | --- | --- | --- | --- | --- | --- | --- | --- | --- | --- | --- | --- | --- | --- | --- | --- | --- | --- | --- |
|  | 3 | **Electrical Installation** |  | 2018-06-02 | 2018-08-14 |  |  |  |  |  |  |  |  |  |  |  |  |  |  |
| A116550 |  | Earthing work | 15d | 2018-06-02 A | 2018-06-08 A | A116450 | 100% |  | 2018-07-23 | 2018-08-10 |  |  |  | MH-Wtg [61.77 h] | 27,797 | 27,797 | 003 |  |  |
| A116500 |  | Cable tray installation | 20d | 2018-06-12 A | 2018-07-14 A | A116450 | 100% |  | 2018-07-23 | 2018-08-17 |  |  |  | MH-Wtg [82.37 h] | 37,067 | 37,067 | 003 |  |  |
| A116510 |  | Cable laying | 15d | 2018-06-20 A | 2018-07-18 A | A116500 FS-5d | 100% |  | 2018-08-13 | 2018-08-31 |  |  |  | MH-Wtg [102.96 h] | 46,332 | 46,332 | 003 |  |  |
| A116520 |  | Installation of electrical items | 10d | 2018-07-18 A | 2018-07-21 A | A116510 FS-5d | 100% |  | 2018-08-27 | 2018-09-07 |  |  |  | MH-Wtg [61.77 h] | 27,797 | 27,797 | 003 |  |  |
| A116530 |  | Glanding and termination | 15d | 2018-07-20 A | 2018-07-25 A | A116520 FS-5d | 100% |  | 2018-09-03 | 2018-09-21 |  |  |  | MH-Wtg [61.77 h] | 27,797 | 27,797 | 003 |  |  |
| A116540 |  | Installation of light fittings | 10d | 2018-08-01 | 2018-08-14 | A116520 |  |  |  |  | -34d | 0d |  | MH-Wtg [41.18 h] | 18,531 |  | 003 |  |  |
|  | 4 | **Instrument Installation** |  | 2018-06-15 | 2018-10-02 |  |  |  |  |  |  |  |  |  |  |  |  |  |  |
| A116560 |  | Cable tray installation | 20d | 2018-06-15 A | 2018-07-17 A | A116500 SS | 100% |  | 2018-07-23 | 2018-08-17 |  |  |  | MH-Wtg [56.63 h] | 25,484 | 25,484 | 003 |  |  |
| A116570 |  | Cable laying | 20d | 2018-06-21 A | 2018-07-20 A | A116560 FS-5d | 100% |  | 2018-08-13 | 2018-09-07 |  |  |  | MH-Wtg [70.78 h] | 31,851 | 31,851 | 003 |  |  |
| A116580 |  | Installation of JBs and Air headers | 15d | 2018-07-03 A | 2018-07-04 A | A116560 FS-10d | 100% |  | 2018-08-06 | 2018-08-24 |  |  |  | MH-Wtg [28.31 h] | 12,740 | 12,740 | 003 |  |  |
| A116600 |  | Glanding and termination | 15d | 2018-07-10 A | 2018-08-21 | A116570 FF, A116580 FF, A116590 FS-10d |  | 15d | 2018-08-20 | 2018-09-07 | -51d | 0d |  | MH-Wtg [42.47 h] | 19,112 | 6,689 | 003 |  |  |
| A116590 |  | Installation of instruments | 25d | 2018-08-22 | 2018-09-25 | A116470 FF |  |  |  |  | -64d | 0d |  | MH-Wtg [42.47 h] | 19,112 |  | 003 |  |  |
| A116610 |  | Hookup of instruments | 20d | 2018-09-05 | 2018-10-02 | A116590 FF, A116470 FS-15d |  |  |  |  | -69d | 0d |  | MH-Wtg [28.31 h] | 12,740 |  | 003 |  |  |
| A116620 |  | Testing & calibration | 12d | 2018-09-17 | 2018-10-02 | A116610 FF, A116600 |  |  |  |  | -69d | 0d |  | MH-Wtg [14.16 h] | 6,372 |  | 003 |  |  |
|  | 10 | **B105B- Air Drier** |  | 2017-11-28 | 2018-10-02 |  |  |  |  |  |  |  |  |  |  |  |  |  |  |
|  | 1 | **Civil & Structural Work** |  | 2017-11-28 | 2018-06-28 |  |  |  |  |  |  |  |  |  |  |  |  |  |  |
| A116630 |  | Equipment foundations | 15d | 2017-11-28 A | 2018-02-05 A | 101010, A116400 FF | 100% |  | 2018-01-22 | 2018-02-12 |  |  | Monsoon | MH-Wtg [190.47 h] | 85,712 | 85,712 | 003 | 2017-12-15 | 2018-01-14 |
| A116640 |  | RCC/Civil construction work | 45d | 2017-11-28 A | 2018-02-05 A | A116410 FF | 100% |  | 2018-01-25 | 2018-03-30 |  |  |  | MH-Wtg [95.24 h] | 42,858 | 42,858 | 003 | 2018-01-14 | 2018-02-14 |
| A116650 |  | Structural steel erection | 20d | 2018-04-10 A | 2018-06-28 A | A116420 FF | 100% |  | 2018-05-01 | 2018-05-28 |  |  |  | MH-Wtg [166.66 h] | 74,997 | 74,997 | 003 | 2018-02-14 | 2018-03-16 |
| A116670 |  | Painting work | 20d | 2018-04-17 A | 2018-06-20 A | A116440 FF | 100% |  | 2018-07-30 | 2018-08-24 |  |  |  | MH-Wtg [23.81 h] | 10,715 | 10,715 | 003 | 2018-03-16 | 2018-03-31 |
|  | 2 | **Mechanical Erection & Piping** |  | 2018-03-25 | 2018-09-18 |  |  |  |  |  |  |  |  |  |  |  |  |  |  |
| A116680 |  | Equipment installation | 15d | 2018-03-25 A | 2018-05-25 A | A116630, 114930 | 100% |  | 2018-06-01 | 2018-06-21 |  |  |  | MH-Wtg [190.47 h] | 85,712 | 85,712 | 003 |  |  |
| A116690 |  | Piping erection | 20d | 2018-05-18 A | 2018-08-28 | A116680, 106300 |  | 20d | 2018-07-13 | 2018-08-09 | 52148.9d | 0d |  | MH-Wtg [190.47 h] | 85,712 | 77,140 | 003 |  |  |
| A116720 |  | Painting work | 10d | 2018-05-22 A | 2018-08-14 | A116700 |  | 10d | 2018-08-20 | 2018-08-31 | -6d | 63d |  | MH-Wtg [23.81 h] | 10,715 | 9,643 | 003 |  |  |
| A116700 |  | Testing and boxup | 15d | 2018-08-29 | 2018-09-18 | A116690 |  |  |  |  | 52148.9d |  |  | MH-Wtg [71.43 h] | 32,144 |  | 003 |  |  |

| ID | WBS | Activity | Duration | Start | Finish | Predecessors | Complete | Remaining | Planned start | Planned finish | Total float | Free float | Resources | Cost | Actual cost | UNIT DESCRIPTION | user_end_date1 | user_start_date1 |
| --- | --- | --- | --- | --- | --- | --- | --- | --- | --- | --- | --- | --- | --- | --- | --- | --- | --- | --- |
|  | 3 | **Electrical Installation** |  | 2018-06-12 | 2018-08-14 |  |  |  |  |  |  |  |  |  |  |  |  |  |
| A116780 |  | Earthing work | 5d | 2018-06-12 A | 2018-06-17 A | A116550 FF | 100% |  | 2018-08-06 | 2018-08-10 |  |  | MH-Wtg [30.89 h] | 13,901 | 13,901 | 003 |  |  |
| A116730 |  | Cable tray installation | 15d | 2018-06-14 A | 2018-07-18 A | A116500 FF | 100% |  | 2018-07-30 | 2018-08-17 |  |  | MH-Wtg [41.18 h] | 18,531 | 18,531 | 003 |  |  |
| A116740 |  | Cable laying | 10d | 2018-06-20 A | 2018-07-20 A | A116510 FF | 100% |  | 2018-08-20 | 2018-08-31 |  |  | MH-Wtg [51.48 h] | 23,166 | 23,166 | 003 |  |  |
| A116750 |  | Installation of electrical items | 5d | 2018-06-25 A | 2018-07-20 A | A116520 FF | 100% |  | 2018-09-03 | 2018-09-07 |  |  | MH-Wtg [30.89 h] | 13,901 | 13,901 | 003 |  |  |
| A116760 |  | Glanding and termination | 8d | 2018-06-29 A | 2018-07-25 A | A116530 FF | 100% |  | 2018-09-12 | 2018-09-21 |  |  | MH-Wtg [30.89 h] | 13,901 | 13,901 | 003 |  |  |
| A116770 |  | Installation of light fittings | 5d | 2018-08-08 | 2018-08-14 | A116540 FF |  |  |  |  | -34d | 35d | MH-Wtg [20.59 h] | 9,266 |  | 003 |  |  |
|  | 4 | **Instrument Installation** |  | 2018-06-19 | 2018-10-02 |  |  |  |  |  |  |  |  |  |  |  |  |  |
| A116790 |  | Cable tray installation | 15d | 2018-06-19 A | 2018-07-17 A | A116560 FF | 100% |  | 2018-07-30 | 2018-08-17 |  |  | MH-Wtg [28.31 h] | 12,740 | 12,740 | 003 |  |  |
| A116800 |  | Cable laying | 10d | 2018-06-22 A | 2018-07-20 A | A116570 FF | 100% |  | 2018-08-27 | 2018-09-07 |  |  | MH-Wtg [35.39 h] | 15,926 | 15,926 | 003 |  |  |
| A116810 |  | Installation of JBs and Air headers | 5d | 2018-07-03 A | 2018-07-04 A | A116580 FF | 100% |  | 2018-08-20 | 2018-08-24 |  |  | MH-Wtg [14.16 h] | 6,372 | 6,372 | 003 |  |  |
| A116830 |  | Glanding and termination | 10d | 2018-07-10 A | 2018-08-21 | A116600 FF |  | 10d | 2018-08-27 | 2018-09-07 | -39d | 30d | MH-Wtg [21.23 h] | 9,554 | 3,344 | 003 |  |  |
| A116840 |  | Hookup of instruments | 15d | 2018-09-12 | 2018-10-02 | A116610 FF |  |  |  |  | -69d | 0d | MH-Wtg [14.16 h] | 6,372 |  | 003 |  |  |
| A116820 |  | Installation of instruments | 8d | 2018-09-14 | 2018-09-25 | A116590 FF |  |  |  |  | -64d | 5d | MH-Wtg [21.23 h] | 9,554 |  | 003 |  |  |
| A116850 |  | Testing & calibration | 10d | 2018-09-19 | 2018-10-02 | A116620 FF |  |  |  |  | -69d | 0d | MH-Wtg [7.08 h] | 3,186 |  | 003 |  |  |
|  | 11 | **B105C- VAM Unit** |  | 2017-11-23 | 2018-08-21 |  |  |  |  |  |  |  |  |  |  |  |  |  |
|  | 1 | **Civil & Structural Work** |  | 2017-11-23 | 2018-05-25 |  |  |  |  |  |  |  |  |  |  |  |  |  |
| A116870 |  | RCC/Civil construction work | 18d | 2017-11-23 A | 2018-01-22 A | A116860 FF | 100% |  | 2017-11-01 | 2017-11-24 |  |  | MH-Wtg [95.24 h] | 42,858 | 42,858 | 003 | 2017-12-28 |  |
| A116860 |  | Equipment foundations | 10d | 2017-11-28 A | 2017-12-30 A | 101080, 113120 FS+10d | 100% |  | 2018-01-01 | 2018-01-12 |  |  | MH-Wtg [190.47 h] | 85,712 | 85,712 | 003 | 2017-12-28 | 2017-12-27 |
| A116880 |  | Structural steel erection | 39d | 2018-01-26 A | 2018-04-10 A | A116870 | 100% |  | 2018-05-01 | 2018-06-22 |  |  | MH-Wtg [166.66 h] | 74,997 | 74,997 | 003 | 2018-02-25 | 2018-01-02 |
| A116900 |  | Painting work | 17d | 2018-04-25 A | 2018-05-25 A | A116930 SS | 100% |  | 2018-06-01 | 2018-06-25 |  |  | MH-Wtg [23.81 h] | 10,715 | 10,715 | 003 | 2018-04-18 | 2018-04-05 |
|  | 2 | **Mechanical Erection & Piping** |  | 2018-02-26 | 2018-05-25 |  |  |  |  |  |  |  |  |  |  |  |  |  |
| A116910 |  | Equipment installation | 19d | 2018-02-26 A | 2018-04-03 A | A116860, 115000, A116880 | 100% |  | 2018-04-25 | 2018-05-21 |  |  | MH-Wtg [142.85 h] | 64,283 | 64,283 | 003 |  |  |
| A116920 |  | Piping erection | 25d | 2018-04-02 A | 2018-04-20 A | A116910 | 100% |  | 2018-04-27 | 2018-05-31 |  |  | MH-Wtg [190.47 h] | 85,712 | 85,712 | 003 |  |  |
| A116930 |  | Testing and boxup | 15d | 2018-04-18 A | 2018-05-12 A | A116920 | 100% |  | 2018-06-01 | 2018-06-21 |  |  | MH-Wtg [71.43 h] | 32,144 | 32,144 | 003 |  |  |
| A116940 |  | Insulation of equipments and piping | 20d | 2018-04-25 A | 2018-05-18 A | A116930 | 100% |  | 2018-06-22 | 2018-07-19 |  |  | MH-Wtg [47.62 h] | 21,429 | 21,429 | 003 |  |  |
| A116950 |  | Painting work | 10d | 2018-04-25 A | 2018-05-25 A | A116930 | 100% |  | 2018-06-22 | 2018-07-05 |  |  | MH-Wtg [23.81 h] | 10,715 | 10,715 | 003 |  |  |

Notes:
- A116910: Explanation: Erection-70 / Alignment-20 / Grouting-10

| ID | WBS | Activity | Duration | Start | Finish | Predecessors | Complete | Planned start | Planned finish | Total float | Free float | Calendar | Resources | Cost | Actual cost | UNIT DESCRIPTION | user_start_date1 | user_end_date1 |
| --- | --- | --- | --- | --- | --- | --- | --- | --- | --- | --- | --- | --- | --- | --- | --- | --- | --- | --- |
|  | 3 | **Electrical Installation** |  | 2018-04-17 | 2018-08-07 |  |  |  |  |  |  |  |  |  |  |  |  |  |
| A117010 |  | Earthing work | 8d | 2018-04-17 A | 2018-05-01 A | A116910 | 100% | 2018-06-01 | 2018-06-12 |  |  |  | MH-Wtg [30.89 h] | 13,901 | 13,901 | 003 |  |  |
| A116960 |  | Cable tray installation | 20d | 2018-05-03 A | 2018-05-10 A | A116910 | 100% | 2018-06-01 | 2018-06-28 |  |  |  | MH-Wtg [41.18 h] | 18,531 | 18,531 | 003 |  |  |
| A116970 |  | Cable laying | 15d | 2018-05-08 A | 2018-05-15 A | A116960 FS-5d | 100% | 2018-06-22 | 2018-07-12 |  |  |  | MH-Wtg [51.48 h] | 23,166 | 23,166 | 003 |  |  |
| A116980 |  | Installation of electrical items | 8d | 2018-05-08 A | 2018-05-17 A | A116970 | 100% | 2018-07-13 | 2018-07-24 |  |  |  | MH-Wtg [30.89 h] | 13,901 | 13,901 | 003 |  |  |
| A116990 |  | Glanding and termination | 10d | 2018-05-17 A | 2018-05-20 A | A116980 | 100% | 2018-07-25 | 2018-08-07 |  |  |  | MH-Wtg [30.89 h] | 13,901 | 13,901 | 003 |  |  |
| A117000 |  | Installation of light fittings | 5d | 2018-08-01 | 2018-08-07 | A116980 |  |  |  | -17d | 10d |  | MH-Wtg [20.59 h] | 9,266 |  | 003 |  |  |
|  | 4 | **Instrument Installation** |  | 2018-05-10 | 2018-08-21 |  |  |  |  |  |  |  |  |  |  |  |  |  |
| A117020 |  | Cable tray installation | 25d | 2018-05-10 A | 2018-05-15 A | A116960 SS | 100% | 2018-06-01 | 2018-07-05 |  |  |  | MH-Wtg [28.31 h] | 12,740 | 12,740 | 003 |  |  |
| A117030 |  | Cable laying | 20d | 2018-05-12 A | 2018-05-17 A | A117020 FS-5d | 100% | 2018-06-29 | 2018-07-26 |  |  |  | MH-Wtg [35.39 h] | 15,926 | 15,926 | 003 |  |  |
| A117040 |  | Installation of JBs and Air headers | 10d | 2018-05-15 A | 2018-05-15 A | A117020 | 100% | 2018-07-06 | 2018-07-19 |  |  |  | MH-Wtg [14.16 h] | 6,372 | 6,372 | 003 |  |  |
| A117050 |  | Installation of instruments | 20d | 2018-05-15 A | 2018-05-20 A | A116930 | 100% | 2018-06-22 | 2018-07-19 |  |  |  | MH-Wtg [21.23 h] | 9,554 | 9,554 | 003 |  |  |
| A117060 |  | Glanding and termination | 15d | 2018-05-18 A | 2018-05-22 A | A117030 FF, A117040 FF, A117050 FS-10d | 100% | 2018-07-06 | 2018-07-26 |  |  |  | MH-Wtg [21.23 h] | 9,554 | 9,554 | 003 |  |  |
| A117070 |  | Hookup of instruments | 20d | 2018-05-22 A | 2018-05-24 A | A117050 FS-5d | 100% | 2018-07-13 | 2018-08-09 |  |  |  | MH-Wtg [14.16 h] | 6,372 | 6,372 | 003 |  |  |
| A117080 |  | Testing & calibration | 15d | 2018-08-01 | 2018-08-21 | A117070 FF, A117060 |  |  |  | -27d | 0d |  | MH-Wtg [7.08 h] | 3,186 |  | 003 |  |  |
|  | 12 | **B105D- Hot Well/Cold Well, Pumps** |  | 2017-11-28 | 2018-08-14 |  |  |  |  |  |  |  |  |  |  |  |  |  |
|  | 1 | **Civil & Structural Work** |  | 2017-11-28 | 2018-05-25 |  |  |  |  |  |  |  |  |  |  |  |  |  |
| A117090 |  | Equipment foundations | 25d | 2017-11-28 A | 2017-12-30 A | 101141, A116860 | 100% | 2018-01-15 | 2018-02-19 |  |  | Monsoon | MH-Wtg [190.47 h] | 85,712 | 85,712 | 003 | 2018-01-01 | 2018-01-31 |
| A117100 |  | RCC/Civil construction work | 30d | 2017-11-28 A | 2017-12-28 A | A117090 FS-10d | 100% | 2018-02-06 | 2018-03-19 |  |  |  | MH-Wtg [166.66 h] | 74,997 | 74,997 | 003 |  | 2017-12-30 |
| A117110 |  | Structural steel erection | 39d | 2018-01-26 A | 2018-04-10 A | A117100 | 100% | 2018-05-01 | 2018-06-22 |  |  |  | MH-Wtg [95.24 h] | 42,858 | 42,858 | 003 | 2017-12-30 | 2018-02-10 |
| A117130 |  | Painting work | 10d | 2018-04-25 A | 2018-05-25 A | A117160 SS | 100% | 2018-06-01 | 2018-06-14 |  |  |  | MH-Wtg [23.81 h] | 10,715 | 10,715 | 003 | 2018-03-10 | 2018-03-30 |
|  | 2 | **Mechanical Erection & Piping** |  | 2018-02-28 | 2018-05-25 |  |  |  |  |  |  |  |  |  |  |  |  |  |
| A117140 |  | Equipment installation | 25d | 2018-02-28 A | 2018-04-02 A | A117090, A117110 | 100% | 2018-04-25 | 2018-05-29 |  |  |  | MH-Wtg [190.47 h] | 85,712 | 85,712 | 003 |  |  |
| A117150 |  | Piping erection | 35d | 2018-04-02 A | 2018-04-20 A | A117110 FF, A117140 | 100% | 2018-06-05 | 2018-07-23 |  |  |  | MH-Wtg [142.85 h] | 64,283 | 64,283 | 003 |  |  |
| A117160 |  | Testing and boxup | 20d | 2018-04-18 A | 2018-05-12 A | A117150 FS-10d | 100% | 2018-07-10 | 2018-08-06 |  |  |  | MH-Wtg [71.43 h] | 32,144 | 32,144 | 003 |  |  |
| A117170 |  | Insulation of equipments and piping | 20d | 2018-04-25 A | 2018-05-18 A | A117160 FS-10d | 100% | 2018-07-24 | 2018-08-20 |  |  |  | MH-Wtg [47.62 h] | 21,429 | 21,429 | 003 |  |  |
| A117180 |  | Painting work | 15d | 2018-04-25 A | 2018-05-25 A | A117160 FS-22d | 100% | 2018-07-06 | 2018-07-26 |  |  |  | MH-Wtg [0.54 h] | 10,736 | 10,736 | 003 |  |  |

| ID | WBS | Activity | Duration | Start | Finish | Predecessors | Complete | Planned start | Planned finish | Total float | Free float | Resources | Cost | Actual cost | UNIT DESCRIPTION |
| --- | --- | --- | --- | --- | --- | --- | --- | --- | --- | --- | --- | --- | --- | --- | --- |
|  | 3 | **Electrical Installation** |  | 2018-04-17 | 2018-08-14 |  |  |  |  |  |  |  |  |  |  |
| A117240 |  | Earthing work | 10d | 2018-04-17 A | 2018-05-01 A | A117140 | 100% | 2018-06-01 | 2018-06-14 |  |  | MH-Wtg [30.89 h] | 13,901 | 13,901 | 003 |
| A117190 |  | Cable tray installation | 20d | 2018-05-03 A | 2018-05-10 A | A117140 | 100% | 2018-06-01 | 2018-06-28 |  |  | MH-Wtg [41.18 h] | 18,531 | 18,531 | 003 |
| A117200 |  | Cable laying | 15d | 2018-05-08 A | 2018-05-15 A | A117190 FS-10d | 100% | 2018-06-15 | 2018-07-05 |  |  | MH-Wtg [51.48 h] | 23,166 | 23,166 | 003 |
| A117210 |  | Installation of electrical items | 10d | 2018-05-08 A | 2018-05-17 A | A117200 FS-5d | 100% | 2018-06-29 | 2018-07-12 |  |  | MH-Wtg [30.89 h] | 13,901 | 13,901 | 003 |
| A117220 |  | Glanding and termination | 15d | 2018-05-17 A | 2018-05-20 A | A117210 FS-5d | 100% | 2018-07-06 | 2018-07-26 |  |  | MH-Wtg [30.89 h] | 13,901 | 13,901 | 003 |
| A117230 |  | Installation of light fittings | 10d | 2018-08-01 | 2018-08-14 | A117210 |  |  |  | -22d | 5d | MH-Wtg [20.59 h] | 9,266 |  | 003 |
|  | 4 | **Instrument Installation** |  | 2018-05-10 | 2018-08-14 |  |  |  |  |  |  |  |  |  |  |
| A117250 |  | Cable tray installation | 20d | 2018-05-10 A | 2018-05-15 A | A117190 SS | 100% | 2018-06-01 | 2018-06-28 |  |  | MH-Wtg [28.31 h] | 12,740 | 12,740 | 003 |
| A117260 |  | Cable laying | 15d | 2018-05-12 A | 2018-05-17 A | A117250 FS-10d | 100% | 2018-06-15 | 2018-07-05 |  |  | MH-Wtg [35.39 h] | 15,926 | 15,926 | 003 |
| A117270 |  | Installation of JBs and Air headers | 10d | 2018-05-15 A | 2018-05-15 A | A117250 FS-5d | 100% | 2018-06-22 | 2018-07-05 |  |  | MH-Wtg [14.16 h] | 6,372 | 6,372 | 003 |
| A117280 |  | Installation of instruments | 15d | 2018-05-15 A | 2018-05-20 A | A117160 | 100% | 2018-06-29 | 2018-07-19 |  |  | MH-Wtg [21.23 h] | 9,554 | 9,554 | 003 |
| A117290 |  | Glanding and termination | 10d | 2018-05-18 A | 2018-05-22 A | A117260 FF, A117270 FF, A117280 FS-5d | 100% | 2018-07-13 | 2018-07-26 |  |  | MH-Wtg [21.23 h] | 9,554 | 9,554 | 003 |
| A117300 |  | Hookup of instruments | 15d | 2018-05-22 A | 2018-05-24 A | A117280 FF, A117160 FS-5d | 100% | 2018-06-29 | 2018-07-19 |  |  | MH-Wtg [14.16 h] | 6,372 | 6,372 | 003 |
| A117310 |  | Testing & calibration | 10d | 2018-08-01 | 2018-08-14 | A117300 FF, A117290 |  |  |  | -22d | 5d | MH-Wtg [7.08 h] | 3,186 |  | 003 |
|  | 13 | **B106A- Coal Storage (Deleted)** |  | 2018-08-01 | 2018-08-28 |  |  |  |  |  |  |  |  |  |  |
|  | 1 | **Civil & Structural Work** |  | 2018-08-01 | 2018-08-28 |  |  |  |  |  |  |  |  |  |  |
| A117330 |  | RCC/Civil construction work (Deleted) | 20d | 2018-08-01 | 2018-08-28 |  |  |  |  | 52163.9d |  | MH-Wtg [47.96 h] | 21,582 |  | 003 |
| A117340 |  | Structural steel erection (Deleted) | 20d | 2018-08-01 | 2018-08-28 |  |  |  |  | 52163.9d |  | MH-Wtg [53.29 h] | 23,981 |  | 003 |
| A117360 |  | Painting work (Deleted) | 5d | 2018-08-01 | 2018-08-07 |  |  |  |  | 52178.9d |  | MH-Wtg [5.33 h] | 2,399 |  | 003 |
|  | 2 | **Mechanical Erection** |  | 2018-08-01 | 2018-08-28 |  |  |  |  |  |  |  |  |  |  |
| A117370 |  | Equipment installation (Deleted) | 20d | 2018-08-01 | 2018-08-28 |  |  |  |  | 52163.9d |  | MH-Wtg [106.59 h] | 47,966 |  | 003 |
|  | 3 | **Electrical Installation** |  | 2018-08-01 | 2018-08-07 |  |  |  |  |  |  |  |  |  |  |
| A117420 |  | Cable tray installation (Deleted) | 5d | 2018-08-01 | 2018-08-07 |  |  |  |  | 52178.9d |  | MH-Wtg [9.36 h] | 4,212 |  | 003 |
| A117430 |  | Cable laying (Deleted) | 3d | 2018-08-01 | 2018-08-03 |  |  |  |  | 52180.9d |  | MH-Wtg [11.7 h] | 5,265 |  | 003 |
| A117440 |  | Installation of electrical items (Deleted) | 3d | 2018-08-01 | 2018-08-03 |  |  |  |  | 52180.9d |  | MH-Wtg [7.02 h] | 3,159 |  | 003 |
| A117450 |  | Glanding and termination (Deleted) | 2d | 2018-08-01 | 2018-08-02 |  |  |  |  | 52181.9d |  | MH-Wtg [7.02 h] | 3,159 |  | 003 |
| A117460 |  | Installation of light fittings (Deleted) | 5d | 2018-08-01 | 2018-08-07 |  |  |  |  | 52178.9d |  | MH-Wtg [4.68 h] | 2,106 |  | 003 |
| A117470 |  | Earthing work (Deleted) | 3d | 2018-08-01 | 2018-08-03 |  |  |  |  | 52180.9d |  | MH-Wtg [7.02 h] | 3,159 |  | 003 |

| ID | WBS | Activity | Duration | Start | Finish | Predecessors | Complete | Remaining | Planned start | Planned finish | Total float | Free float | Constraint | Calendar | Resources | Cost | Actual cost | UNIT DESCRIPTION |
| --- | --- | --- | --- | --- | --- | --- | --- | --- | --- | --- | --- | --- | --- | --- | --- | --- | --- | --- |
|  | 4 | **Instrument Installation** |  | 2018-08-01 | 2018-08-01 |  |  |  |  |  |  |  |  |  |  |  |  |  |
| A126190 |  | Cable tray installation (Deleted) | 1d | 2018-08-01 | 2018-08-01 |  |  |  |  |  | 52182.9d |  |  |  |  |  |  |  |
| A126200 |  | Cable laying (Deleted) | 1d | 2018-08-01 | 2018-08-01 |  |  |  |  |  | 52182.9d |  |  |  |  |  |  |  |
| A126210 |  | Installation of JBs and Air headers (Deleted) | 1d | 2018-08-01 | 2018-08-01 |  |  |  |  |  | 52182.9d |  |  |  |  |  |  |  |
| A126220 |  | Installation of instruments (Deleted) | 1d | 2018-08-01 | 2018-08-01 |  |  |  |  |  | 52182.9d |  |  |  |  |  |  |  |
| A126230 |  | Glanding and termination (Deleted) | 1d | 2018-08-01 | 2018-08-01 |  |  |  |  |  | 52182.9d |  |  |  |  |  |  |  |
| A126240 |  | Hookup of instruments (Deleted) | 1d | 2018-08-01 | 2018-08-01 |  |  |  |  |  | 52182.9d |  |  |  |  |  |  |  |
| A126250 |  | Testing & calibration (Deleted) | 1d | 2018-08-01 | 2018-08-01 |  |  |  |  |  | 52182.9d |  |  |  |  |  |  |  |
|  | 14 | **B106B- Boiler & Coal Handling** |  | 2017-12-11 | 2019-01-14 |  |  |  |  |  |  |  |  |  |  |  |  |  |
|  | 1 | **Civil & Structural Work** |  | 2017-12-11 | 2018-09-25 |  |  |  |  |  |  |  |  |  |  |  |  |  |
| A117550 |  | Piling work | 20d | 2017-12-11 A | 2018-01-02 A | 101210, 113110 FS+10d | 100% |  | 2017-12-04 | 2017-12-29 |  |  | start on or after 2017-12-01 | Monsoon | MH-Wtg [142.85 h] | 64,283 | 64,283 | 003 |
| A117570 |  | RCC/Civil construction work | 40d | 2018-01-02 A | 2018-09-25 | A117550, 101210.1 |  | 40d | 2018-03-01 | 2018-04-25 | 52143.9d |  |  |  | MH-Wtg [285.71 h] | 128,570 | 113,141 | 003 |
| A117560 |  | Equipment foundations | 25d | 2018-02-09 A | 2018-07-10 A | A117550, 101240.8 | 100% |  | 2018-04-02 | 2018-05-04 |  |  |  |  | MH-Wtg [95.24 h] | 42,858 | 42,858 | 003 |
| A117560.1 |  | Chimney foundation | 50d | 2018-02-12 A | 2018-05-05 A | 114370 FS+15d | 100% |  | 2018-03-01 | 2018-05-09 |  |  |  |  |  |  |  | 003 |
| A117580 |  | Structural steel erection | 30d | 2018-03-16 A | 2018-09-11 | A117570 FS-20d, 114020 FS-20d |  | 30d | 2018-05-03 | 2018-06-13 | 52153.9d |  |  |  | MH-Wtg [380.94 h] | 171,423 | 94,283 | 003 |
| A117600 |  | Painting work | 20d | 2018-03-20 A | 2018-08-28 | A117650 FF |  | 20d | 2018-10-08 | 2018-11-02 | 20d | 103d |  |  | MH-Wtg [47.62 h] | 21,429 | 13,929 | 003 |
| A117560.2 |  | Erection of precast chimney | 30d | 2018-07-26 A | 2018-09-11 | A117560.1 FS+10d |  | 30d | 2018-07-02 | 2018-08-10 | -20d | 63d |  |  |  |  |  | 003 |
|  | 2 | **Mechanical Erection & Piping** |  | 2018-05-10 | 2019-01-14 |  |  |  |  |  |  |  |  |  |  |  |  |  |
| A117610 |  | Equipment installation | 20d | 2018-05-10 A | 2018-08-28 | A117560, A117580 FS-20d, 114020 |  | 20d | 2018-08-31 | 2018-09-27 | -65d | 0d |  |  | MH-Wtg [285.71 h] | 128,570 | 74,570 | 003 |
| A117620 |  | Piping erection | 40d | 2018-06-20 A | 2018-09-25 | A117580, A117610 |  | 40d | 2018-08-13 | 2018-10-05 | -65d | 0d |  |  | MH-Wtg [380.94 h] | 171,423 | 47,998 | 003 |
| A117630 |  | Testing and boxup | 20d | 2018-09-12 | 2018-10-09 | A117620 FS-10d |  |  |  |  | -65d | 0d |  |  | MH-Wtg [142.85 h] | 64,283 |  | 003 |
| A117640 |  | Insulation of equipments and piping | 30d | 2018-09-26 | 2018-11-06 | A117630 FS-10d |  |  |  |  | -60d | 23d |  |  | MH-Wtg [95.24 h] | 42,858 |  | 003 |
| A117650 |  | Painting work | 20d | 2018-10-08 A | 2018-08-28 | A117630 FS-10d |  | 20d | 2018-10-08 | 2018-11-02 | 20d | 0d |  |  | MH-Wtg [47.62 h] | 21,429 |  | 003 |
| A117610.1 |  | Installation of STG package (Deleted) | 20d | 2018-12-18 | 2019-01-14 | 114020.1 |  |  |  |  | 52064.9d |  |  |  |  |  |  | 003 |

Notes:
- A117570: Explanation: Boiler-60% / Crusher-30% / Conveyer-10%

| ID | WBS | Activity | Duration | Start | Finish | Predecessors | Complete | Remaining | Planned start | Planned finish | Total float | Free float | Calendar | Resources | Cost | Actual cost | UNIT DESCRIPTION |
| --- | --- | --- | --- | --- | --- | --- | --- | --- | --- | --- | --- | --- | --- | --- | --- | --- | --- |
|  | 3 | **Electrical Installation** |  | 2018-08-29 | 2018-11-13 |  |  |  |  |  |  |  |  |  |  |  |  |
| A117660 |  | Cable tray installation | 20d | 2018-08-29 | 2018-09-25 | A117610 |  |  |  |  | -65d | 0d |  | MH-Wtg [82.37 h] | 37,067 |  | 003 |
| A117710 |  | Earthing work | 15d | 2018-08-29 | 2018-09-18 | A117610 |  |  |  |  | -25d | 58d |  | MH-Wtg [61.77 h] | 27,797 |  | 003 |
| A117670 |  | Cable laying | 20d | 2018-09-12 | 2018-10-09 | A117660 FS-10d |  |  |  |  | -65d | 0d |  | MH-Wtg [102.96 h] | 46,332 |  | 003 |
| A117680 |  | Installation of electrical items | 15d | 2018-10-03 | 2018-10-23 | A117670 FS-5d |  |  |  |  | -65d | 0d |  | MH-Wtg [61.77 h] | 27,797 |  | 003 |
| A117690 |  | Glanding and termination | 20d | 2018-10-17 | 2018-11-13 | A117680 FS-5d |  |  |  |  | -65d | 18d |  | MH-Wtg [61.77 h] | 27,797 |  | 003 |
| A117700 |  | Installation of light fittings | 15d | 2018-10-24 | 2018-11-13 | A117680 |  |  |  |  | -65d | 18d |  | MH-Wtg [41.18 h] | 18,531 |  | 003 |
|  | 4 | **Instrument Installation** |  | 2018-08-29 | 2018-11-13 |  |  |  |  |  |  |  |  |  |  |  |  |
| A117720 |  | Cable tray installation | 20d | 2018-08-29 | 2018-09-25 | A117660 SS |  |  |  |  | -60d | 0d |  | MH-Wtg [56.63 h] | 25,484 |  | 003 |
| A117750 |  | Installation of instruments | 20d | 2018-09-12 | 2018-10-09 | A117630 FF |  |  |  |  | -65d | 0d |  | MH-Wtg [42.47 h] | 19,112 |  | 003 |
| A117770 |  | Hookup of instruments | 25d | 2018-09-12 | 2018-10-16 | A117750 FF, A117630 FS-20d |  |  |  |  | -45d | 20d |  | MH-Wtg [28.31 h] | 12,740 |  | 003 |
| A117730 |  | Cable laying | 20d | 2018-09-19 | 2018-10-16 | A117720 FS-5d |  |  |  |  | -60d | 5d |  | MH-Wtg [70.78 h] | 31,851 |  | 003 |
| A117740 |  | Installation of JBs and Air headers | 10d | 2018-09-19 | 2018-10-02 | A117720 FS-5d |  |  |  |  | -50d | 15d |  | MH-Wtg [28.31 h] | 12,740 |  | 003 |
| A117760 |  | Glanding and termination | 15d | 2018-10-03 | 2018-10-23 | A117730 FF, A117740 FF, A117750 FS-5d |  |  |  |  | -65d | 0d |  | MH-Wtg [42.47 h] | 19,112 |  | 003 |
| A117780 |  | Testing & calibration | 15d | 2018-10-24 | 2018-11-13 | A117770 FF, A117760 |  |  |  |  | -65d | 18d |  | MH-Wtg [14.16 h] | 6,372 |  | 003 |
|  | 14.1 | **B106B- STG & TG Hall** |  | 2017-12-28 | 2019-05-01 |  |  |  |  |  |  |  |  |  |  |  |  |
|  | 1 | **Civil & Structural Work** |  | 2017-12-28 | 2019-01-22 |  |  |  |  |  |  |  |  |  |  |  |  |
| A126280 |  | Foundation and columns | 125d | 2017-12-28 A | 2019-01-22 | A126260 |  | 125d | 2018-01-22 | 2018-07-16 | 52058.9d |  |  | MH-Wtg [210 h] | 94,500 | 56,700 | 003 |
| A126260 |  | Piling work | 15d | 2018-01-01 A | 2018-01-25 A | 101240.1 | 100% |  | 2018-02-01 | 2018-02-21 |  |  | Monsoon | MH-Wtg [380 h] | 171,000 | 171,000 | 003 |
| A126290 |  | Plinth beams | 10d | 2018-03-22 A | 2018-08-14 | A126280 SS+10d, A126260 FS+10d |  | 10d | 2018-03-01 | 2018-03-14 | 52138.9d | 151d |  | MH-Wtg [180 h] | 81,000 | 72,900 | 003 |
| A126270 |  | Equipment foundations | 114d | 2018-03-29 A | 2019-01-07 | A126510 FF+10d |  | 114d | 2018-05-01 | 2018-10-05 | 52069.9d |  |  | MH-Wtg [120 h] | 54,000 | 24,300 | 003 |
| A126520 |  | Staircase work | 30d | 2018-04-05 A | 2018-10-29 | A126510 FF |  | 30d | 2018-08-30 | 2018-10-10 | 52059.9d | 0d |  |  |  |  | 003 |
| A126570 |  | Structural steel erection | 20d | 2018-04-10 A | 2018-08-28 | A126510 |  | 20d | 2018-09-10 | 2018-10-05 | 52123.9d | 136d |  |  |  |  | 003 |
| A126510 |  | Floor slabs | 64d | 2018-05-10 A | 2018-10-29 | A126500 SS+10d |  | 64d | 2018-07-13 | 2018-10-10 | 52059.9d | 0d |  |  |  |  | 003 |
| A126500 |  | Lintel beams | 64d | 2018-06-06 A | 2018-10-29 | A126290 FS+10d |  | 64d | 2018-06-29 | 2018-09-26 | 52119.9d |  |  |  |  |  | 003 |
| A126490 |  | Brick work & plastering | 80d | 2018-06-20 A | 2018-11-20 | A126300 |  | 80d | 2018-06-29 | 2018-10-18 | 52083.9d | 0d |  |  |  |  | 003 |
| A126300 |  | Grade slab | 10d | 2018-07-05 A | 2018-08-14 | A126290 |  | 10d | 2018-07-16 | 2018-07-27 | 52173.9d |  |  | MH-Wtg [85 h] | 38,250 | 3,825 | 003 |
| A126530 |  | Flooring work | 25d | 2018-10-02 | 2018-11-05 | A126510 FS-20d, A126520 FF+5d |  |  |  |  | 52059.9d | 0d |  |  |  |  | 003 |
| A126540 |  | Plumbing & sanitary work | 15d | 2018-10-30 | 2018-11-19 | A126530 FS-5d |  |  |  |  | 52104.9d |  |  |  |  |  | 003 |
| A126550 |  | Doors, windows and handrails | 15d | 2018-11-06 | 2018-11-26 | A126530 |  |  |  |  | 52099.9d |  |  |  |  |  | 003 |
| A126560 |  | Painting work | 20d | 2018-11-21 | 2018-12-18 | A126490 |  |  |  |  | 52083.9d |  |  |  |  |  | 003 |

| ID | WBS | Activity | Duration | Start | Finish | Predecessors | Complete | Planned start | Planned finish | Total float | Free float | Resources | Cost | Actual cost | UNIT DESCRIPTION |
| --- | --- | --- | --- | --- | --- | --- | --- | --- | --- | --- | --- | --- | --- | --- | --- |
|  | 2 | **Mechanical Erection & Piping** |  | 2018-12-18 | 2019-05-01 |  |  |  |  |  |  |  |  |  |  |
| A126310 |  | Equipment installation | 62d | 2018-12-18 | 2019-03-13 | A126270 SS+40d, 114020.1, A126570 FF+5d |  |  |  | 51987.9d | 0d | MH-Wtg [220 h] | 99,000 |  | 003 |
| A126320 |  | Piping erection | 20d | 2019-03-14 | 2019-04-10 | A126290, A126310 |  |  |  | 51987.9d | 0d | MH-Wtg [120 h] | 54,000 |  | 003 |
| A126330 |  | Testing and boxup | 15d | 2019-03-28 | 2019-04-17 | A126320 FS-10d |  |  |  | 51987.9d | 0d | MH-Wtg [85 h] | 38,250 |  | 003 |
| A126340 |  | Insulation of equipments and piping | 20d | 2019-04-04 | 2019-05-01 | A126330 FS-10d |  |  |  | 51987.9d |  | MH-Wtg [60 h] | 27,000 |  | 003 |
| A126350 |  | Painting work | 15d | 2019-04-04 | 2019-04-24 | A126330 FS-10d |  |  |  | 51992.9d |  | MH-Wtg [40 h] | 18,000 |  | 003 |
|  | 3 | **Electrical Installation** |  | 2018-11-06 | 2019-01-21 |  |  |  |  |  |  |  |  |  |  |
| A126380 |  | Installation of electrical items | 20d | 2018-11-06 | 2018-12-03 | A126530 |  |  |  | 52059.9d | 0d | MH-Wtg [180 h] | 81,000 |  | 003 |
| A126360 |  | Cable tray installation | 10d | 2018-11-20 | 2018-12-03 | A126380 FS-10d |  |  |  | 52059.9d | 0d | MH-Wtg [120 h] | 54,000 |  | 003 |
| A126370 |  | Cable laying | 10d | 2018-12-04 | 2018-12-17 | A126360 |  |  |  | 52059.9d | 0d | MH-Wtg [160 h] | 72,000 |  | 003 |
| A126410 |  | Earthing work | 10d | 2018-12-04 | 2018-12-17 | A126380 |  |  |  | 52084.9d |  | MH-Wtg [50 h] | 22,500 |  | 003 |
| A126390 |  | Glanding and termination | 15d | 2018-12-18 | 2019-01-07 | A126370 |  |  |  | 52059.9d | 0d | MH-Wtg [110 h] | 49,500 |  | 003 |
| A126400 |  | Installation of light fittings | 10d | 2019-01-08 | 2019-01-21 | A126390 |  |  |  | 52059.9d |  | MH-Wtg [60 h] | 27,000 |  | 003 |
|  | 4 | **Instrument Installation** |  | 2018-11-20 | 2019-05-01 |  |  |  |  |  |  |  |  |  |  |
| A126420 |  | Cable tray installation | 5d | 2018-11-20 | 2018-11-26 | A126360 SS |  |  |  | 52091.9d | 0d | MH-Wtg [40 h] | 18,000 |  | 003 |
| A126440 |  | Installation of JBs and Air headers | 2d | 2018-11-23 | 2018-11-26 | A126420 FF |  |  |  | 52094.9d | 107d | MH-Wtg [10 h] | 4,500 |  | 003 |
| A126430 |  | Cable laying | 3d | 2018-11-27 | 2018-11-29 | A126420 |  |  |  | 52091.9d | 104d | MH-Wtg [60 h] | 27,000 |  | 003 |
| A126450 |  | Installation of instruments | 8d | 2019-04-08 | 2019-04-17 | A126330 FF |  |  |  | 51987.9d | 0d | MH-Wtg [30 h] | 13,500 |  | 003 |
| A126460 |  | Glanding and termination | 5d | 2019-04-18 | 2019-04-24 | A126430 FF, A126440 FF, A126450 |  |  |  | 51987.9d | 0d | MH-Wtg [25 h] | 11,250 |  | 003 |
| A126470 |  | Hookup of instruments | 5d | 2019-04-18 | 2019-04-24 | A126450 |  |  |  | 51992.9d | 5d | MH-Wtg [20 h] | 9,000 |  | 003 |
| A126480 |  | Testing & calibration | 5d | 2019-04-25 | 2019-05-01 | A126470 FF, A126460 |  |  |  | 51987.9d |  | MH-Wtg [15 h] | 6,750 |  | 003 |
|  | 15 | **B106D- Condensate Storage, Pumps** |  | 2018-02-03 | 2018-12-07 |  |  |  |  |  |  |  |  |  |  |
|  | 1 | **Civil & Structural Work** |  | 2018-02-03 | 2018-10-30 |  |  |  |  |  |  |  |  |  |  |
| A117790 |  | Equipment foundations | 30d | 2018-02-03 A | 2018-06-21 A | 101280, A119400 FS-15d | 100% | 2018-02-28 | 2018-04-10 |  |  | MH-Wtg [190.47 h] | 85,712 | 85,712 | 003 |
| A117800 |  | RCC/Civil construction work | 20d | 2018-06-11 A | 2018-06-20 A | A117790 | 100% | 2018-07-13 | 2018-08-09 |  |  | MH-Wtg [166.66 h] | 74,997 | 74,997 | 003 |
| A117810 |  | Structural steel erection (Deleted) | 15d | 2018-08-01 | 2018-08-21 | A117800 FS-44d |  |  |  | -5d | 78d | MH-Wtg |  |  | 003 |
| A117830 |  | Painting work (Deleted) | 10d | 2018-10-17 | 2018-10-30 | A117860 SS |  |  |  | -25d | 58d | MH-Wtg |  |  | 003 |

| ID | WBS | Activity | Duration | Start | Finish | Predecessors | Complete | Remaining | Planned start | Planned finish | Total float | Free float | Constraint | Calendar | Resources | Cost | Actual cost | UNIT DESCRIPTION | user_start_date1 | user_end_date1 |
| --- | --- | --- | --- | --- | --- | --- | --- | --- | --- | --- | --- | --- | --- | --- | --- | --- | --- | --- | --- | --- |
|  | 2 | **Mechanical Erection & Piping** |  | 2018-04-16 | 2018-11-27 |  |  |  |  |  |  |  |  |  |  |  |  |  |  |  |
| A117840 |  | Equipment installation | 40d | 2018-04-16 A | 2018-09-25 | A117790 |  | 40d | 2018-06-12 | 2018-08-06 | 52143.9d |  |  |  | MH-Wtg [142.85 h] | 64,283 | 61,068 | 003 |  |  |
| A117850 |  | Piping erection | 25d | 2018-07-20 A | 2018-10-30 | A117840, 119590.99.4 FF+10d, 114780 SS+10d, 115920 FF+5d |  | 25d | 2018-08-27 | 2018-09-28 | -83d | 0d |  |  | MH-Wtg [190.47 h] | 85,712 | 8,571 | 003 |  |  |
| A117860 |  | Testing and boxup | 15d | 2018-10-17 | 2018-11-06 | A117850 FS-10d |  |  |  |  | -78d | 0d |  |  | MH-Wtg [71.43 h] | 32,144 |  | 003 |  |  |
| A117870 |  | Insulation of equipments and piping | 15d | 2018-11-07 | 2018-11-27 | A117860 |  |  |  |  | -75d | 8d |  |  | MH-Wtg [47.62 h] | 21,429 |  | 003 |  |  |
| A117880 |  | Painting work | 10d | 2018-11-07 | 2018-11-20 | A117860 |  |  |  |  | -40d | 43d |  |  | MH-Wtg [23.81 h] | 10,715 |  | 003 |  |  |
|  | 3 | **Electrical Installation** |  | 2018-10-17 | 2018-12-07 |  |  |  |  |  |  |  |  |  |  |  |  |  |  |  |
| A117890 |  | Cable tray installation | 15d | 2018-10-17 | 2018-11-06 | A117850 FS-10d |  |  |  |  | -83d | 0d |  |  | MH-Wtg [41.18 h] | 18,531 |  | 003 |  |  |
| A117940 |  | Earthing work | 8d | 2018-10-24 | 2018-11-02 | A117890 FS-10d |  |  |  |  | -58d | 25d |  |  | MH-Wtg [30.89 h] | 13,901 |  | 003 |  |  |
| A117900 |  | Cable laying | 10d | 2018-10-31 | 2018-11-13 | A117890 FS-5d |  |  |  |  | -83d | 0d |  |  | MH-Wtg [51.48 h] | 23,166 |  | 003 |  |  |
| A117910 |  | Installation of electrical items | 8d | 2018-11-14 | 2018-11-23 | A117900 |  |  |  |  | -83d | 0d |  |  | MH-Wtg [30.89 h] | 13,901 |  | 003 |  |  |
| A117920 |  | Glanding and termination | 10d | 2018-11-26 | 2018-12-07 | A117910 |  |  |  |  | -83d | 0d |  |  | MH-Wtg [30.89 h] | 13,901 |  | 003 |  |  |
| A117930 |  | Installation of light fittings | 5d | 2018-11-26 | 2018-11-30 | A117910 |  |  |  |  | -78d | 5d |  |  | MH-Wtg [20.59 h] | 9,266 |  | 003 |  |  |
|  | 4 | **Instrument Installation** |  | 2018-10-24 | 2018-11-30 |  |  |  |  |  |  |  |  |  |  |  |  |  |  |  |
| A117950 |  | Cable tray installation | 15d | 2018-10-24 | 2018-11-13 | A117890 FS-10d |  |  |  |  | -75d | 0d |  |  | MH-Wtg [28.31 h] | 12,740 |  | 003 |  |  |
| A118000 |  | Hookup of instruments | 10d | 2018-10-31 | 2018-11-13 | A117980 FF, A117860 FS-5d |  |  |  |  | -65d | 13d |  |  | MH-Wtg [14.16 h] | 6,372 |  | 003 |  |  |
| A117960 |  | Cable laying | 10d | 2018-11-07 | 2018-11-20 | A117950 FS-5d |  |  |  |  | -75d | 3d |  |  | MH-Wtg [35.39 h] | 15,926 |  | 003 |  |  |
| A117980 |  | Installation of instruments | 5d | 2018-11-07 | 2018-11-13 | A117860 |  |  |  |  | -78d | 0d |  |  | MH-Wtg [21.23 h] | 9,554 |  | 003 |  |  |
| A117970 |  | Installation of JBs and Air headers | 3d | 2018-11-14 | 2018-11-16 | A117950 |  |  |  |  | -73d | 5d |  |  | MH-Wtg [14.16 h] | 6,372 |  | 003 |  |  |
| A117990 |  | Glanding and termination | 8d | 2018-11-14 | 2018-11-23 | A117960 FF, A117970 FF, A117980 |  |  |  |  | -78d | 0d |  |  | MH-Wtg [21.23 h] | 9,554 |  | 003 |  |  |
| A118010 |  | Testing & calibration | 5d | 2018-11-26 | 2018-11-30 | A118000 FF, A117990 |  |  |  |  | -78d | 5d |  |  | MH-Wtg [7.08 h] | 3,186 |  | 003 |  |  |
|  | 16 | **B107A- Raw Water Storage** |  | 2017-10-26 | 2019-01-21 |  |  |  |  |  |  |  |  |  |  |  |  |  |  |  |
|  | 1 | **Civil & Structural Work** |  | 2017-10-26 | 2018-10-29 |  |  |  |  |  |  |  |  |  |  |  |  |  |  |  |
| A118030 |  | RCC/Civil construction work | 85d | 2017-10-26 A | 2018-10-29 | 101360, 113112.1 FS+10d | 25% | 64d | 2017-10-05 | 2018-02-01 | -126d | 0d | start on or after 2017-10-05 | Monsoon | MH-Wtg [952.36 h] | 428,562 | 419,991 | 003 | 2017-11-06 | 2018-03-31 |

| ID | WBS | Activity | Duration | Start | Finish | Predecessors | Complete | Planned start | Planned finish | Total float | Free float | Constraint | Calendar | Resources | Cost | Actual cost | UNIT DESCRIPTION | user_start_date1 | user_end_date1 |
| --- | --- | --- | --- | --- | --- | --- | --- | --- | --- | --- | --- | --- | --- | --- | --- | --- | --- | --- | --- |
|  | 2 | **Mechanical Erection & Piping** |  | 2018-10-30 | 2019-01-07 |  |  |  |  |  |  |  |  |  |  |  |  |  |  |
| A118079 |  | Equipment installation | 10d | 2018-10-30 | 2018-11-12 | 114720, A118030 |  |  |  | -126d | 0d |  |  |  |  |  | 003 |  |  |
| A118080 |  | Piping erection | 20d | 2018-11-13 | 2018-12-10 | 106460, A118079, 110810 |  |  |  | -126d | 0d |  |  | MH-Wtg [761.88 h] | 342,846 |  | 003 |  |  |
| A118090 |  | Testing and boxup | 15d | 2018-12-04 | 2018-12-24 | A118080 FS-5d |  |  |  | -126d | 0d |  |  | MH-Wtg [142.85 h] | 64,283 |  | 003 |  |  |
| A118110 |  | Painting work | 10d | 2018-12-25 | 2019-01-07 | A118090 |  |  |  | -106d | 20d |  |  | MH-Wtg [47.62 h] | 21,429 |  | 003 |  |  |
|  | 3 | **Electrical Installation** |  | 2018-11-13 | 2019-01-21 |  |  |  |  |  |  |  |  |  |  |  |  |  |  |
| A118120 |  | Cable tray installation | 15d | 2018-11-13 | 2018-12-03 | A118079 |  |  |  | -126d | 0d |  |  | MH-Wtg [102.96 h] | 46,332 |  | 003 |  |  |
| A118170 |  | Earthing work | 10d | 2018-11-13 | 2018-11-26 | A118079 |  |  |  | 52099.9d |  |  |  |  |  |  | 003 |  |  |
| A118130 |  | Cable laying | 10d | 2018-12-04 | 2018-12-17 | A118120 |  |  |  | -126d | 0d |  |  | MH-Wtg [102.96 h] | 46,332 |  | 003 |  |  |
| A118131 |  | Installation of electrical items | 10d | 2018-12-18 | 2018-12-31 | A118130 |  |  |  | -126d | 0d |  |  |  |  |  | 003 |  |  |
| A118150 |  | Glanding and termination | 15d | 2019-01-01 | 2019-01-21 | A118131 |  |  |  | -126d | 0d |  |  | MH-Wtg [102.96 h] | 46,332 |  | 003 |  |  |
| A118160 |  | Installation of light fittings | 10d | 2019-01-01 | 2019-01-14 | A118131 |  |  |  | 52064.9d |  |  |  | MH-Wtg [102.96 h] | 46,332 |  | 003 |  |  |
|  | 4 | **Instrument Installation** |  | 2018-11-13 | 2019-01-21 |  |  |  |  |  |  |  |  |  |  |  |  |  |  |
| A118180 |  | Cable tray installation | 15d | 2018-11-13 | 2018-12-03 | A118120 SS |  |  |  | -111d | 0d |  |  | MH-Wtg [62.92 h] | 28,314 |  | 003 |  |  |
| A118190 |  | Cable laying | 10d | 2018-12-04 | 2018-12-17 | A118180 |  |  |  | -111d | 15d |  |  | MH-Wtg [78.65 h] | 35,393 |  | 003 |  |  |
| A118210 |  | Installation of instruments | 15d | 2018-12-04 | 2018-12-24 | A118090 FF |  |  |  | -126d | 0d |  |  | MH-Wtg [47 h] | 21,150 |  | 003 |  |  |
| A118220 |  | Glanding and termination | 10d | 2018-12-25 | 2019-01-07 | A118190 FF, A118210 |  |  |  | -126d | 0d |  |  | MH-Wtg [47.19 h] | 21,236 |  | 003 |  |  |
| A118230 |  | Hookup of instruments | 10d | 2018-12-25 | 2019-01-07 | A118210 FF, A118090 |  |  |  | -116d | 10d |  |  | MH-Wtg [31.46 h] | 14,157 |  | 003 |  |  |
| A118240 |  | Testing & calibration | 10d | 2019-01-08 | 2019-01-21 | A118230 FF, A118220 |  |  |  | -126d | 0d |  |  | MH-Wtg [15.73 h] | 7,079 |  | 003 |  |  |
|  | 17 | **B107B- Raw Water Treatment Plant** |  | 2017-12-26 | 2018-08-21 |  |  |  |  |  |  |  |  |  |  |  |  |  |  |
|  | 1 | **Civil & Structural Work** |  | 2017-12-26 | 2018-07-12 |  |  |  |  |  |  |  |  |  |  |  |  |  |  |
| A118260 |  | RCC/Civil construction work | 20d | 2017-12-26 A | 2018-07-12 A | A118250 FS-15d | 100% | 2018-02-21 | 2018-03-20 |  |  |  |  | MH-Wtg [857.12 h] | 385,704 | 385,704 | 003 | 2018-02-20 | 2018-03-20 |
| A118250 |  | Equipment foundations | 36d | 2018-02-02 A | 2018-05-12 A | A126060 | 100% | 2018-02-01 | 2018-03-22 |  |  | start on or after 2018-01-20 | Monsoon | MH-Wtg [571.41 h] | 257,135 | 257,135 | 003 | 2018-01-20 | 2018-03-10 |
|  | 2 | **Mechanical Erection & Piping** |  | 2018-04-12 | 2018-08-17 |  |  |  |  |  |  |  |  |  |  |  |  |  |  |
| A118300 |  | Equipment installation | 20d | 2018-04-12 A | 2018-07-04 A | A118250, 113810 | 100% | 2018-06-20 | 2018-07-17 |  |  |  |  | MH-Wtg [428.56 h] | 192,852 | 192,852 | 003 |  |  |
| A118310 |  | Piping erection | 30d | 2018-04-26 A | 2018-08-10 A | A118300 | 100% | 2018-07-18 | 2018-08-28 |  |  |  |  | MH-Wtg [714.27 h] | 321,422 | 321,422 | 003 |  |  |
| A118340 |  | Painting work | 10d | 2018-04-30 A | 2018-07-28 A | A118320 | 100% | 2018-08-06 | 2018-08-17 |  |  |  |  | MH-Wtg [71.43 h] | 32,144 | 32,144 | 003 |  |  |
| A118320 |  | Testing and boxup | 25d | 2018-05-18 A | 2018-08-17 A | A118310 FS-10d | 100% | 2018-06-29 | 2018-08-02 |  |  |  |  | MH-Wtg [214.28 h] | 96,426 | 96,426 | 003 |  |  |

| ID | WBS | Activity | Duration | Start | Finish | Predecessors | Complete | Planned start | Planned finish | Total float | Free float | Resources | Cost | Actual cost | UNIT DESCRIPTION |
| --- | --- | --- | --- | --- | --- | --- | --- | --- | --- | --- | --- | --- | --- | --- | --- |
|  | 3 | **Electrical Installation** |  | 2018-04-13 | 2018-08-21 |  |  |  |  |  |  |  |  |  |  |
| A118400 |  | Earthing work | 10d | 2018-04-13 A | 2018-05-17 A | A118300 | 100% | 2018-07-18 | 2018-07-31 |  |  | MH-Wtg [92.66 h] | 41,697 | 41,697 | 003 |
| A118350 |  | Cable tray installation | 15d | 2018-05-18 A | 2018-07-04 A | A118300 | 100% | 2018-06-29 | 2018-07-19 |  |  | MH-Wtg [123.55 h] | 55,598 | 55,598 | 003 |
| A118370 |  | Installation of electrical items | 15d | 2018-05-24 A | 2018-07-13 A | A118360 FS-5d | 100% | 2018-07-27 | 2018-08-16 |  |  | MH-Wtg [92.66 h] | 41,697 | 41,697 | 003 |
| A118360 |  | Cable laying | 14.29d | 2018-08-01 | 2018-08-21 | A118350 |  |  |  | 52169.6d |  | MH-Wtg [154.44 h] | 69,498 |  | 003 |
| A118380 |  | Glanding and termination | 12.5d | 2018-08-01 | 2018-08-17 | A118370 |  |  |  | -11.5d | 51.5d | MH-Wtg [92.66 h] | 41,697 |  | 003 |
| A118390 |  | Installation of light fittings | 10d | 2018-08-01 | 2018-08-14 | A118370 |  |  |  | -9d | 54d | MH-Wtg [61.77 h] | 27,797 |  | 003 |
|  | 4 | **Instrument Installation** |  | 2018-05-18 | 2018-08-20 |  |  |  |  |  |  |  |  |  |  |
| A118410 |  | Cable tray installation | 15d | 2018-05-18 A | 2018-07-04 A | A118350 SS | 100% | 2018-06-29 | 2018-07-19 |  |  | MH-Wtg [84.94 h] | 38,223 | 38,223 | 003 |
| A118440 |  | Installation of instruments | 15d | 2018-05-23 A | 2018-07-10 A | A118320 FF | 100% | 2018-07-13 | 2018-08-02 |  |  | MH-Wtg [63.7 h] | 28,665 | 28,665 | 003 |
| A118420 |  | Cable laying | 10d | 2018-05-25 A | 2018-07-06 A | A118410 | 100% | 2018-07-23 | 2018-08-03 |  |  | MH-Wtg [106.17 h] | 47,777 | 47,777 | 003 |
| A118430 |  | Installation of JBs and Air headers | 5d | 2018-07-05 A | 2018-07-07 A | A118410 | 100% | 2018-07-23 | 2018-07-27 |  |  | MH-Wtg [42.47 h] | 19,112 | 19,112 | 003 |
| A118450 |  | Glanding and termination | 10d | 2018-07-09 A | 2018-08-20 A | A118420 FF, A118430 FF, A118440 | 100% | 2018-08-06 | 2018-08-17 |  |  | MH-Wtg [63.7 h] | 28,665 | 28,665 | 003 |
| A118460 |  | Hookup of instruments | 10d | 2018-07-16 A | 2018-07-25 A | A118440 FF, A118320 | 100% | 2018-08-06 | 2018-08-17 |  |  | MH-Wtg [42.47 h] | 19,112 | 19,112 | 003 |
| A118470 |  | Testing & calibration | 10d | 2018-08-01 | 2018-08-14 | A118460 FF, A118450 |  |  |  | -9d | 54d | MH-Wtg [21.23 h] | 9,554 |  | 003 |
|  | 55 | **B107C- Pump House** |  | 2018-02-15 | 2019-07-10 |  |  |  |  |  |  |  |  |  |  |
|  | 1 | **Civil & Structural Work** |  | 2018-02-15 | 2018-06-20 |  |  |  |  |  |  |  |  |  |  |
| A118520 |  | Painting work | 10d | 2018-02-15 A | 2018-06-05 A | A118490 | 100% | 2018-07-02 | 2018-07-13 |  |  | MH-Wtg [95.24 h] | 42,858 | 42,858 | 003 |
| A118500 |  | Structural steel erection | 15d | 2018-02-24 A | 2018-06-20 A | 113740 FF-10d | 100% | 2018-04-09 | 2018-04-30 |  |  |  |  |  | 003 |
| A118490 |  | RCC/Civil construction work | 40d | 2018-03-05 A | 2018-06-12 A | A118500 SF | 100% | 2018-03-01 | 2018-04-25 |  |  | MH-Wtg [471 h] | 211,950 | 211,950 | 003 |
| A118480 |  | Equipment foundations | 15d | 2018-03-07 A | 2018-03-14 A | A118490 FF | 100% | 2018-04-05 | 2018-04-25 |  |  | MH-Wtg [285.71 h] | 128,570 | 128,570 | 003 |
|  | 2 | **Mechanical Erection & Piping** |  | 2018-05-04 | 2019-07-10 |  |  |  |  |  |  |  |  |  |  |
| A118530 |  | Equipment installation | 25d | 2018-05-04 A | 2018-06-30 A | A118480, 113740, A118500 | 100% | 2018-08-14 | 2018-09-17 |  |  | MH-Wtg [220 h] | 99,000 | 99,000 | 003 |
| A118540 |  | Piping erection | 30d | 2018-05-10 A | 2019-07-10 A | A118530 | 100% | 2018-09-18 | 2018-10-29 |  |  | MH-Wtg [340 h] | 153,000 | 153,000 | 003 |
| A118570 |  | Painting work | 15d | 2018-05-22 A | 2018-06-14 A | A118550 FS-5d | 100% | 2018-08-20 | 2018-09-07 |  |  | MH-Wtg [47.62 h] | 21,429 | 21,429 | 003 |
| A118550 |  | Testing and boxup | 20d | 2018-06-27 A | 2018-07-18 A | A118540 FS-10d | 100% | 2018-07-30 | 2018-08-24 |  |  | MH-Wtg [120 h] | 54,000 | 54,000 | 003 |

| ID | WBS | Activity | Duration | Start | Finish | Predecessors | Complete | Remaining | Planned start | Planned finish | Total float | Free float | Calendar | Resources | Cost | Actual cost | UNIT DESCRIPTION | user_start_date1 | user_end_date1 |
| --- | --- | --- | --- | --- | --- | --- | --- | --- | --- | --- | --- | --- | --- | --- | --- | --- | --- | --- | --- |
|  | 3 | **Electrical Installation** |  | 2018-06-12 | 2018-09-04 |  |  |  |  |  |  |  |  |  |  |  |  |  |  |
| A118580 |  | Cable tray installation | 15d | 2018-06-12 A | 2018-08-21 | A118530 |  | 15d | 2018-08-06 | 2018-08-24 | 52168.9d |  |  | MH-Wtg [60 h] | 27,000 | 8,100 | 003 |  |  |
| A118590 |  | Cable laying | 15d | 2018-06-20 A | 2018-08-21 | A118580 FS-5d |  | 15d | 2018-08-20 | 2018-09-07 | 52168.9d |  |  | MH-Wtg [80 h] | 36,000 | 7,200 | 003 |  |  |
| A118600 |  | Installation of electrical items | 15d | 2018-06-23 A | 2018-08-21 | A118590 FS-10d, 117890 |  | 15d | 2018-09-17 | 2018-10-05 | -13d | 0d |  | MH-Wtg [45 h] | 20,250 | 4,050 | 003 |  |  |
| A118610 |  | Glanding and termination | 10d | 2018-06-26 A | 2018-08-14 | A118600 FS-5d |  | 10d | 2018-10-01 | 2018-10-12 | 2d | 476.67d |  | MH-Wtg [40 h] | 18,000 | 3,600 | 003 |  |  |
| A118630 |  | Earthing work | 15d | 2018-07-10 A | 2018-07-26 A | A118580 FS-10d | 100% |  | 2018-08-13 | 2018-08-31 |  |  |  | MH-Wtg [30 h] | 13,500 | 13,500 | 003 |  |  |
| A118620 |  | Installation of light fittings | 10d | 2018-08-22 | 2018-09-04 | A118600 |  |  |  |  | -13d | 52148.9d |  | MH-Wtg [30 h] | 13,500 |  | 003 |  |  |
|  | 4 | **Instrument Installation** |  | 2018-06-21 | 2018-09-18 |  |  |  |  |  |  |  |  |  |  |  |  |  |  |
| A118640 |  | Cable tray installation | 20d | 2018-06-21 A | 2018-08-28 | A118580 SS |  | 20d | 2018-08-06 | 2018-08-31 | -23d | 0d |  | MH-Wtg [60 h] | 27,000 | 8,100 | 003 |  |  |
| A118650 |  | Cable laying | 20d | 2018-06-26 A | 2018-08-28 | A118640 FS-5d |  | 20d | 2018-08-27 | 2018-09-21 | -18d | 5d |  | MH-Wtg [80 h] | 36,000 | 7,200 | 003 |  |  |
| A118670 |  | Installation of instruments | 15d | 2018-08-01 | 2018-08-21 | A118550 FF |  |  |  |  | -23d | 0d |  | MH-Wtg [20 h] | 9,000 |  | 003 |  |  |
| A118690 |  | Hookup of instruments | 15d | 2018-08-01 | 2018-08-21 | A118670 FF, A118550 FS-5d |  |  |  |  | -3d | 20d |  | MH-Wtg [25 h] | 11,250 |  | 003 |  |  |
| A118680 |  | Glanding and termination | 20d | 2018-08-08 | 2018-09-04 | A118650 FF, A118660 FF, A118670 FS-10d |  |  |  |  | -23d | 0d |  | MH-Wtg [30 h] | 13,500 |  | 003 |  |  |
| A118660 |  | Installation of JBs and Air headers | 10d | 2018-08-22 | 2018-09-04 | A118640 FS-5d |  |  |  |  | -23d | 0d |  | MH-Wtg [15 h] | 6,750 |  | 003 |  |  |
| A118700 |  | Testing & calibration | 10d | 2018-09-05 | 2018-09-18 | A118690 FF, A118680 |  |  |  |  | -23d | 52138.9d |  | MH-Wtg [10 h] | 4,500 |  | 003 |  |  |
|  | 18 | **B108A- Fire Water Storage** |  | 2017-10-26 | 2018-10-29 |  |  |  |  |  |  |  |  |  |  |  |  |  |  |
|  | 1 | **Civil & Structural Work** |  | 2017-10-26 | 2018-10-29 |  |  |  |  |  |  |  |  |  |  |  |  |  |  |
| A118720 |  | RCC/Civil construction work | 60d | 2017-10-26 A | 2018-10-29 | A118030 FF |  | 60d | 2017-11-09 | 2018-02-01 | -52d | 52109.9d |  | MH-Wtg [1299.84 h] | 584,928 | 573,229 | 003 | 2017-11-06 | 2018-03-31 |
|  | 19 | **B108B- Treated Water Storage** |  | 2017-10-26 | 2018-10-29 |  |  |  |  |  |  |  |  |  |  |  |  |  |  |
|  | 1 | **Civil & Structural Work** |  | 2017-10-26 | 2018-10-29 |  |  |  |  |  |  |  |  |  |  |  |  |  |  |
| A118950 |  | RCC/Civil construction work | 60d | 2017-10-26 A | 2018-10-29 | A118030 FF |  | 60d | 2017-11-09 | 2018-02-01 | -63d | 0d |  | MH-Wtg [1299.84 h] | 584,928 | 573,229 | 003 | 2017-11-06 | 2018-03-31 |
|  | 20 | **B108C- DM plant** |  | 2017-12-01 | 2049-05-15 |  |  |  |  |  |  |  |  |  |  |  |  |  |  |
|  | 1 | **Civil & Structural Work** |  | 2017-12-01 | 2049-05-15 |  |  |  |  |  |  |  |  |  |  |  |  |  |  |
| A119180 |  | RCC/Civil construction work | 20d | 2017-12-01 A | 2049-05-15 A | A119170 | 100% |  | 2018-01-05 | 2018-02-02 |  |  |  | MH-Wtg [214.28 h] | 96,426 | 96,426 | 003 | 2017-12-25 | 2018-03-15 |
| A119170 |  | Equipment foundations | 40d | 2018-02-17 A | 2018-03-05 A | 101480 | 100% |  | 2018-03-01 | 2018-04-25 |  |  | Monsoon | MH-Wtg [357.13 h] | 160,709 | 160,709 | 003 | 2017-12-15 | 2018-01-31 |
| A119190 |  | Structural steel erection | 20d | 2018-04-10 A | 2018-05-18 A | A119180 FS-9d | 100% |  | 2049-07-19 | 2049-08-16 |  |  |  | MH-Wtg [107.14 h] | 48,213 | 48,213 | 003 | 2018-01-15 | 2018-03-31 |
| A119210 |  | Painting work | 44d | 2018-05-24 A | 2018-07-20 A | A119240 SS | 100% |  | 2018-07-06 | 2018-09-05 |  |  |  | MH-Wtg [35.71 h] | 16,070 | 16,070 | 003 | 2018-03-31 | 2018-04-30 |

| ID | WBS | Activity | Duration | Start | Finish | Predecessors | Complete | Remaining | Planned start | Planned finish | Total float | Free float | Resources | Cost | Actual cost | UNIT DESCRIPTION | user_end_date1 |
| --- | --- | --- | --- | --- | --- | --- | --- | --- | --- | --- | --- | --- | --- | --- | --- | --- | --- |
|  | 2 | **Mechanical Erection & Piping** |  | 2018-03-08 | 2018-07-28 |  |  |  |  |  |  |  |  |  |  |  |  |
| A119220 |  | Equipment installation | 25d | 2018-03-08 A | 2018-05-19 A | A119170, 113950, A119190 | 100% |  | 2018-05-30 | 2018-07-03 |  |  | MH-Wtg [214.28 h] | 96,426 | 96,426 | 003 |  |
| A119230 |  | Piping erection | 40d | 2018-03-13 A | 2018-06-26 A | A119220 FS-15d | 100% |  | 2018-06-13 | 2018-08-07 |  |  | MH-Wtg [357.13 h] | 160,709 | 160,709 | 003 |  |
| A119240 |  | Testing and boxup | 25d | 2018-05-15 A | 2018-07-28 A | A119230 FS-15d | 100% |  | 2018-07-06 | 2018-08-09 |  |  | MH-Wtg [107.14 h] | 48,213 | 48,213 | 003 |  |
| A119260 |  | Painting work | 15d | 2018-05-24 A | 2018-07-25 A | A119240 FS-10d | 100% |  | 2018-07-27 | 2018-08-16 |  |  | MH-Wtg [35.71 h] | 16,070 | 16,070 | 003 |  |
|  | 3 | **Electrical Installation** |  | 2018-04-28 | 2018-08-14 |  |  |  |  |  |  |  |  |  |  |  |  |
| A119320 |  | Earthing work | 10d | 2018-04-28 A | 2018-05-11 A | A119220 | 100% |  | 2018-07-06 | 2018-07-19 |  |  | MH-Wtg [46.33 h] | 20,849 | 20,849 | 003 |  |
| A119270 |  | Cable tray installation | 20d | 2018-05-10 A | 2018-05-18 A | A119220 | 100% |  | 2018-07-06 | 2018-08-02 |  |  | MH-Wtg [61.77 h] | 27,797 | 27,797 | 003 |  |
| A119290 |  | Installation of electrical items | 10d | 2018-05-10 A | 2018-05-20 A | A119280 FS-5d | 100% |  | 2018-08-10 | 2018-08-23 |  |  | MH-Wtg [46.33 h] | 20,849 | 20,849 | 003 |  |
| A119280 |  | Cable laying | 15d | 2018-05-15 A | 2018-05-18 A | A119270 FS-5d | 100% |  | 2018-07-27 | 2018-08-16 |  |  | MH-Wtg [77.22 h] | 34,749 | 34,749 | 003 |  |
| A119300 |  | Glanding and termination | 15d | 2018-05-17 A | 2018-07-21 A | A119290 FS-5d | 100% |  | 2018-08-17 | 2018-09-06 |  |  | MH-Wtg [46.33 h] | 20,849 | 20,849 | 003 |  |
| A119310 |  | Installation of light fittings | 10d | 2018-08-01 | 2018-08-14 | A119290 |  |  |  |  | -6d | 33d | MH-Wtg [30.89 h] | 13,901 |  | 003 |  |
|  | 4 | **Instrument Installation** |  | 2018-05-10 | 2018-08-14 |  |  |  |  |  |  |  |  |  |  |  |  |
| A119330 |  | Cable tray installation | 20d | 2018-05-10 A | 2018-05-18 A | A119270 SS | 100% |  | 2018-07-06 | 2018-08-02 |  |  | MH-Wtg [42.47 h] | 19,112 | 19,112 | 003 |  |
| A119340 |  | Cable laying | 15d | 2018-05-15 A | 2018-05-18 A | A119330 FS-5d | 100% |  | 2018-07-27 | 2018-08-16 |  |  | MH-Wtg [53.09 h] | 23,891 | 23,891 | 003 |  |
| A119350 |  | Installation of JBs and Air headers | 10d | 2018-05-15 A | 2018-05-15 A | A119330 FS-5d | 100% |  | 2018-07-27 | 2018-08-09 |  |  | MH-Wtg [21.23 h] | 9,554 | 9,554 | 003 |  |
| A119360 |  | Installation of instruments | 15d | 2018-05-16 A | 2018-07-20 A | A119240 FF | 100% |  | 2018-07-20 | 2018-08-09 |  |  | MH-Wtg [31.85 h] | 14,333 | 14,333 | 003 |  |
| A119370 |  | Glanding and termination | 20d | 2018-05-16 A | 2018-07-25 A | A119340 FF, A119350 FF, A119360 FS-10d | 100% |  | 2018-07-27 | 2018-08-23 |  |  | MH-Wtg [31.85 h] | 14,333 | 14,333 | 003 |  |
| A119380 |  | Hookup of instruments | 15d | 2018-05-21 A | 2018-07-28 A | A119360 FF, A119240 FS-10d | 100% |  | 2018-07-27 | 2018-08-16 |  |  | MH-Wtg [21.23 h] | 9,554 | 9,554 | 003 |  |
| A119390 |  | Testing & calibration | 10d | 2018-08-01 | 2018-08-14 | A119380 FF, A119370 |  |  |  |  | -6d | 33d | MH-Wtg [10.62 h] | 4,779 |  | 003 |  |
|  | 21 | **B108F- DM Storage** |  | 2017-12-13 | 2018-09-28 |  |  |  |  |  |  |  |  |  |  |  |  |
|  | 1 | **Civil & Structural Work** |  | 2017-12-13 | 2018-06-20 |  |  |  |  |  |  |  |  |  |  |  |  |
| A119400 |  | Equipment foundations | 30d | 2017-12-13 A | 2018-06-20 A | 102290, A113870 SS | 100% |  | 2017-12-01 | 2018-01-11 |  |  | MH-Wtg [476.18 h] | 214,281 | 214,281 | 003 | 2018-02-18 |
|  | 2 | **Mechanical Erection & Piping** |  | 2018-02-19 | 2018-09-25 |  |  |  |  |  |  |  |  |  |  |  |  |
| A119450 |  | Equipment installation | 40d | 2018-02-19 A | 2018-09-25 | A119400, 115750 SS+30d |  | 40d | 2018-04-18 | 2018-06-12 | 52143.9d |  | MH-Wtg [142.85 h] | 64,283 | 62,997 | 003 |  |
| A119460 |  | Piping erection | 20d | 2018-06-23 A | 2018-08-28 | A119450, 110850 SS+10d, 114510 FF+10d |  | 20d | 2018-08-27 | 2018-09-21 | -39d | 0d | MH-Wtg [238.09 h] | 107,141 | 48,213 | 003 |  |
| A119490 |  | Painting work | 10d | 2018-06-25 A | 2018-08-14 | A119470 FS-5d |  | 10d | 2018-09-24 | 2018-10-05 | 4d | 43d | MH-Wtg [23.81 h] | 10,715 | 6,964 | 003 |  |
| A119470 |  | Testing and boxup | 10d | 2018-08-22 | 2018-09-04 | A119460 FS-5d |  |  |  |  | -39d | 0d | MH-Wtg [71.43 h] | 32,144 |  | 003 |  |

| ID | WBS | Activity | Duration | Start | Finish | Predecessors | Complete | Remaining | Planned start | Planned finish | Total float | Free float | Resources | Cost | Actual cost | UNIT DESCRIPTION | user_end_date1 |
| --- | --- | --- | --- | --- | --- | --- | --- | --- | --- | --- | --- | --- | --- | --- | --- | --- | --- |
|  | 3 | **Electrical Installation** |  | 2018-08-29 | 2018-09-28 |  |  |  |  |  |  |  |  |  |  |  |  |
| A119500 |  | Cable tray installation | 10d | 2018-08-29 | 2018-09-11 | A119460 |  |  |  |  | -39d | 0d | MH-Wtg [41.18 h] | 18,531 |  | 003 |  |
| A119550 |  | Earthing work | 5d | 2018-09-05 | 2018-09-11 | A119500 FS-5d |  |  |  |  | -26d | 13d | MH-Wtg [30.89 h] | 13,901 |  | 003 |  |
| A119510 |  | Cable laying | 5d | 2018-09-12 | 2018-09-18 | A119500 |  |  |  |  | -39d | 0d | MH-Wtg [51.48 h] | 23,166 |  | 003 |  |
| A119540 |  | Installation of light fittings | 5d | 2018-09-19 | 2018-09-25 | A119510 |  |  |  |  | -39d | 0d | MH-Wtg [41.18 h] | 18,531 |  | 003 |  |
| A119530 |  | Glanding and termination | 3d | 2018-09-26 | 2018-09-28 | A119540 |  |  |  |  | -39d | 0d | MH-Wtg [41.18 h] | 18,531 |  | 003 |  |
|  | 4 | **Instrument Installation** |  | 2018-07-12 | 2018-09-28 |  |  |  |  |  |  |  |  |  |  |  |  |
| A119560 |  | Cable tray installation | 10d | 2018-07-12 A | 2018-08-14 | A119500 FS-5d |  | 10d | 2018-10-01 | 2018-10-12 | -12d | 0d | MH-Wtg [28.31 h] | 12,740 | 11,970 | 003 |  |
| A119570 |  | Cable laying | 5d | 2018-07-17 A | 2018-08-07 | A119560 |  | 5d | 2018-10-15 | 2018-10-19 | -4d | 33d | MH-Wtg [35.39 h] | 15,926 | 14,333 | 003 |  |
| A119580 |  | Installation of JBs and Air headers | 3d | 2018-08-15 | 2018-08-17 | A119560 |  |  |  |  | -12d | 25d | MH-Wtg [14.16 h] | 6,372 |  | 003 |  |
| A119590 |  | Installation of instruments | 8d | 2018-09-05 | 2018-09-14 | A119470 |  |  |  |  | -39d | 0d | MH-Wtg [21.23 h] | 9,554 |  | 003 |  |
| A119600 |  | Glanding and termination | 5d | 2018-09-17 | 2018-09-21 | A119590, A119570 FF, A119580 FF |  |  |  |  | -37d | 2d | MH-Wtg [21.23 h] | 9,554 |  | 003 |  |
| A119610 |  | Hookup of instruments | 10d | 2018-09-17 | 2018-09-28 | A119590 |  |  |  |  | -39d | 0d | MH-Wtg [14.16 h] | 6,372 |  | 003 |  |
| A119620 |  | Testing & calibration | 3d | 2018-09-26 | 2018-09-28 | A119610 FF, A119600 |  |  |  |  | -39d | 0d | MH-Wtg [7.08 h] | 3,186 |  | 003 |  |
|  | 22 | **B109A- Cooling Tower with Pumps** |  | 2017-12-13 | 2018-12-28 |  |  |  |  |  |  |  |  |  |  |  |  |
|  | 1 | **Civil & Structural Work** |  | 2017-12-13 | 2018-08-28 |  |  |  |  |  |  |  |  |  |  |  |  |
| A119630 |  | Equipment foundations | 80d | 2017-12-13 A | 2018-07-10 A | 101631 | 100% |  | 2017-12-13 | 2018-04-04 |  |  | MH-Wtg [999.97 h] | 449,987 | 449,987 | 003 | 2018-04-30 |
| A119640 |  | RCC/Civil construction work | 20d | 2018-06-05 A | 2018-08-28 | 101640, A119630 FS-30d |  | 20d | 2018-07-17 | 2018-08-13 | 52163.9d |  | MH-Wtg [428.56 h] | 192,852 | 188,995 | 003 | 2018-04-15 |
|  | 2 | **Mechanical Erection & Piping** |  | 2018-05-25 | 2018-12-07 |  |  |  |  |  |  |  |  |  |  |  |  |
| A119680 |  | Equipment installation | 40d | 2018-05-25 A | 2018-09-25 | A119630 FS-20d, 113880 FS-40d, 114300 FF+10d, 114580 FF+15d |  | 40d | 2018-08-31 | 2018-10-25 | -61d | 0d | MH-Wtg [571.41 h] | 257,135 | 141,323 | 003 |  |
| A119690 |  | Piping erection | 35d | 2018-06-15 A | 2018-10-16 | A119680 FF+15d, 106530 SS+10d |  | 35d | 2018-07-30 | 2018-09-14 | -61d | 28d | MH-Wtg [571.41 h] | 257,135 | 251,992 | 003 |  |
| A119720 |  | Painting work | 10d | 2018-06-20 A | 2018-08-14 | A119700 |  | 10d | 2018-11-08 | 2018-11-21 | 19d | 108d | MH-Wtg [71.43 h] | 32,144 | 28,929 | 003 |  |
| A119700 |  | Testing and boxup | 15d | 2018-11-19 | 2018-12-07 | A119690 FS-5d, 116180 FF+5d |  |  |  |  | -89d | 0d | MH-Wtg [214.28 h] | 96,426 |  | 003 |  |
|  | 3 | **Electrical Installation** |  | 2018-06-20 | 2018-08-28 |  |  |  |  |  |  |  |  |  |  |  |  |
| A119780 |  | Earthing work | 15d | 2018-06-20 A | 2018-06-25 A | A119730 FS-10d | 100% |  | 2018-08-13 | 2018-08-31 |  |  | MH-Wtg [92.66 h] | 41,697 | 41,697 | 003 |  |
| A119730 |  | Cable tray installation | 20d | 2018-06-21 A | 2018-08-28 | A119680 FS-20d |  | 20d | 2018-07-30 | 2018-08-24 | 52163.9d |  | MH-Wtg [123.55 h] | 55,598 | 52,818 | 003 |  |
| A119740 |  | Cable laying | 15d | 2018-06-27 A | 2018-08-21 | A119730 |  | 15d | 2018-08-27 | 2018-09-14 | 52168.9d |  | MH-Wtg [154.44 h] | 69,498 | 62,548 | 003 |  |
| A119760 |  | Glanding and termination | 15d | 2018-07-14 A | 2018-08-21 | A119750 |  | 15d | 2018-09-27 | 2018-10-17 | 4d | 93d | MH-Wtg [92.66 h] | 41,697 | 12,509 | 003 |  |
| A119770 |  | Installation of light fittings | 10d | 2018-08-13 | 2018-08-24 | A119750 |  |  |  |  | 1d | 90d | MH-Wtg [61.77 h] | 27,797 |  | 003 |  |
| A119750 |  | Installation of electrical items | 8d | 2018-09-17 A | 2018-08-10 | A119740 |  | 8d | 2018-09-17 | 2018-09-26 | 1d | 0d | MH-Wtg [92.66 h] | 41,697 | 37,527 | 003 |  |

| ID | WBS | Activity | Duration | Start | Finish | Predecessors | Complete | Remaining | Planned start | Planned finish | Total float | Free float | Resources | Cost | Actual cost | UNIT DESCRIPTION |
| --- | --- | --- | --- | --- | --- | --- | --- | --- | --- | --- | --- | --- | --- | --- | --- | --- |
|  | 4 | **Instrument Installation** |  | 2018-06-22 | 2018-12-28 |  |  |  |  |  |  |  |  |  |  |  |
| A119790 |  | Cable tray installation | 20d | 2018-06-22 A | 2018-08-28 | A119730 FS-10d |  | 20d | 2018-08-13 | 2018-09-07 | 52163.9d |  | MH-Wtg [84.94 h] | 38,223 | 36,312 | 003 |
| A119800 |  | Cable laying | 15d | 2018-06-27 A | 2018-08-21 | A119790 FS-5d |  | 15d | 2018-09-03 | 2018-09-21 | -6d | 5d | MH-Wtg [106.17 h] | 47,777 | 42,999 | 003 |
| A119810 |  | Installation of JBs and Air headers | 10d | 2018-07-05 A | 2018-07-10 A | A119790 | 100% |  | 2018-09-10 | 2018-09-21 |  |  | MH-Wtg [42.47 h] | 19,112 | 19,112 | 003 |
| A119830 |  | Glanding and termination | 20d | 2018-07-20 A | 2018-08-28 | A119800 FF, A119810 FF, A119820 FS-5d |  | 20d | 2018-11-01 | 2018-11-28 | -11d | 78d | MH-Wtg [63.7 h] | 28,665 | 8,600 | 003 |
| A119820 |  | Installation of instruments | 15d | 2018-11-19 | 2018-12-07 | A119700 FF |  |  |  |  | -74d | 15d | MH-Wtg [63.7 h] | 28,665 |  | 003 |
| A119840 |  | Hookup of instruments | 15d | 2018-12-10 | 2018-12-28 | A119820 FF, A119700 |  |  |  |  | -89d | 0d | MH-Wtg [42.47 h] | 19,112 |  | 003 |
| A119850 |  | Testing & calibration | 10d | 2018-12-17 | 2018-12-28 | A119840 FF, A119830 |  |  |  |  | -89d | 0d | MH-Wtg [21.23 h] | 9,554 |  | 003 |
|  | 56 | **B109B- Auxiliary Cooling Tower (HOLD)** |  | 2018-08-01 | 2018-10-23 |  |  |  |  |  |  |  |  |  |  |  |
|  | 1 | **Civil & Structural Work** |  | 2018-08-01 | 2018-10-23 |  |  |  |  |  |  |  |  |  |  |  |
| A119860 |  | Equipment foundations (Hold) | 20d | 2018-08-01 | 2018-08-28 |  |  |  |  |  | 52163.9d |  | MH-Wtg |  |  | 003 |
| A119870 |  | RCC/Civil construction work (Hold) | 60d | 2018-08-01 | 2018-10-23 |  |  |  |  |  | 52123.9d |  | MH-Wtg |  |  | 003 |
|  | 2 | **Mechanical Erection & Piping** |  | 2018-08-01 | 2018-09-11 |  |  |  |  |  |  |  |  |  |  |  |
| A119910 |  | Equipment installation (Hold) | 30d | 2018-08-01 | 2018-09-11 |  |  |  |  |  | 52153.9d |  | MH-Wtg |  |  | 003 |
| A119920 |  | Piping erection (Hold) | 25d | 2018-08-01 | 2018-09-04 |  |  |  |  |  | 52158.9d |  | MH-Wtg |  |  | 003 |
| A119930 |  | Testing and boxup (Hold) | 15d | 2018-08-01 | 2018-08-21 |  |  |  |  |  | 52168.9d |  | MH-Wtg |  |  | 003 |
| A119950 |  | Painting work (Hold) | 10d | 2018-08-01 | 2018-08-14 |  |  |  |  |  | 52173.9d |  | MH-Wtg |  |  | 003 |
|  | 3 | **Electrical Installation** |  | 2018-08-01 | 2018-08-21 |  |  |  |  |  |  |  |  |  |  |  |
| A119960 |  | Cable tray installation (Hold) | 15d | 2018-08-01 | 2018-08-21 |  |  |  |  |  | 52168.9d |  | MH-Wtg |  |  | 003 |
| A119970 |  | Cable laying (Hold) | 10d | 2018-08-01 | 2018-08-14 |  |  |  |  |  | 52173.9d |  | MH-Wtg |  |  | 003 |
| A119980 |  | Installation of electrical items (Hold) | 5d | 2018-08-01 | 2018-08-07 |  |  |  |  |  | 52178.9d |  | MH-Wtg |  |  | 003 |
| A119990 |  | Glanding and termination (Hold) | 10d | 2018-08-01 | 2018-08-14 |  |  |  |  |  | 52173.9d |  | MH-Wtg |  |  | 003 |
| A120000 |  | Installation of light fittings (Hold) | 5d | 2018-08-01 | 2018-08-07 |  |  |  |  |  | 52178.9d |  | MH-Wtg |  |  | 003 |
| A120010 |  | Earthing work (Hold) | 10d | 2018-08-01 | 2018-08-14 |  |  |  |  |  | 52173.9d |  | MH-Wtg |  |  | 003 |

| ID | WBS | Activity | Duration | Start | Finish | Total float | Calendar | Resources | UNIT DESCRIPTION |
| --- | --- | --- | --- | --- | --- | --- | --- | --- | --- |
|  | 4 | **Instrument Installation** |  | 2018-08-01 | 2018-08-21 |  |  |  |  |
| A120020 |  | Cable tray installation (Hold) | 15d | 2018-08-01 | 2018-08-21 | 52168.9d |  | MH-Wtg | 003 |
| A120030 |  | Cable laying (Hold) | 10d | 2018-08-01 | 2018-08-14 | 52173.9d |  | MH-Wtg | 003 |
| A120040 |  | Installation of JBs and Air headers (Hold) | 5d | 2018-08-01 | 2018-08-07 | 52178.9d |  | MH-Wtg | 003 |
| A120050 |  | Installation of instruments (Hold) | 10d | 2018-08-01 | 2018-08-14 | 52173.9d |  | MH-Wtg | 003 |
| A120060 |  | Glanding and termination (Hold) | 10d | 2018-08-01 | 2018-08-14 | 52173.9d |  | MH-Wtg | 003 |
| A120070 |  | Hookup of instruments (Hold) | 10d | 2018-08-01 | 2018-08-14 | 52173.9d |  | MH-Wtg | 003 |
| A120080 |  | Testing & calibration (Hold) | 8d | 2018-08-01 | 2018-08-10 | 52175.9d |  | MH-Wtg | 003 |
|  | 23 | **B110A- Metering Room (Deleted)** |  | 2018-08-01 | 2018-10-23 |  |  |  |  |
|  | 1 | **Civil & Structural Work** |  | 2018-08-01 | 2018-10-23 |  |  |  |  |
| A120100 |  | Foundation & columns (Deleted) | 60d | 2018-08-01 | 2018-10-23 | 52123.9d | Monsoon | MH-Wtg | 003 |
| A120101 |  | Plinth beams (Deleted) | 8d | 2018-08-01 | 2018-08-10 | 52175.9d |  | MH-Wtg | 003 |
| A120102 |  | Grade slab (Deleted) | 5d | 2018-08-01 | 2018-08-07 | 52178.9d |  | MH-Wtg | 003 |
| A120103 |  | Brick work & plastering (Deleted) | 45d | 2018-08-01 | 2018-10-02 | 52138.9d |  | MH-Wtg | 003 |
| A120104 |  | Lintel beams (Deleted) | 15d | 2018-08-01 | 2018-08-21 | 52168.9d |  | MH-Wtg | 003 |
| A120105 |  | Floor slabs (Deleted) | 8d | 2018-08-01 | 2018-08-10 | 52175.9d |  | MH-Wtg | 003 |
| A120107 |  | Flooring work (Deleted) | 8d | 2018-08-01 | 2018-08-10 | 52175.9d |  | MH-Wtg | 003 |
| A120109 |  | Doors, windows and handrails (Deleted) | 5d | 2018-08-01 | 2018-08-07 | 52178.9d |  | MH-Wtg | 003 |
| A120110 |  | Painting work (Deleted) | 5d | 2018-08-01 | 2018-08-07 | 52178.9d |  | MH-Wtg | 003 |
|  | 3 | **Electrical Installation** |  | 2018-08-01 | 2018-08-10 |  |  |  |  |
| A120189 |  | Installation of Metering panel (Deleted) | 8d | 2018-08-01 | 2018-08-10 | 52175.9d |  | MH-Wtg | 003 |
| A120190 |  | Cable tray installation (Deleted) | 5d | 2018-08-01 | 2018-08-07 | 52178.9d |  | MH-Wtg | 003 |
| A120200 |  | Cable laying (Deleted) | 8d | 2018-08-01 | 2018-08-10 | 52175.9d |  | MH-Wtg | 003 |
| A120210 |  | Installation of electrical items (Deleted) | 8d | 2018-08-01 | 2018-08-10 | 52175.9d |  | MH-Wtg | 003 |
| A120220 |  | Glanding and termination (Deleted) | 8d | 2018-08-01 | 2018-08-10 | 52175.9d |  | MH-Wtg | 003 |
| A120230 |  | Installation of light fittings (Deleted) | 8d | 2018-08-01 | 2018-08-10 | 52175.9d |  | MH-Wtg | 003 |
| A120240 |  | Earthing work (Deleted) | 5d | 2018-08-01 | 2018-08-07 | 52178.9d |  | MH-Wtg | 003 |

| ID | WBS | Activity | Duration | Start | Finish | Predecessors | Complete | Remaining | Planned start | Planned finish | Total float | Free float | Constraint | Calendar | Resources | Cost | Actual cost | user_start_date1 | user_end_date1 | UNIT DESCRIPTION |
| --- | --- | --- | --- | --- | --- | --- | --- | --- | --- | --- | --- | --- | --- | --- | --- | --- | --- | --- | --- | --- |
|  | 24 | **B110B- DG Room** |  | 2018-05-26 | 2018-10-16 |  |  |  |  |  |  |  |  |  |  |  |  |  |  |  |
|  | 1 | **Civil & Structural Work** |  | 2018-05-26 | 2018-09-18 |  |  |  |  |  |  |  |  |  |  |  |  |  |  |  |
| A120320 |  | Equipment foundations | 35d | 2018-05-26 A | 2018-09-18 | 101780, 117090 FF-10d |  | 35d | 2018-06-01 | 2018-07-19 | 52148.9d | 0d |  |  | MH-Wtg [207.97 h] | 93,587 | 74,869 | 2018-01-10 | 2018-02-10 | 003 |
| A120330 |  | RCC/Civil construction work | 25d | 2018-06-05 A | 2018-09-18 | A120320 FF |  | 25d | 2018-06-15 | 2018-07-19 | 52148.9d |  |  |  | MH-Wtg [155.98 h] | 70,191 | 26,673 |  |  | 003 |
| A120340 |  | Structural steel erection | 20d | 2018-07-20 A | 2018-08-28 | A120419, A120330 |  | 20d | 2018-08-20 | 2018-09-14 | -45d | 0d |  |  | MH-Wtg [129.98 h] | 58,491 | 5,849 |  |  | 003 |
| A120360 |  | Painting work | 15d | 2018-08-29 | 2018-09-18 | A120340 |  |  |  |  | 5d | 88d |  |  | MH-Wtg [26 h] | 11,700 |  |  |  | 003 |
|  | 3 | **Electrical Installation** |  | 2018-08-01 | 2018-10-16 |  |  |  |  |  |  |  |  |  |  |  |  |  |  |  |
| A120419 |  | Installation of DG | 15d | 2018-08-01 | 2018-08-21 | 117090 |  |  |  |  | -40d | 0d |  |  | MH-Wtg [180 h] | 81,000 |  |  |  | 003 |
| A120419.1 |  | Installation of Chimney | 20d | 2018-08-22 | 2018-09-18 | A120419 |  |  |  |  | 52148.9d |  |  |  |  |  |  |  |  | 003 |
| A120420 |  | Cable tray installation | 10d | 2018-08-29 | 2018-09-11 | A120340, A120419 |  |  |  |  | -45d | 0d |  |  | MH-Wtg [80 h] | 36,000 |  |  |  | 003 |
| A120430 |  | Cable laying | 10d | 2018-09-12 | 2018-09-25 | A120420 |  |  |  |  | -45d | 0d |  |  | MH-Wtg [90 h] | 40,500 |  |  |  | 003 |
| A120440 |  | Installation of electrical items | 5d | 2018-09-26 | 2018-10-02 | A120430 |  |  |  |  | -45d | 0d |  |  | MH-Wtg [80 h] | 36,000 |  |  |  | 003 |
| A120450 |  | Glanding and termination | 10d | 2018-10-03 | 2018-10-16 | A120440 |  |  |  |  | -45d | 38d |  |  | MH-Wtg [90 h] | 40,500 |  |  |  | 003 |
| A120460 |  | Installation of light fittings | 5d | 2018-10-03 | 2018-10-09 | A120440 |  |  |  |  | -40d | 43d |  |  | MH-Wtg [80 h] | 36,000 |  |  |  | 003 |
| A120470 |  | Earthing work | 10d | 2018-10-03 | 2018-10-16 | A120440 |  |  |  |  | -45d | 38d |  |  | MH-Wtg [60 h] | 27,000 |  |  |  | 003 |
|  | 25 | **B110C- Process/Utility Sub-station** |  | 2017-11-08 | 2030-06-29 |  |  |  |  |  |  |  |  |  |  |  |  |  |  |  |
|  | 1 | **Civil & Structural Work** |  | 2017-11-08 | 2030-06-29 |  |  |  |  |  |  |  |  |  |  |  |  |  |  |  |
| A124480 |  | Subsation foundation & columns | 100d | 2017-11-08 A | 2018-05-15 A | 101720, 113120 FS+10d | 100% |  | 2017-11-06 | 2018-03-26 |  |  |  | Monsoon | MH-Wtg [311.96 h] | 140,382 | 140,382 | 2017-11-21 | 2018-02-19 | 003 |
| A124490 |  | Plinth beams | 20d | 2017-12-13 A | 2018-01-01 A | A124480 SS+20d | 100% |  | 2017-12-15 | 2018-01-11 |  |  |  |  | MH-Wtg [155.98 h] | 70,191 | 70,191 | 2017-12-18 | 2018-01-20 | 003 |
| A124500 |  | Grade slab | 15d | 2017-12-21 A | 2018-02-20 A | A124490 | 100% |  | 2018-01-10 | 2018-01-31 |  |  |  |  | MH-Wtg [77.99 h] | 35,096 | 35,096 | 2017-01-10 | 2018-02-03 | 003 |
| A124510 |  | Brick work & plastering | 63d | 2018-01-08 A | 2030-06-29 A | A124500 | 100% |  | 2018-02-22 | 2018-05-21 |  |  |  |  | MH-Wtg [77.99 h] | 35,096 | 35,096 | 2018-02-13 | 2018-04-10 | 003 |
| A124530 |  | Floor slabs | 50d | 2018-01-09 A | 2018-05-23 A | A124520 SS+10d | 100% |  | 2018-03-12 | 2018-05-18 |  |  |  |  | MH-Wtg [311.96 h] | 140,382 | 140,382 | 2018-01-04 | 2018-02-28 | 003 |
| A124540 |  | Staircase work | 45d | 2018-01-23 A | 2018-03-21 A | A124530 FF | 100% |  | 2018-03-08 | 2018-05-09 |  |  |  |  | MH-Wtg [155.98 h] | 70,191 | 70,191 | 2018-01-18 | 2018-02-28 | 003 |
| A124520 |  | Lintel beams | 45d | 2018-02-05 A | 2018-05-04 A | A124490 FS+10d | 100% |  | 2018-02-26 | 2018-04-27 |  |  |  |  | MH-Wtg [155.98 h] | 70,191 | 70,191 | 2018-02-20 | 2018-04-10 | 003 |
| A124470 |  | Transformer foundations | 23d | 2018-03-15 A | 2018-04-04 A | 113320 FS+40d | 100% |  | 2018-03-01 | 2018-04-02 |  |  | start on or after 2018-01-15 |  | MH-Wtg [155.98 h] | 70,191 | 70,191 | 2018-01-15 | 2018-02-15 | 003 |
| A124550 |  | Flooring work | 20d | 2018-03-27 A | 2018-06-23 A | A124530 FS-20d, A124540 FF+8d | 100% |  | 2018-04-24 | 2018-05-21 |  |  |  |  | MH-Wtg [39 h] | 17,550 | 17,550 | 2018-02-28 | 2018-03-30 | 003 |
| A124551 |  | Plumbing & sanitary work | 20d | 2018-04-25 A | 2018-06-27 A | A124550 FS-15d | 100% |  | 2018-06-08 | 2018-07-05 |  |  |  |  | MH-Wtg [39 h] | 17,550 | 17,550 | 2018-03-13 | 2018-04-09 | 003 |
| A124560 |  | Doors, windows and handrails | 10d | 2018-05-10 A | 2018-07-28 A | A124550 | 100% |  | 2018-06-29 | 2018-07-12 |  |  |  |  | MH-Wtg [39 h] | 17,550 | 17,550 | 2018-03-30 | 2018-04-09 | 003 |
| A124570 |  | Painting work | 15d | 2018-07-05 A | 2018-08-21 | A124510 |  | 15d | 2018-07-02 | 2018-07-20 | 36d |  |  |  | MH-Wtg [39 h] | 17,550 | 8,775 | 2018-04-10 | 2018-04-30 | 003 |

| ID | WBS | Activity | Duration | Start | Finish | Predecessors | Complete | Remaining | Planned start | Planned finish | Total float | Free float | Constraint | Resources | Cost | Actual cost | UNIT DESCRIPTION | user_start_date1 | user_end_date1 |
| --- | --- | --- | --- | --- | --- | --- | --- | --- | --- | --- | --- | --- | --- | --- | --- | --- | --- | --- | --- |
|  | 3 | **Electrical Installation** |  | 2018-04-26 | 2019-01-15 |  |  |  |  |  |  |  |  |  |  |  |  |  |  |
| A124590 |  | Cable tray installation | 15d | 2018-04-26 A | 2019-01-15 | A124610 FF |  | 15d | 2018-10-19 | 2018-11-08 | 52063.9d |  |  | MH-Wtg [350.96 h] | 157,932 | 150,035 | 003 |  |  |
| A124580 |  | Installation of tranformers | 15d | 2018-05-03 A | 2018-05-15 A | A124470, 116670, 117370 FF+10d | 100% |  | 2018-07-30 | 2018-08-17 |  |  |  | MH-Wtg [233.97 h] | 105,287 | 105,287 | 003 |  |  |
| A124610 |  | Installation of electrical items | 20d | 2018-05-07 A | 2019-01-15 | 116810, 116880 FF+10d, 116950 FF+10d, 117020 FF+10d, 117160 FF+10d, 117230 FF+10d, 117300 FF+10d, 117580 FF+10d, 117021 FF+10d, A124550, 117160.1 FF+10d, 116740 FF+10d |  | 20d | 2018-10-19 | 2018-11-15 | 52063.9d | 0d |  | MH-Wtg [350.96 h] | 157,932 | 134,242 | 003 |  |  |
| A124600 |  | Cable laying | 13d | 2018-05-22 A | 2018-08-17 | A124590 FS-5d, 117650 |  | 13d | 2018-11-09 | 2018-11-27 | 52170.9d |  |  | MH-Wtg [467.94 h] | 210,573 | 189,516 | 003 |  |  |
| A124640 |  | Earthing work | 20d | 2018-06-12 A | 2018-08-28 | A124610 FS-10d |  | 20d | 2018-12-03 | 2018-12-28 | 16d |  |  | MH-Wtg [350.96 h] | 157,932 | 154,791 | 003 |  |  |
| A124620 |  | Glanding and termination | 15d | 2018-06-15 A | 2018-08-21 | A124600 FS-10d, A124580 |  | 15d | 2018-07-23 | 2018-08-10 | 21d |  |  | MH-Wtg [350.96 h] | 157,932 | 126,346 | 003 |  |  |
| A124630 |  | Installation of light fittings | 15d | 2018-06-20 A | 2018-06-29 A | A124560 | 100% |  | 2018-07-02 | 2018-07-20 |  |  |  | MH-Wtg [233.97 h] | 105,287 | 105,287 | 003 |  |  |
|  | 27 | **B111- Effluent Treatment Plant** |  | 2018-05-05 | 2019-02-14 |  |  |  |  |  |  |  |  |  |  |  |  |  |  |
|  | 1 | **Civil & Structural Work** |  | 2018-05-05 | 2019-02-07 |  |  |  |  |  |  |  |  |  |  |  |  |  |  |
| A120780 |  | Equipment foundations & RCC tanks | 40d | 2018-05-05 A | 2018-09-25 | A126120 |  | 40d | 2018-06-22 | 2018-08-16 | -92d | 37d | start on or after 2018-02-15 | MH-Wtg [857.12 h] | 385,704 | 339,420 | 003 | 2018-02-15 | 2018-03-15 |
| A120790 |  | RCC/Civil construction work | 76d | 2018-05-05 A | 2018-11-14 | A120780 SS |  | 76d | 2018-06-22 | 2018-10-05 | -78d | 0d |  | MH-Wtg [285.71 h] | 128,570 | 87,427 | 003 | 2018-02-01 | 2018-04-02 |
| A120800 |  | Structural steel erection | 15d | 2018-11-15 | 2018-12-05 | A120790 |  |  |  |  | -78d | 51d |  | MH-Wtg [142.85 h] | 64,283 |  | 003 | 2018-03-10 | 2018-04-15 |
| A120820 |  | Painting work | 15d | 2018-12-28 | 2019-01-17 | A120850 SS |  |  |  |  | -99d | 30d |  | MH-Wtg [71.43 h] | 32,144 |  | 003 | 2018-05-04 | 2018-05-25 |
| A120810 |  | Anti-corrosive lining work | 20d | 2019-01-11 | 2019-02-07 | A120840 |  |  |  |  | -124d | 5d |  | MH-Wtg [71.43 h] | 32,144 |  | 003 | 2018-04-15 | 2018-05-15 |
|  | 2 | **Mechanical Erection & Piping** |  | 2018-11-16 | 2019-01-24 |  |  |  |  |  |  |  |  |  |  |  |  |  |  |
| A120830 |  | Equipment installation | 20d | 2018-11-16 | 2018-12-13 | A120780, 114160 |  |  |  |  | -129d | 0d |  | MH-Wtg [571.41 h] | 257,135 |  | 003 |  |  |
| A120840 |  | Piping erection | 30d | 2018-11-30 | 2019-01-10 | A120830 FS-10d |  |  |  |  | -129d | 0d |  | MH-Wtg [571.41 h] | 257,135 |  | 003 |  |  |
| A120850 |  | Testing and boxup | 20d | 2018-12-28 | 2019-01-24 | A120840 FS-10d |  |  |  |  | -129d | 0d |  | MH-Wtg [214.28 h] | 96,426 |  | 003 |  |  |
| A120870 |  | Painting work | 15d | 2019-01-04 | 2019-01-24 | A120850 FS-15d |  |  |  |  | -104d | 25d |  | MH-Wtg [71.43 h] | 32,144 |  | 003 |  |  |
|  | 3 | **Electrical Installation** |  | 2018-12-14 | 2019-02-07 |  |  |  |  |  |  |  |  |  |  |  |  |  |  |
| A120880 |  | Cable tray installation | 10d | 2018-12-14 | 2018-12-27 | A120830 |  |  |  |  | -124d | 0d |  | MH-Wtg [123.55 h] | 55,598 |  | 003 |  |  |
| A120930 |  | Earthing work | 10d | 2018-12-14 | 2018-12-27 | A120830 |  |  |  |  | -94d | 35d |  | MH-Wtg [92.66 h] | 41,697 |  | 003 |  |  |
| A120890 |  | Cable laying | 10d | 2018-12-21 | 2019-01-03 | A120880 FS-5d |  |  |  |  | -124d | 0d |  | MH-Wtg [154.44 h] | 69,498 |  | 003 |  |  |
| A120900 |  | Installation of electrical items | 10d | 2018-12-21 | 2019-01-03 | A120890 FS-10d |  |  |  |  | -124d | 0d |  | MH-Wtg [92.66 h] | 41,697 |  | 003 |  |  |
| A120910 |  | Glanding and termination | 15d | 2019-01-18 | 2019-02-07 | A120900 FS-5d, A120920 FF |  |  |  |  | -124d | 5d |  | MH-Wtg [92.66 h] | 41,697 |  | 003 |  |  |
| A120920 |  | Installation of light fittings | 10d | 2019-01-25 | 2019-02-07 | A120900 FS+15d |  |  |  |  | -124d | 0d |  | MH-Wtg [61.77 h] | 27,797 |  | 003 |  |  |

| ID | WBS | Activity | Duration | Start | Finish | Predecessors | Complete | Remaining | Planned start | Planned finish | Total float | Free float | Calendar | Resources | Cost | Actual cost | UNIT DESCRIPTION | user_start_date1 | user_end_date1 |
| --- | --- | --- | --- | --- | --- | --- | --- | --- | --- | --- | --- | --- | --- | --- | --- | --- | --- | --- | --- |
|  | 4 | **Instrument Installation** |  | 2018-12-14 | 2019-02-14 |  |  |  |  |  |  |  |  |  |  |  |  |  |  |
| A120940 |  | Cable tray installation | 15d | 2018-12-14 | 2019-01-03 | A120880 SS |  |  |  |  | -119d | 0d |  | MH-Wtg [84.94 h] | 38,223 |  | 003 |  |  |
| A120950 |  | Cable laying | 15d | 2018-12-28 | 2019-01-17 | A120940 FS-5d |  |  |  |  | -119d | 10d |  | MH-Wtg [106.17 h] | 47,777 |  | 003 |  |  |
| A120970 |  | Installation of instruments | 20d | 2018-12-28 | 2019-01-24 | A120850 FF |  |  |  |  | -129d | 0d |  | MH-Wtg [63.7 h] | 28,665 |  | 003 |  |  |
| A120960 |  | Installation of JBs and Air headers | 10d | 2019-01-04 | 2019-01-17 | A120940 |  |  |  |  | -119d | 10d |  | MH-Wtg [42.47 h] | 19,112 |  | 003 |  |  |
| A120990 |  | Hookup of instruments | 20d | 2019-01-04 | 2019-01-31 | A120970 FF, A120850 FS-15d |  |  |  |  | -119d | 10d |  | MH-Wtg [42.47 h] | 19,112 |  | 003 |  |  |
| A120980 |  | Glanding and termination | 15d | 2019-01-11 | 2019-01-31 | A120950 FF, A120960 FF, A120970 FS-10d |  |  |  |  | -129d | 0d |  | MH-Wtg [63.7 h] | 28,665 |  | 003 |  |  |
| A121000 |  | Testing & calibration | 10d | 2019-02-01 | 2019-02-14 | A120990 FF, A120980 |  |  |  |  | -129d | 0d |  | MH-Wtg [21.23 h] | 9,554 |  | 003 |  |  |
|  | 28 | **B112- Control Room & QC** |  | 2017-11-13 | 2018-08-28 |  |  |  |  |  |  |  |  |  |  |  |  |  |  |
|  | 1 | **Civil & Structural Work** |  | 2017-11-13 | 2018-08-28 |  |  |  |  |  |  |  |  |  |  |  |  |  |  |
| A124650 |  | Foundation & columns | 70d | 2017-11-13 A | 2018-01-25 A | 102120, 113112.1 FS+10d | 100% |  | 2017-11-01 | 2018-02-07 |  |  | Monsoon | MH-Wtg [259.97 h] | 116,987 | 116,987 | 003 | 2017-11-15 | 2018-02-15 |
| A124660 |  | Plinth beams | 20d | 2017-12-12 A | 2018-01-08 A | A124650 SS+20d | 100% |  | 2017-12-29 | 2018-01-25 |  |  |  | MH-Wtg [194.98 h] | 87,741 | 87,741 | 003 | 2017-12-12 | 2017-12-31 |
| A124690 |  | Lintel beams | 10d | 2018-01-20 A | 2018-01-25 A | A124660 FS+10d | 100% |  | 2018-02-23 | 2018-03-08 |  |  |  | MH-Wtg [194.98 h] | 87,741 | 87,741 | 003 | 2018-02-19 | 2018-03-15 |
| A124680 |  | Brick work & plastering | 38d | 2018-01-29 A | 2018-05-09 A | A124670, A124700 FF+10d | 100% |  | 2018-02-02 | 2018-03-27 |  |  |  | MH-Wtg [64.99 h] | 29,246 | 29,246 | 003 | 2018-02-12 | 2018-03-15 |
| A124700 |  | Floor slabs | 15d | 2018-02-16 A | 2018-03-09 A | A124690 FS+10d | 100% |  | 2018-02-09 | 2018-03-01 |  |  |  | MH-Wtg [259.97 h] | 116,987 | 116,987 | 003 | 2017-12-20 | 2018-02-02 |
| A124670 |  | Grade slab | 15d | 2018-03-10 A | 2018-03-21 A | A124660 | 100% |  | 2018-03-01 | 2018-03-21 |  |  |  | MH-Wtg [64.99 h] | 29,246 | 29,246 | 003 | 2018-03-10 | 2018-03-25 |
| A124720 |  | Flooring work | 13d | 2018-04-26 A | 2018-06-20 A | A124700 | 100% |  | 2018-06-01 | 2018-06-19 |  |  |  | MH-Wtg [32.5 h] | 14,625 | 14,625 | 003 | 2018-03-15 | 2018-03-31 |
| A124730 |  | Plumbing & sanitary work | 10d | 2018-05-10 A | 2018-06-23 A | A124720 FF | 100% |  | 2018-06-06 | 2018-06-19 |  |  |  | MH-Wtg [32.5 h] | 14,625 | 14,625 | 003 | 2018-03-15 | 2018-03-31 |
| A124740 |  | Doors, windows and handrails | 10d | 2018-05-15 A | 2018-06-27 A | A124720 FF | 100% |  | 2018-06-06 | 2018-06-19 |  |  |  | MH-Wtg [32.5 h] | 14,625 | 14,625 | 003 | 2018-03-15 | 2018-03-31 |
| A124750 |  | Painting work | 20d | 2018-06-14 A | 2018-08-28 | A124680 FS-5d |  | 20d | 2018-07-02 | 2018-07-27 | 34d | 481.67d |  | MH-Wtg [32.5 h] | 14,625 | 7,313 | 003 | 2018-03-15 | 2018-04-15 |
| A124710 |  | Staircase work (Deleted) | 20d | 2018-08-01 | 2018-08-28 | A124700 FF |  |  |  |  | 52163.9d |  |  | MH-Wtg |  |  | 003 | 2017-12-01 | 2018-02-02 |
|  | 3 | **Electrical Installation** |  | 2018-04-12 | 2018-07-28 |  |  |  |  |  |  |  |  |  |  |  |  |  |  |
| A121110 |  | Cable tray installation | 15d | 2018-04-12 A | 2018-07-10 A | A124680 | 100% |  | 2018-06-22 | 2018-07-12 |  |  |  | MH-Wtg [64.99 h] | 29,245 | 29,245 | 003 |  |  |
| A121120 |  | Cable laying | 10d | 2018-06-13 A | 2018-07-17 A | A121110 | 100% |  | 2018-07-23 | 2018-08-03 |  |  |  | MH-Wtg [81.24 h] | 36,558 | 36,558 | 003 |  |  |
| A121140 |  | Glanding and termination | 10d | 2018-06-19 A | 2018-07-28 A | A121150 | 100% |  | 2018-09-13 | 2018-09-26 |  |  |  | MH-Wtg [81.24 h] | 36,558 | 36,558 | 003 |  |  |
| A121150 |  | Installation of light fittings | 10d | 2018-06-26 A | 2018-07-05 A | A124740, A121120 FF, 118160 | 100% |  | 2018-08-30 | 2018-09-12 |  |  |  | MH-Wtg [97.49 h] | 43,871 | 43,871 | 003 |  |  |

| ID | WBS | Activity | Duration | Start | Finish | Predecessors | Complete | Remaining | Planned start | Planned finish | Total float | Free float | Calendar | Resources | Cost | Actual cost | UNIT DESCRIPTION |
| --- | --- | --- | --- | --- | --- | --- | --- | --- | --- | --- | --- | --- | --- | --- | --- | --- | --- |
|  | 4 | **Instrument Installation** |  | 2018-06-12 | 2018-08-28 |  |  |  |  |  |  |  |  |  |  |  |  |
| A121169 |  | DCS installation | 15d | 2018-06-12 A | 2018-08-02 A | A124740, 118480, 114230 FS+20d | 100% |  | 2018-12-12 | 2019-01-02 |  |  |  | MH-Wtg [649.92 h] | 292,464 | 292,464 | 003 |
| A121200 |  | Installation of instrument panels | 10d | 2018-06-12 A | 2018-07-20 A | A121169 | 100% |  | 2018-12-04 | 2018-12-18 |  |  |  | MH-Wtg [243.72 h] | 109,674 | 109,674 | 003 |
| A121170 |  | Cable tray installation | 15d | 2018-06-15 A | 2018-08-21 | A121169 |  | 15d | 2019-01-02 | 2019-01-23 | 52168.9d |  |  | MH-Wtg [162.48 h] | 73,116 | 69,460 | 003 |
| A121180 |  | Cable laying | 10d | 2018-06-25 A | 2018-08-14 | A121170 |  | 10d | 2018-12-25 | 2019-01-08 | 29d | 10d |  | MH-Wtg [243.72 h] | 109,674 | 98,820 | 003 |
| A121210 |  | Glanding and termination | 20d | 2018-06-27 A | 2018-08-28 | A121200, A121180 FF |  | 20d | 2018-12-18 | 2019-01-15 | 19d | 466.67d |  | MH-Wtg [324.96 h] | 146,232 | 87,739 | 003 |
|  | 30 | **B113A- Admin Building/Canteen** |  | 2017-05-19 | 2019-11-28 |  |  |  |  |  |  |  |  |  |  |  |  |
|  | 1 | **Civil & Structural Work** |  | 2017-05-19 | 2019-10-31 |  |  |  |  |  |  |  |  |  |  |  |  |
| A124759 |  | Piling work | 25d | 2017-05-19 A | 2017-07-15 A | 102350, 113110 FS+19d | 100% |  | 2017-05-05 | 2017-06-23 |  |  | Monsoon | MH-Wtg [877.39 h] | 394,826 | 394,826 | 003 |
| A124760 |  | Foundation & columns | 180d | 2017-07-06 A | 2018-11-12 | A124759, 113112.1 FS+10d | 59% | 74d | 2017-09-01 | 2018-05-11 | 52109.9d |  | Monsoon | MH-Wtg [877.39 h] | 394,826 | 386,929 | 003 |
| A124770 |  | Plinth beams | 20d | 2017-11-11 A | 2017-12-12 A | A124760 SS+20d | 100% |  | 2017-11-01 | 2017-11-28 |  |  |  | MH-Wtg [584.93 h] | 263,219 | 263,219 | 003 |
| A124780 |  | Grade slab | 15d | 2017-12-08 A | 2018-01-09 A | A124770 | 100% |  | 2017-12-29 | 2018-01-18 |  |  |  | MH-Wtg [292.46 h] | 131,607 | 131,607 | 003 |
| A124820 |  | Staircase work | 80d | 2017-12-15 A | 2019-09-19 | A124810 FF |  | 80d | 2018-03-30 | 2018-07-19 | -327.94d | 0d |  | MH-Wtg [584.93 h] | 263,219 | 223,736 | 003 |
| A124800 |  | Lintel beams | 100d | 2018-01-04 A | 2018-07-18 A | A124770 FS+15d | 100% |  | 2018-02-01 | 2018-06-20 |  |  |  | MH-Wtg [584.93 h] | 263,219 | 263,219 | 003 |
| A124810 |  | Floor slabs | 99d | 2018-01-08 A | 2019-09-19 | A124800 SS+20d |  | 296.94d | 2018-03-01 | 2018-07-17 | -327.94d | 0d |  | MH-Wtg [1169.85 h] | 526,433 | 473,789 | 003 |
| A124790 |  | Brick work & plastering | 116d | 2018-08-01 | 2019-01-09 | A124780 |  |  |  |  | -117d | 0d |  | MH-Wtg [292.46 h] | 131,607 |  | 003 |
| A124860 |  | Painting work | 20d | 2019-01-10 | 2019-02-06 | A124790 |  |  |  |  | -117d | 210.94d |  | MH-Wtg [146.23 h] | 65,804 |  | 003 |
| A124830 |  | Flooring work | 25d | 2019-08-29 | 2019-10-03 | A124810 FS-20d, A124820 FF+10d |  |  |  |  | -327.94d | 0d |  | MH-Wtg [146.23 h] | 65,804 |  | 003 |
| A124840 |  | Plumbing & sanitary work | 20d | 2019-09-26 | 2019-10-24 | A124830 FS-5d |  |  |  |  | -302.94d | 25d |  | MH-Wtg [146.23 h] | 65,804 |  | 003 |
| A124850 |  | Doors, windows and handrails | 20d | 2019-10-03 | 2019-10-31 | A124830 |  |  |  |  | -327.94d | 0d |  | MH-Wtg [146.23 h] | 65,804 |  | 003 |
|  | 3 | **Electrical Installation** |  | 2018-12-20 | 2019-11-28 |  |  |  |  |  |  |  |  |  |  |  |  |
| A121350 |  | Concealed wiring for electrification | 15d | 2018-12-20 | 2019-01-09 | A124790 FF |  |  |  |  | -117d | 210.94d |  | MH-Wtg [129.98 h] | 58,491 |  | 003 |
| A121390 |  | Installation of light fittings | 15d | 2019-10-24 | 2019-11-14 | A121360 FF |  |  |  |  | -327.94d | 0d |  | MH-Wtg [194.98 h] | 87,741 |  | 003 |
| A121360 |  | Installation of switches/plugs | 10d | 2019-10-31 | 2019-11-14 | A121350, A124850 |  |  |  |  | -327.94d | 0d |  | MH-Wtg [162.48 h] | 73,116 |  | 003 |
| A121380 |  | Terminations | 10d | 2019-11-14 | 2019-11-28 | A121390 |  |  |  |  | -327.94d | 0d |  | MH-Wtg [162.48 h] | 73,116 |  | 003 |

| ID | WBS | Activity | Duration | Start | Finish | Predecessors | Complete | Remaining | Planned start | Planned finish | Total float | Free float | Calendar | Resources | Cost | Actual cost | user_start_date1 | UNIT DESCRIPTION | user_end_date1 |
| --- | --- | --- | --- | --- | --- | --- | --- | --- | --- | --- | --- | --- | --- | --- | --- | --- | --- | --- | --- |
|  | 42 | **B113B- Security Block, HSE** |  | 2017-11-10 | 2018-11-06 |  |  |  |  |  |  |  |  |  |  |  |  |  |  |
|  | 1 | **Civil & Structural Work** |  | 2017-11-10 | 2018-11-06 |  |  |  |  |  |  |  |  |  |  |  |  |  |  |
| A125830 |  | Foundation & columns | 84d | 2017-11-10 A | 2018-02-03 A | 113120 FS+10d, 103000 | 100% |  | 2017-11-06 | 2018-03-02 |  |  | Monsoon | MH-Wtg [351 h] | 157,950 | 157,950 | 2017-12-28 | 003 |  |
| A125850 |  | Plinth beams | 14d | 2017-12-15 A | 2018-02-08 A | A125830 SS+20d | 100% |  | 2017-12-08 | 2017-12-27 |  |  |  | MH-Wtg [234 h] | 105,300 | 105,300 |  | 003 |  |
| A125860 |  | Grade slab | 7d | 2017-12-26 A | 2018-01-02 A | A125850 | 100% |  | 2018-01-17 | 2018-01-25 |  |  |  | MH-Wtg [117 h] | 52,650 | 52,650 |  | 003 |  |
| A125870 |  | Lintel beams | 20d | 2018-01-01 A | 2018-01-20 A | A125850 FS+15d | 100% |  | 2018-03-12 | 2018-04-06 |  |  |  | MH-Wtg [234 h] | 105,300 | 105,300 |  | 003 |  |
| A125840 |  | Brick work & plastering | 60d | 2018-01-15 A | 2018-10-23 | A125860 |  | 60d | 2018-02-01 | 2018-04-25 | 52113.9d | 0d |  | MH-Wtg [117 h] | 52,650 | 47,385 |  | 003 |  |
| A125880 |  | Floor slabs | 10d | 2018-01-27 A | 2018-02-05 A | A125870 FS+15d | 100% |  | 2018-03-22 | 2018-04-04 |  |  |  | MH-Wtg [468 h] | 210,600 | 210,600 |  | 003 |  |
| A125900 |  | Flooring work | 15d | 2018-08-01 | 2018-08-21 | A125880 |  |  |  |  | 52148.9d | 0d |  | MH-Wtg [58 h] | 26,100 |  |  | 003 |  |
| A125930 |  | Plumbing & sanitary work | 20d | 2018-08-15 | 2018-09-11 | A125900 FS-5d |  |  |  |  | 52153.9d |  |  | MH-Wtg [58 h] | 26,100 |  |  | 003 | 2018-05-30 |
| A125910 |  | Doors, windows and handrails | 10d | 2018-08-22 | 2018-09-04 | A125900 |  |  |  |  | 52148.9d | 35d |  | MH-Wtg [58 h] | 26,100 |  |  | 003 |  |
| A125920 |  | Painting work | 10d | 2018-10-24 | 2018-11-06 | A125840 |  |  |  |  | 52113.9d |  |  | MH-Wtg [58 h] | 26,100 |  |  | 003 |  |
|  | 3 | **Electrical Installation** |  | 2018-10-12 | 2018-11-06 |  |  |  |  |  |  |  |  |  |  |  |  |  |  |
| A125950 |  | Concealed wiring for electrification | 8d | 2018-10-12 | 2018-10-23 | A125840 FF |  |  |  |  | 52113.9d | 0d |  | MH-Wtg [52 h] | 23,400 |  |  | 003 |  |
| A125980 |  | Installation of light fittings | 10d | 2018-10-17 | 2018-10-30 | A125960 FF |  |  |  |  | 52113.9d | 0d |  | MH-Wtg [78 h] | 35,100 |  |  | 003 |  |
| A125960 |  | Installation of switches/plugs | 5d | 2018-10-24 | 2018-10-30 | A125910, A125950 |  |  |  |  | 52113.9d | 0d |  | MH-Wtg [65 h] | 29,250 |  |  | 003 |  |
| A125970 |  | Terminations | 5d | 2018-10-31 | 2018-11-06 | A125980 |  |  |  |  | 52113.9d |  |  | MH-Wtg [65 h] | 29,250 |  |  | 003 |  |
|  | 32 | **B114A- Warehouse- Open Space** |  | 2017-11-10 | 2018-08-07 |  |  |  |  |  |  |  |  |  |  |  |  |  |  |
|  | 1 | **Civil & Structural Work** |  | 2017-11-10 | 2017-12-06 |  |  |  |  |  |  |  |  |  |  |  |  |  |  |
| A121480 |  | RCC/Civil construction work | 20d | 2017-11-10 A | 2017-11-17 A | 102600, 113120 FS+10d | 100% |  | 2017-11-10 | 2017-12-07 |  |  |  | MH-Wtg [187.18 h] | 84,231 | 84,231 |  | 003 |  |
| A121490 |  | Fencing work | 15d | 2017-11-23 A | 2017-12-06 A | A121480 | 100% |  | 2018-01-30 | 2018-02-19 |  |  |  | MH-Wtg [46.79 h] | 21,056 | 21,056 |  | 003 |  |
|  | 3 | **Electrical Installation** |  | 2018-08-01 | 2018-08-07 |  |  |  |  |  |  |  |  |  |  |  |  |  |  |
| A121580 |  | Cable tray installation (Deleted) | 5d | 2018-08-01 | 2018-08-07 |  |  |  |  |  | 52178.9d |  |  | MH-Wtg |  |  |  | 003 |  |
| A121590 |  | Cable laying (Deleted) | 3d | 2018-08-01 | 2018-08-03 |  |  |  |  |  | 52180.9d |  |  | MH-Wtg |  |  |  | 003 |  |
| A121610 |  | Glanding and termination (Deleted) | 5d | 2018-08-01 | 2018-08-07 |  |  |  |  |  | 52178.9d |  |  | MH-Wtg |  |  |  | 003 |  |
| A121620 |  | Installation of light fittings (Deleted) | 5d | 2018-08-01 | 2018-08-07 | A121490 |  |  |  |  | 52178.9d |  |  | MH-Wtg |  |  |  | 003 |  |

| ID | WBS | Activity | Duration | Start | Finish | Predecessors | Complete | Remaining | Planned start | Planned finish | Total float | Free float | Constraint | Resources | Cost | Actual cost | user_start_date1 | UNIT DESCRIPTION | user_end_date1 |
| --- | --- | --- | --- | --- | --- | --- | --- | --- | --- | --- | --- | --- | --- | --- | --- | --- | --- | --- | --- |
|  | 33 | **B114B- Weighbridge, Logistics** |  | 2017-11-14 | 2018-08-28 |  |  |  |  |  |  |  |  |  |  |  |  |  |  |
|  | 1 | **Civil & Structural Work** |  | 2017-11-14 | 2018-08-14 |  |  |  |  |  |  |  |  |  |  |  |  |  |  |
| A124870 |  | Foundation & columns | 59d | 2017-11-14 A | 2018-01-25 A | 102750, 113112.1 FS+10d | 100% |  | 2017-12-01 | 2018-02-22 |  |  | start on or after 2017-12-01 | MH-Wtg [187.18 h] | 84,231 | 84,231 | 2017-12-11 | 003 |  |
| A124880 |  | Plinth beams | 10d | 2017-12-21 A | 2017-12-23 A | A124870 SS+20d | 100% |  | 2018-01-01 | 2018-01-12 |  |  |  | MH-Wtg [140.38 h] | 63,171 | 63,171 |  | 003 |  |
| A124890 |  | Grade slab | 5d | 2018-01-01 A | 2018-01-03 A | A124880 | 100% |  | 2018-02-01 | 2018-02-07 |  |  |  | MH-Wtg [46.79 h] | 21,056 | 21,056 |  | 003 |  |
| A124900 |  | Brick work & plastering | 43d | 2018-01-08 A | 2018-05-15 A | A124890 | 100% |  | 2018-02-01 | 2018-04-02 |  |  |  | MH-Wtg [46.79 h] | 21,056 | 21,056 |  | 003 |  |
| A124869 |  | Civil work for weighbridge | 20d | 2018-01-10 A | 2018-05-05 A | A124920 FF | 100% |  | 2018-02-22 | 2018-03-21 |  |  |  | MH-Wtg [93.59 h] | 42,116 | 42,116 |  | 003 |  |
| A124910 |  | Lintel beams | 10d | 2018-01-15 A | 2018-01-19 A | A124880 FS+10d | 100% |  | 2018-02-01 | 2018-02-14 |  |  |  | MH-Wtg [140.38 h] | 63,171 | 63,171 |  | 003 |  |
| A124920 |  | Floor slabs | 15d | 2018-01-25 A | 2018-01-30 A | A124910 FS+10d | 100% |  | 2018-03-01 | 2018-03-21 |  |  |  | MH-Wtg [187.18 h] | 84,231 | 84,231 |  | 003 |  |
| A124940 |  | Flooring work | 10d | 2018-06-02 A | 2018-06-12 A | A124920 | 100% |  | 2018-06-01 | 2018-06-14 |  |  |  | MH-Wtg [23.4 h] | 10,530 | 10,530 |  | 003 |  |
| A124950 |  | Plumbing & sanitary work | 15d | 2018-06-08 A | 2018-07-10 A | A124940 FS-5d | 100% |  | 2018-06-08 | 2018-06-28 |  |  |  | MH-Wtg [23.4 h] | 10,530 | 10,530 |  | 003 |  |
| A124960 |  | Doors, windows and handrails | 10d | 2018-06-13 A | 2018-07-20 A | A124940 | 100% |  | 2018-06-15 | 2018-06-28 |  |  |  | MH-Wtg [23.4 h] | 10,530 | 10,530 |  | 003 |  |
| A124970 |  | Painting work | 10d | 2018-07-10 A | 2018-08-14 | A124900 |  | 10d | 2018-07-02 | 2018-07-13 | 9d | 336.94d |  | MH-Wtg [23.4 h] | 10,530 | 5,265 |  | 003 | 2018-05-20 |
|  | 3 | **Electrical Installation** |  | 2018-06-05 | 2018-08-07 |  |  |  |  |  |  |  |  |  |  |  |  |  |  |
| A121810 |  | Cable tray installation | 3d | 2018-06-05 A | 2018-06-12 A | A121850 | 100% |  | 2018-07-23 | 2018-07-25 |  |  |  | MH-Wtg [31.2 h] | 14,040 | 14,040 |  | 003 |  |
| A121820 |  | Cable laying | 3d | 2018-06-09 A | 2018-06-14 A | A121810 | 100% |  | 2018-07-26 | 2018-07-30 |  |  |  | MH-Wtg [39 h] | 17,550 | 17,550 |  | 003 |  |
| A121840 |  | Glanding and termination | 3d | 2018-08-01 | 2018-08-03 | A121820 |  |  |  |  | 16d | 343.94d |  | MH-Wtg [39 h] | 17,550 |  |  | 003 |  |
| A121850 |  | Installation of light fittings | 5d | 2018-08-01 | 2018-08-07 | A124960, 113540 |  |  |  |  | 52178.9d |  |  | MH-Wtg [46.79 h] | 21,056 |  |  | 003 |  |
|  | 4 | **Instrument Installation** |  | 2018-03-26 | 2018-08-28 |  |  |  |  |  |  |  |  |  |  |  |  |  |  |
| A121870 |  | Installation of weighbridge package | 20d | 2018-03-26 A | 2018-08-28 | A124869, 119250, A124960 |  | 20d | 2018-06-29 | 2018-07-26 | 52163.9d |  |  | MH-Wtg [467.94 h] | 210,573 | 168,458 |  | 003 |  |
|  | 26 | **B114C- Weighbridge, Logistics (Hold)** |  | 2018-08-01 | 2018-10-22 |  |  |  |  |  |  |  |  |  |  |  |  |  |  |
|  | 1 | **Civil & Structural Work** |  | 2018-08-01 | 2018-10-22 |  |  |  |  |  |  |  |  |  |  |  |  |  |  |
| A124980 |  | Civil work for weighbridge (Hold) | 20d | 2018-08-01 | 2018-08-28 | A124869 SS |  |  |  |  | 52163.9d |  |  | MH-Wtg |  |  |  | 003 |  |
| A125040 |  | Foundation & columns (Hold) | 59d | 2018-08-01 | 2018-10-22 | A124870 SS |  |  |  |  | 52124.9d |  |  | MH-Wtg |  |  |  | 003 |  |
| A125050 |  | Brick work & plastering (Hold) | 43d | 2018-08-01 | 2018-09-28 |  |  |  |  |  | 52140.9d |  |  | MH-Wtg |  |  |  | 003 |  |
| A125060 |  | Plinth beams (Hold) | 10d | 2018-08-01 | 2018-08-14 |  |  |  |  |  | 52173.9d |  |  | MH-Wtg |  |  |  | 003 |  |
| A125070 |  | Grade slab (Hold) | 5d | 2018-08-01 | 2018-08-07 |  |  |  |  |  | 52178.9d |  |  | MH-Wtg |  |  |  | 003 |  |
| A125080 |  | Lintel beams (Hold) | 8d | 2018-08-01 | 2018-08-10 |  |  |  |  |  | 52175.9d |  |  | MH-Wtg |  |  |  | 003 |  |
| A125090 |  | Floor slabs (Hold) | 8d | 2018-08-01 | 2018-08-10 |  |  |  |  |  | 52175.9d |  |  | MH-Wtg |  |  |  | 003 |  |
| A125100 |  | Flooring work (Hold) | 10d | 2018-08-01 | 2018-08-14 |  |  |  |  |  | 52173.9d |  |  | MH-Wtg |  |  |  | 003 |  |
| A125110 |  | Plumbing & sanitary work (Hold) | 15d | 2018-08-01 | 2018-08-21 |  |  |  |  |  | 52168.9d |  |  | MH-Wtg |  |  |  | 003 |  |
| A125120 |  | Doors, windows and handrails (Hold) | 10d | 2018-08-01 | 2018-08-14 |  |  |  |  |  | 52173.9d |  |  | MH-Wtg |  |  |  | 003 |  |
| A125130 |  | Painting work (Hold) | 10d | 2018-08-01 | 2018-08-14 |  |  |  |  |  | 52173.9d |  |  | MH-Wtg |  |  |  | 003 |  |

| ID | WBS | Activity | Duration | Start | Finish | Predecessors | Total float | Free float | Constraint | Resources | Cost | UNIT DESCRIPTION |
| --- | --- | --- | --- | --- | --- | --- | --- | --- | --- | --- | --- | --- |
|  | 3 | **Electrical Installation** |  | 2018-08-01 | 2018-08-07 |  |  |  |  |  |  |  |
| A124990 |  | Cable tray installation (Hold) | 3d | 2018-08-01 | 2018-08-03 |  | 52180.9d |  |  | MH-Wtg |  | 003 |
| A125000 |  | Cable laying (Hold) | 3d | 2018-08-01 | 2018-08-03 |  | 52180.9d |  |  | MH-Wtg |  | 003 |
| A125010 |  | Glanding and termination (Hold) | 3d | 2018-08-01 | 2018-08-03 |  | 52180.9d |  |  | MH-Wtg |  | 003 |
| A125020 |  | Installation of light fittings (Hold) | 5d | 2018-08-01 | 2018-08-07 |  | 52178.9d |  |  | MH-Wtg |  | 003 |
|  | 4 | **Instrument Installation** |  | 2018-08-01 | 2018-08-28 |  |  |  |  |  |  |  |
| A125030 |  | Installation of weighbridge package (Hold) | 20d | 2018-08-01 | 2018-08-28 | A121870 SS, 119250 | 52163.9d |  |  | MH-Wtg |  | 003 |
|  | 34 | **B115A- Car Parking** |  | 2018-08-08 | 2018-09-25 |  |  |  |  |  |  |  |
|  | 1 | **Civil & Structural Work** |  | 2018-08-08 | 2018-09-18 |  |  |  |  |  |  |  |
| A122170 |  | RCC/Civil construction work | 15d | 2018-08-08 | 2018-08-28 | 102810 | -32d | 0d | start on or after 2018-06-20 | MH-Wtg [163.78 h] | 73,701 | 003 |
| A122180 |  | Structural steel erection | 10d | 2018-08-29 | 2018-09-11 | A122170 | -21d | 0d |  | MH-Wtg [58.49 h] | 26,321 | 003 |
| A122190 |  | Painting work | 5d | 2018-09-12 | 2018-09-18 | A122180 | -16d | 311.94d |  | MH-Wtg [11.7 h] | 5,265 | 003 |
|  | 3 | **Electrical Installation** |  | 2018-09-12 | 2018-09-25 |  |  |  |  |  |  |  |
| A122310 |  | Installation of light fittings | 3d | 2018-09-12 | 2018-09-14 | A122180 | -21d | 0d |  | MH-Wtg [11.7 h] | 5,265 | 003 |
| A122270 |  | Cable tray installation | 3d | 2018-09-17 | 2018-09-19 | A122310 | -21d | 0d |  | MH-Wtg [3.9 h] | 1,755 | 003 |
| A122280 |  | Cable laying | 2d | 2018-09-20 | 2018-09-21 | A122270 | -21d | 0d |  | MH-Wtg [2.6 h] | 1,170 | 003 |
| A122300 |  | Glanding and termination | 2d | 2018-09-24 | 2018-09-25 | A122280 | -21d | 306.94d |  | MH-Wtg [7.8 h] | 3,510 | 003 |
|  | 35 | **B115B- Two Wheeler Parking** |  | 2018-08-29 | 2018-10-24 |  |  |  |  |  |  |  |
|  | 1 | **Civil & Structural Work** |  | 2018-08-29 | 2018-10-09 |  |  |  |  |  |  |  |
| A125140 |  | RCC/Civil construction work | 15d | 2018-08-29 | 2018-09-18 | 102870 FS-5d, A122170 | -32d | 0d |  | MH-Wtg [163.78 h] | 73,701 | 003 |
| A125150 |  | Structural steel erection | 10d | 2018-09-19 | 2018-10-02 | A125140 | -32d | 0d |  | MH-Wtg [58.49 h] | 26,321 | 003 |
| A125160 |  | Painting work | 5d | 2018-10-03 | 2018-10-09 | A125150 | -31d | 296.94d |  | MH-Wtg [11.7 h] | 5,265 | 003 |
|  | 3 | **Electrical Installation** |  | 2018-10-03 | 2018-10-24 |  |  |  |  |  |  |  |
| A125200 |  | Installation of light fittings | 5d | 2018-10-03 | 2018-10-09 | A125150 | -32d | 0d |  | MH-Wtg [11.7 h] | 5,265 | 003 |
| A125170 |  | Cable tray installation | 5d | 2018-10-10 | 2018-10-16 | A125200 | -32d | 0d |  | MH-Wtg [3.9 h] | 1,755 | 003 |
| A125180 |  | Cable laying | 3d | 2018-10-17 | 2018-10-19 | A125170 | -32d | 0d |  | MH-Wtg [2.6 h] | 1,170 | 003 |
| A125190 |  | Glanding and termination | 3d | 2018-10-22 | 2018-10-24 | A125180 | -32d | 295.94d |  | MH-Wtg [7.8 h] | 3,510 | 003 |

| ID | WBS | Activity | Duration | Start | Finish | Predecessors | Total float | Free float | Constraint | Resources | Cost | UNIT DESCRIPTION |
| --- | --- | --- | --- | --- | --- | --- | --- | --- | --- | --- | --- | --- |
|  | 31 | **B115C- Truck Parking** |  | 2018-09-19 | 2018-10-09 |  |  |  |  |  |  |  |
|  | 1 | **Civil & Structural Work** |  | 2018-09-19 | 2018-10-09 |  |  |  |  |  |  |  |
| A125210 |  | RCC/Civil construction work | 15d | 2018-09-19 | 2018-10-09 | 102921, A125140 | -31d | 296.94d |  | MH-Wtg [259.97 h] | 116,987 | 003 |
|  | 38 | **B116A- Security Guard House** |  | 2018-08-01 | 2018-11-09 |  |  |  |  |  |  |  |
|  | 1 | **Civil & Structural Work** |  | 2018-08-01 | 2018-10-26 |  |  |  |  |  |  |  |
| A125270 |  | Foundation & columns | 43d | 2018-08-01 | 2018-09-28 | 103100, 113112.1 FS+10d, A125780 FF | -54d | 0d | start on or after 2018-03-06 | MH-Wtg [58.49 h] | 26,321 | 003 |
| A125290 |  | Plinth beams | 5d | 2018-08-15 | 2018-08-21 | A125270 FS-33d | -54d | 0d |  | MH-Wtg [46.79 h] | 21,056 | 003 |
| A125300 |  | Grade slab | 5d | 2018-08-22 | 2018-08-28 | A125290 | -39.12d | 0d |  | MH-Wtg [5.85 h] | 2,633 | 003 |
| A125280 |  | Brick work & plastering | 33.12d | 2018-08-29 | 2018-10-15 | A125300 | -39.12d | 0d |  | MH-Wtg [11.7 h] | 5,265 | 003 |
| A125310 |  | Lintel beams | 5d | 2018-09-05 | 2018-09-11 | A125290 FS+10d | -54d | 0d |  | MH-Wtg [46.79 h] | 21,056 | 003 |
| A125320 |  | Floor slabs | 5d | 2018-09-24 | 2018-09-28 | A125310 FS+8d | -54d | 0d |  | MH-Wtg [46.79 h] | 21,056 | 003 |
| A125330 |  | Flooring work | 5d | 2018-10-08 | 2018-10-12 | A125320 FS+5d | -54d | 0d |  | MH-Wtg [5.85 h] | 2,633 | 003 |
| A125340 |  | Doors, windows and handrails | 10d | 2018-10-15 | 2018-10-26 | A125330 | -54d | 0d |  | MH-Wtg [5.85 h] | 2,633 | 003 |
| A125350 |  | Painting work | 5d | 2018-10-15 | 2018-10-22 | A125280 | -39.12d | 288.82d |  | MH-Wtg [5.85 h] | 2,633 | 003 |
|  | 3 | **Electrical Installation** |  | 2018-10-29 | 2018-11-09 |  |  |  |  |  |  |  |
| A125260 |  | Installation of light fittings | 4d | 2018-10-29 | 2018-11-01 | A125340 | -54d | 0d |  | MH-Wtg [7.8 h] | 3,510 | 003 |
| A125230 |  | Cable tray installation | 2d | 2018-11-02 | 2018-11-05 | A125260 | -54d | 0d |  | MH-Wtg [5.2 h] | 2,340 | 003 |
| A125240 |  | Cable laying | 2d | 2018-11-06 | 2018-11-07 | A125230 | -54d | 0d |  | MH-Wtg [6.5 h] | 2,925 | 003 |
| A125250 |  | Glanding and termination | 2d | 2018-11-08 | 2018-11-09 | A125240 | -54d | 273.94d |  | MH-Wtg [6.5 h] | 2,925 | 003 |
|  | 36 | **B116B- Security Guard House** |  | 2018-08-01 | 2018-11-09 |  |  |  |  |  |  |  |
|  | 1 | **Civil & Structural Work** |  | 2018-08-01 | 2018-10-26 |  |  |  |  |  |  |  |
| A125400 |  | Foundation & columns | 43d | 2018-08-01 | 2018-09-28 | A125270 SS | -54d | 0d |  | MH-Wtg [58.49 h] | 26,321 | 003 |
| A125420 |  | Plinth beams | 5d | 2018-08-15 | 2018-08-21 | A125400 FS-33d | -54d | 0d |  | MH-Wtg [46.79 h] | 21,056 | 003 |
| A125430 |  | Grade slab | 5d | 2018-08-22 | 2018-08-28 | A125420 | -39.12d | 0d |  | MH-Wtg [5.85 h] | 2,633 | 003 |
| A125410 |  | Brick work & plastering | 33.12d | 2018-08-29 | 2018-10-15 | A125430 | -39.12d | 0d |  | MH-Wtg [11.7 h] | 5,265 | 003 |
| A125440 |  | Lintel beams | 5d | 2018-09-05 | 2018-09-11 | A125420 FS+10d | -54d | 0d |  | MH-Wtg [46.79 h] | 21,056 | 003 |
| A125450 |  | Floor slabs | 5d | 2018-09-24 | 2018-09-28 | A125440 FS+8d | -54d | 0d |  | MH-Wtg [46.79 h] | 21,056 | 003 |
| A125460 |  | Flooring work | 5d | 2018-10-08 | 2018-10-12 | A125450 FS+5d | -54d | 0d |  | MH-Wtg [5.85 h] | 2,633 | 003 |
| A125470 |  | Doors, windows and handrails | 10d | 2018-10-15 | 2018-10-26 | A125460 | -54d | 0d |  | MH-Wtg [5.85 h] | 2,633 | 003 |
| A125480 |  | Painting work | 5d | 2018-10-15 | 2018-10-22 | A125410 | -39.12d | 288.82d |  | MH-Wtg [5.85 h] | 2,633 | 003 |

| ID | WBS | Activity | Duration | Start | Finish | Predecessors | Complete | Remaining | Planned start | Planned finish | Total float | Free float | Calendar | Resources | Cost | Actual cost | UNIT DESCRIPTION | user_start_date1 | user_end_date1 |
| --- | --- | --- | --- | --- | --- | --- | --- | --- | --- | --- | --- | --- | --- | --- | --- | --- | --- | --- | --- |
|  | 3 | **Electrical Installation** |  | 2018-10-29 | 2018-11-09 |  |  |  |  |  |  |  |  |  |  |  |  |  |  |
| A125390 |  | Installation of light fittings | 4d | 2018-10-29 | 2018-11-01 | A125470 |  |  |  |  | -54d | 0d |  | MH-Wtg [7.8 h] | 3,510 |  | 003 |  |  |
| A125360 |  | Cable tray installation | 2d | 2018-11-02 | 2018-11-05 | A125390 |  |  |  |  | -54d | 0d |  | MH-Wtg [5.2 h] | 2,340 |  | 003 |  |  |
| A125370 |  | Cable laying | 2d | 2018-11-06 | 2018-11-07 | A125360 |  |  |  |  | -54d | 0d |  | MH-Wtg [6.5 h] | 2,925 |  | 003 |  |  |
| A125380 |  | Glanding and termination | 2d | 2018-11-08 | 2018-11-09 | A125370 |  |  |  |  | -54d | 273.94d |  | MH-Wtg [6.5 h] | 2,925 |  | 003 |  |  |
|  | 39 | **B117- Piperack** |  | 2017-09-26 | 2018-11-20 |  |  |  |  |  |  |  |  |  |  |  |  |  |  |
|  | 1 | **Civil & Structural Work** |  | 2017-09-26 | 2018-09-25 |  |  |  |  |  |  |  |  |  |  |  |  |  |  |
| A123330 |  | RCC/Civil construction work | 85d | 2017-09-26 A | 2017-12-25 A | 103160, 113112.1 FS+10d | 100% |  | 2017-10-02 | 2018-01-29 |  |  | Monsoon | MH-Wtg [952.36 h] | 428,562 | 428,562 | 003 | 2017-09-20 | 2018-01-30 |
| A123340 |  | Structural steel erection | 90d | 2017-10-13 A | 2018-09-19 | A123330 FS-40d | 60% | 36d | 2017-11-28 | 2018-04-03 | 52147.9d |  |  | MH-Wtg [1309.49 h] | 589,271 | 577,485 | 003 | 2017-11-10 | 2018-02-20 |
| A123360 |  | Painting work | 40d | 2018-10-20 A | 2018-09-25 | A123390 SS |  | 40d | 2018-09-17 | 2018-11-09 | 18d | 145d |  | MH-Wtg [119.04 h] | 53,568 | 52,497 | 003 | 2018-02-20 | 2018-04-05 |
|  | 2 | **Mechanical Erection & Piping** |  | 2018-02-23 | 2018-11-20 |  |  |  |  |  |  |  |  |  |  |  |  |  |  |
| A123380 |  | Piping erection | 80d | 2018-02-23 A | 2018-11-20 | A123340, 106550 SS+10d |  | 80d | 2018-03-23 | 2018-07-12 | 52103.9d |  |  | MH-Wtg [1666.62 h] | 749,979 | 449,987 | 003 |  |  |
| A123410 |  | Painting work | 30d | 2018-03-03 A | 2018-09-11 | A123390 FS-20d |  | 30d | 2018-11-12 | 2018-12-21 | 28d | 155d |  | MH-Wtg [119.04 h] | 53,568 | 36,426 | 003 |  |  |
| A123390 |  | Testing and boxup | 60d | 2018-06-15 A | 2018-10-23 | A123380 FS-25d |  | 60d | 2018-09-17 | 2018-12-07 | -27d | 0d |  | MH-Wtg [357.13 h] | 160,709 | 16,071 | 003 |  |  |
| A123400 |  | Insulation of equipments and piping | 40d | 2018-09-12 | 2018-11-06 | A123390 FS-30d |  |  |  |  | -27d | 100d |  | MH-Wtg [238.09 h] | 107,141 |  | 003 |  |  |
|  | 3 | **Electrical Installation** |  | 2018-04-10 | 2018-10-02 |  |  |  |  |  |  |  |  |  |  |  |  |  |  |
| A123420 |  | Cable tray installation | 45d | 2018-04-10 A | 2018-10-02 | A123380 FS-40d, 118100 FS-20d |  | 45d | 2018-08-15 | 2018-10-17 | 52138.9d |  |  | MH-Wtg [411.83 h] | 185,324 | 138,993 | 003 |  |  |
| A123430 |  | Cable laying | 30d | 2018-06-05 A | 2018-09-11 | A123420 FS-15d, 117710 FS-20d |  | 30d | 2018-10-04 | 2018-11-14 | 13d | 140d |  | MH-Wtg [463.31 h] | 208,490 | 93,820 | 003 |  |  |
| A123470 |  | Earthing work | 20d | 2018-06-12 A | 2018-08-28 | A123420 FS-30d |  | 20d | 2018-07-23 | 2018-08-17 | 23d | 150d |  | MH-Wtg [154.44 h] | 69,498 | 62,370 | 003 |  |  |
|  | 4 | **Instrument Installation** |  | 2018-04-10 | 2018-10-02 |  |  |  |  |  |  |  |  |  |  |  |  |  |  |
| A123480 |  | Cable tray installation | 45d | 2018-04-10 A | 2018-10-02 | A123420 FS-30d, 119101 FS-20d |  | 45d | 2018-09-17 | 2018-11-19 | 52138.9d |  |  | MH-Wtg [318.52 h] | 143,334 | 100,334 | 003 |  |  |
| A123490 |  | Cable laying | 30d | 2018-06-27 A | 2018-09-11 | A123480 FS-15d, 119108 FS-20d |  | 30d | 2018-08-30 | 2018-10-11 | 13d | 140d |  | MH-Wtg [389.31 h] | 175,190 | 87,595 | 003 |  |  |
|  | 44 | **B120- Gas Metering Station (Deleted)** |  | 2018-08-01 | 2018-08-28 |  |  |  |  |  |  |  |  |  |  |  |  |  |  |
|  | 1 | **Civil & Structural Work** |  | 2018-08-01 | 2018-08-28 |  |  |  |  |  |  |  |  |  |  |  |  |  |  |
| A123550 |  | Equipment foundations (Deleted) | 20d | 2018-08-01 | 2018-08-28 |  |  |  |  |  | 52163.9d |  |  | MH-Wtg |  |  | 003 |  |  |
| A123560 |  | RCC/Civil construction work (Deleted) | 15d | 2018-08-01 | 2018-08-21 |  |  |  |  |  | 52168.9d |  |  | MH-Wtg |  |  | 003 |  |  |

| ID | WBS | Activity | Duration | Start | Finish | Predecessors | Complete | Remaining | Planned start | Planned finish | Total float | Constraint | Resources | Cost | Actual cost | UNIT DESCRIPTION |
| --- | --- | --- | --- | --- | --- | --- | --- | --- | --- | --- | --- | --- | --- | --- | --- | --- |
|  | 2 | **Mechanical Erection & Piping** |  | 2018-08-01 | 2018-08-21 |  |  |  |  |  |  |  |  |  |  |  |
| A123600 |  | Installation of metering skid (Deleted) | 10d | 2018-08-01 | 2018-08-14 |  |  |  |  |  | 52173.9d |  | MH-Wtg |  |  | 003 |
| A123610 |  | Piping hookup (Deleted) | 15d | 2018-08-01 | 2018-08-21 |  |  |  |  |  | 52168.9d |  | MH-Wtg |  |  | 003 |
|  | 3 | **Electrical Installation** |  | 2018-08-01 | 2018-08-07 |  |  |  |  |  |  |  |  |  |  |  |
| A123650 |  | Cable tray installation (Deleted) | 3d | 2018-08-01 | 2018-08-03 |  |  |  |  |  | 52180.9d |  | MH-Wtg |  |  | 003 |
| A123660 |  | Cable laying (Deleted) | 3d | 2018-08-01 | 2018-08-03 |  |  |  |  |  | 52180.9d |  | MH-Wtg |  |  | 003 |
| A123680 |  | Glanding and termination (Deleted) | 3d | 2018-08-01 | 2018-08-03 |  |  |  |  |  | 52180.9d |  | MH-Wtg |  |  | 003 |
| A123690 |  | Installation of light fittings (Deleted) | 3d | 2018-08-01 | 2018-08-03 |  |  |  |  |  | 52180.9d |  | MH-Wtg |  |  | 003 |
| A123700 |  | Earthing work (Deleted) | 5d | 2018-08-01 | 2018-08-07 |  |  |  |  |  | 52178.9d |  | MH-Wtg |  |  | 003 |
|  | 4 | **Instrument Installation** |  | 2018-08-01 | 2018-08-10 |  |  |  |  |  |  |  |  |  |  |  |
| A123710 |  | Cable tray installation (Deleted) | 3d | 2018-08-01 | 2018-08-03 |  |  |  |  |  | 52180.9d |  | MH-Wtg |  |  | 003 |
| A123720 |  | Cable laying (Deleted) | 3d | 2018-08-01 | 2018-08-03 |  |  |  |  |  | 52180.9d |  | MH-Wtg |  |  | 003 |
| A123740 |  | Installation of instruments (Deleted) | 8d | 2018-08-01 | 2018-08-10 |  |  |  |  |  | 52175.9d |  | MH-Wtg |  |  | 003 |
| A123750 |  | Glanding and termination (Deleted) | 5d | 2018-08-01 | 2018-08-07 |  |  |  |  |  | 52178.9d |  | MH-Wtg |  |  | 003 |
| A123760 |  | Hookup of instruments (Deleted) | 5d | 2018-08-01 | 2018-08-07 |  |  |  |  |  | 52178.9d |  | MH-Wtg |  |  | 003 |
| A123770 |  | Testing & calibration (Deleted) | 3d | 2018-08-01 | 2018-08-03 |  |  |  |  |  | 52180.9d |  | MH-Wtg |  |  | 003 |
|  | 45 | **B121- Engineering Store** |  | 2017-04-06 | 2018-08-10 |  |  |  |  |  |  |  |  |  |  |  |
|  | 1 | **Civil & Structural Work** |  | 2017-04-06 | 2018-08-10 |  |  |  |  |  |  |  |  |  |  |  |
| A125570 |  | Painting work | 10d | 2017-04-06 A | 2018-06-09 A | A125500 | 100% |  | 2017-12-01 | 2017-12-14 |  |  | MH-Wtg [58.49 h] | 26,321 | 26,321 | 003 |
| A125490 |  | Foundation & columns | 20d | 2017-06-02 A | 2017-08-10 A | 119500, 113112.1 FS+5d | 100% |  | 2017-06-22 | 2017-07-19 |  |  | MH-Wtg [584.93 h] | 263,219 | 263,219 | 003 |
| A125510 |  | Plinth beams | 10d | 2017-07-10 A | 2017-08-10 A | A125490 FS-15d | 100% |  | 2017-07-10 | 2017-07-21 |  |  | MH-Wtg [233.97 h] | 105,287 | 105,287 | 003 |
| A125520 |  | Grade slab | 8d | 2017-08-03 A | 2017-09-28 A | A125510 | 100% |  | 2017-09-15 | 2017-09-26 |  |  | MH-Wtg [58.49 h] | 26,321 | 26,321 | 003 |
| A125530 |  | PEB Structure installation | 30d | 2017-08-05 A | 2017-12-29 A | A125490 FS+10d, 113112 FS+50d, 115790 FF+10d | 100% |  | 2017-10-13 | 2017-11-23 |  | start on 2017-07-03 | MH-Wtg [935.88 h] | 421,146 | 421,146 | 003 |
| A125500 |  | Brick work & plastering | 33.12d | 2017-08-13 A | 2017-11-10 A | A125520 | 100% |  | 2017-09-27 | 2017-11-13 |  |  | MH-Wtg [116.99 h] | 52,646 | 52,646 | 003 |
| A125560 |  | Doors, windows and handrails | 15d | 2017-09-15 A | 2017-09-27 A | A125550 | 100% |  | 2017-10-23 | 2017-11-10 |  |  | MH-Wtg [58.49 h] | 26,321 | 26,321 | 003 |
| A125550 |  | Flooring work | 10d | 2017-09-20 A | 2017-09-28 A | A125530 | 100% |  | 2017-10-09 | 2017-10-20 |  |  | MH-Wtg [58.49 h] | 26,321 | 26,321 | 003 |
| A125540 |  | Slab for office cabins (Deleted) | 8d | 2017-10-27 A | 2018-08-10 | A125530 FS-20d |  | 8d | 2017-10-27 | 2017-11-07 | 52175.9d |  | MH-Wtg |  |  | 003 |

| ID | WBS | Activity | Duration | Start | Finish | Predecessors | Complete | Planned start | Planned finish | Constraint | Resources | Cost | Actual cost | UNIT DESCRIPTION |
| --- | --- | --- | --- | --- | --- | --- | --- | --- | --- | --- | --- | --- | --- | --- |
|  | 3 | **Electrical Installation** |  | 2017-12-12 | 2017-12-30 |  |  |  |  |  |  |  |  |  |
| A123880 |  | Cable tray installation | 15d | 2017-12-12 A | 2017-12-16 A | A123920 | 100% | 2017-12-15 | 2018-01-04 |  | MH-Wtg [51.99 h] | 23,396 | 23,396 | 003 |
| A123890 |  | Cable laying | 8d | 2017-12-18 A | 2017-12-22 A | A123880 | 100% | 2018-01-22 | 2018-02-01 |  | MH-Wtg [64.99 h] | 29,246 | 29,246 | 003 |
| A123910 |  | Glanding and termination | 5d | 2017-12-23 A | 2017-12-27 A | A123890 | 100% | 2018-02-02 | 2018-02-08 |  | MH-Wtg [64.99 h] | 29,246 | 29,246 | 003 |
| A123920 |  | Installation of light fittings | 10d | 2017-12-27 A | 2017-12-30 A | A125560 | 100% | 2018-01-01 | 2018-01-12 |  | MH-Wtg [77.99 h] | 35,096 | 35,096 | 003 |
|  | 46 | **B122- Engineering Workshop** |  | 2017-06-02 | 2018-06-09 |  |  |  |  |  |  |  |  |  |
|  | 1 | **Civil & Structural Work** |  | 2017-06-02 | 2018-06-09 |  |  |  |  |  |  |  |  |  |
| A125620 |  | Foundation & columns | 70d | 2017-06-02 A | 2017-10-25 A | 119650, 113112.1 FS+5d | 100% | 2017-09-01 | 2017-12-07 |  | MH-Wtg [467.94 h] | 210,573 | 210,573 | 003 |
| A125630 |  | Plinth beams | 15d | 2017-07-10 A | 2017-08-10 A | A125620 FS-55d | 100% | 2017-09-22 | 2017-10-12 |  | MH-Wtg [116.99 h] | 52,646 | 52,646 | 003 |
| A125640 |  | Grade slab | 15d | 2017-08-03 A | 2017-09-28 A | A125630 | 100% | 2017-10-13 | 2017-11-02 |  | MH-Wtg [58.49 h] | 26,321 | 26,321 | 003 |
| A125641 |  | PEB Structure installation | 20d | 2017-08-05 A | 2017-12-29 A | A125620 FS-40d, 113112 FS+50d | 100% | 2017-10-13 | 2017-11-09 | start on 2017-07-03 | MH-Wtg [935.88 h] | 421,146 | 421,146 | 003 |
| A125650 |  | Brick work & plastering | 42d | 2017-08-13 A | 2017-12-30 A | A125640 | 100% | 2017-11-03 | 2018-01-01 |  | MH-Wtg [58.49 h] | 26,321 | 26,321 | 003 |
| A125660 |  | Lintel beams | 30d | 2017-08-20 A | 2017-09-23 A | A125630 FS+10d | 100% | 2017-10-27 | 2017-12-07 |  | MH-Wtg [116.99 h] | 52,646 | 52,646 | 003 |
| A125680 |  | Staircase work | 20d | 2017-09-02 A | 2017-09-28 A | A125670 FF | 100% | 2017-10-09 | 2017-11-03 |  | MH-Wtg [116.99 h] | 52,646 | 52,646 | 003 |
| A125670 |  | Floor slabs | 30d | 2017-09-05 A | 2017-10-31 A | A125660 FS-20d | 100% | 2017-09-25 | 2017-11-03 |  | MH-Wtg [233.97 h] | 105,287 | 105,287 | 003 |
| A125710 |  | Doors, windows and handrails | 10d | 2017-09-15 A | 2017-10-31 A | A125690 | 100% | 2017-11-20 | 2017-12-01 |  | MH-Wtg [58.49 h] | 26,321 | 26,321 | 003 |
| A125690 |  | Flooring work | 10d | 2017-09-20 A | 2017-11-04 A | A125670, A125641, A125680 FF+10d | 100% | 2017-11-13 | 2017-11-24 |  | MH-Wtg [58.49 h] | 26,321 | 26,321 | 003 |
| A125720 |  | Painting work | 10d | 2018-04-06 A | 2018-06-09 A | A125650 | 100% | 2018-07-02 | 2018-07-13 |  | MH-Wtg [58.49 h] | 26,321 | 26,321 | 003 |
| A125700 |  | Plumbing & sanitary work | 10d | 2018-04-20 A | 2018-05-05 A | A125690 FS-5d | 100% | 2018-06-01 | 2018-06-14 |  | MH-Wtg [58.49 h] | 26,321 | 26,321 | 003 |
|  | 3 | **Electrical Installation** |  | 2017-12-12 | 2017-12-30 |  |  |  |  |  |  |  |  |  |
| A125580 |  | Cable tray installation | 15d | 2017-12-12 A | 2017-12-16 A | A125610 | 100% | 2017-12-15 | 2018-01-04 |  | MH-Wtg [51.99 h] | 23,396 | 23,396 | 003 |
| A125590 |  | Cable laying | 8d | 2017-12-18 A | 2017-12-22 A | A125580 | 100% | 2018-01-22 | 2018-02-01 |  | MH-Wtg [64.99 h] | 29,246 | 29,246 | 003 |
| A125600 |  | Glanding and termination | 5d | 2017-12-23 A | 2017-12-27 A | A125590 | 100% | 2018-02-02 | 2018-02-08 |  | MH-Wtg [64.99 h] | 29,246 | 29,246 | 003 |
| A125610 |  | Installation of light fittings | 10d | 2017-12-27 A | 2017-12-30 A | A125710 | 100% | 2018-01-01 | 2018-01-12 |  | MH-Wtg [77.99 h] | 35,096 | 35,096 | 003 |

| ID | WBS | Activity | Duration | Start | Finish | Predecessors | Remaining | Planned start | Planned finish | Total float | Free float | Resources | Cost | Actual cost | UNIT DESCRIPTION |
| --- | --- | --- | --- | --- | --- | --- | --- | --- | --- | --- | --- | --- | --- | --- | --- |
|  | 48 | **B123- Ammonia Scrubber** |  | 2018-04-20 | 2019-02-18 |  |  |  |  |  |  |  |  |  |  |
|  | 1 | **Civil & Structural Work** |  | 2018-04-20 | 2018-09-25 |  |  |  |  |  |  |  |  |  |  |
| A113180 |  | RCC/Civil construction work | 25d | 2018-04-20 A | 2018-09-04 | A126580 | 25d | 2018-05-01 | 2018-06-04 | -60d | 0d | MH-Wtg [180 h] | 81,000 | 72,900 | 003 |
| A113190 |  | Structural steel erection | 20d | 2018-05-15 A | 2018-08-28 | A113180 | 20d | 2018-07-06 | 2018-08-02 | -35d | 0d | MH-Wtg [220 h] | 99,000 | 59,400 | 003 |
| A113210 |  | Painting work | 10d | 2018-05-20 A | 2018-08-14 | A113240 SS | 10d | 2018-12-11 | 2018-12-24 | 56d | 511.67d | MH-Wtg [47.62 h] | 21,429 | 15,643 | 003 |
| A113170 |  | Equipment foundations | 15d | 2018-09-05 | 2018-09-25 | A113180, A126590 |  |  |  | -60d | 41d | MH-Wtg [95.24 h] | 42,858 |  | 003 |
|  | 2 | **Mechanical Erection & Piping** |  | 2018-11-22 | 2019-02-13 |  |  |  |  |  |  |  |  |  |  |
| A113220 |  | Equipment installation | 20d | 2018-11-22 | 2018-12-19 | A113220.1 FF, A113170 |  |  |  | -101d | 0d | MH-Wtg [140 h] | 63,000 |  | 003 |
| A113220.1 |  | Installation of Ammonia scrubber | 15d | 2018-11-29 | 2018-12-19 | 119590, A113190 |  |  |  | -101d | 0d |  |  |  | 003 |
| A113230 |  | Piping erection | 20d | 2018-12-20 | 2019-01-16 | A113190, A113220 |  |  |  | -101d | 0d | MH-Wtg [180 h] | 81,000 |  | 003 |
| A113240 |  | Testing and boxup | 15d | 2019-01-10 | 2019-01-30 | A113230 FS-5d |  |  |  | -101d | 0d | MH-Wtg [110 h] | 49,500 |  | 003 |
| A113250 |  | Insulation of equipments and piping | 15d | 2019-01-24 | 2019-02-13 | A113240 FS-5d |  |  |  | -98d | 29d | MH-Wtg [95.24 h] | 42,858 |  | 003 |
| A113260 |  | Painting work | 10d | 2019-01-31 | 2019-02-13 | A113240 |  |  |  | -83d | 44d | MH-Wtg [47.62 h] | 21,429 |  | 003 |
|  | 3 | **Electrical Installation** |  | 2018-08-29 | 2018-10-12 |  |  |  |  |  |  |  |  |  |  |
| A113270 |  | Cable tray installation | 15d | 2018-08-29 | 2018-09-18 | A113190 |  |  |  | -10d | 0d | MH-Wtg [45 h] | 20,250 |  | 003 |
| A113320 |  | Earthing work | 8d | 2018-09-05 | 2018-09-14 | A113270 FS-10d |  |  |  | 10d | 137d | MH-Wtg [20 h] | 9,000 |  | 003 |
| A113280 |  | Cable laying | 10d | 2018-09-12 | 2018-09-25 | A113270 FS-5d |  |  |  | -10d | 0d | MH-Wtg [60 h] | 27,000 |  | 003 |
| A113290 |  | Installation of electrical items | 5d | 2018-09-26 | 2018-10-02 | A113280 |  |  |  | -10d | 0d | MH-Wtg [40 h] | 18,000 |  | 003 |
| A113300 |  | Glanding and termination | 8d | 2018-10-03 | 2018-10-12 | A113290 |  |  |  | -10d | 117d | MH-Wtg [45 h] | 20,250 |  | 003 |
| A113310 |  | Installation of light fittings | 5d | 2018-10-03 | 2018-10-09 | A113290 |  |  |  | -7d | 120d | MH-Wtg [25 h] | 11,250 |  | 003 |
|  | 4 | **Instrument Installation** |  | 2018-08-29 | 2019-02-18 |  |  |  |  |  |  |  |  |  |  |
| A113330 |  | Cable tray installation | 15d | 2018-08-29 | 2018-09-18 | A113270 SS |  |  |  | -2d | 0d | MH-Wtg [40 h] | 18,000 |  | 003 |
| A113340 |  | Cable laying | 10d | 2018-09-12 | 2018-09-25 | A113330 FS-5d |  |  |  | -2d | 99d | MH-Wtg [60 h] | 27,000 |  | 003 |
| A113350 |  | Installation of JBs and Air headers | 5d | 2018-09-19 | 2018-09-25 | A113330 |  |  |  | -2d | 99d | MH-Wtg [15 h] | 6,750 |  | 003 |
| A113360 |  | Installation of instruments | 10d | 2019-01-17 | 2019-01-30 | A113240 FF |  |  |  | -101d | 0d | MH-Wtg [20 h] | 9,000 |  | 003 |
| A113370 |  | Glanding and termination | 8d | 2019-01-31 | 2019-02-11 | A113340 FF, A113350 FF, A113360 |  |  |  | -101d | 0d | MH-Wtg [30 h] | 13,500 |  | 003 |
| A113380 |  | Hookup of instruments | 8d | 2019-01-31 | 2019-02-11 | A113360 FF, A113240 |  |  |  | -96d | 5d | MH-Wtg [15 h] | 6,750 |  | 003 |
| A113390 |  | Testing & calibration | 5d | 2019-02-12 | 2019-02-18 | A113380 FF, A113370 |  |  |  | -101d | 26d | MH-Wtg [10 h] | 4,500 |  | 003 |

| ID | WBS | Activity | Duration | Start | Finish | Predecessors | Complete | Remaining | Planned start | Planned finish | Total float | Free float | Constraint | Calendar | Resources | Cost | Actual cost | UNIT DESCRIPTION |
| --- | --- | --- | --- | --- | --- | --- | --- | --- | --- | --- | --- | --- | --- | --- | --- | --- | --- | --- |
|  | 40 | **BXXX- Fire Hydrant & Cooling Water Network** |  | 2018-01-15 |  |  |  |  |  |  |  |  |  |  |  |  |  |  |
| A100000 |  | Installation of UG/AG fire hydrant network | 120d | 2018-01-15 A |  | A100010 FF+20d, A100050 FF+20d |  | 52173.9d | 2018-02-01 | 2018-07-18 | -52161.9d | 0d | start on or after 2018-01-15 |  | MH-Wtg [2180 h] | 981,000 | 979,038 | 003 |
| A100050.1 |  | Hume pipe laying for road crossings | 60d | 2018-01-15 A |  | A100000 FF-40d | 100% | 0d | 2018-03-01 | 2018-05-24 | 50d |  |  |  |  |  |  | 003 |
| A100050 |  | Pedestals for fire hydrant network | 60d | 2018-02-14 A | 2018-10-23 |  |  | 60d | 2018-02-01 | 2018-04-25 | -68d | 52093.9d | start on or after 2018-01-25 |  | MH-Wtg [670 h] | 301,500 | 215,060 | 003 |
| A100040 |  | UG/AG cooling water headers | 60d | 2018-02-23 A | 2018-08-24 | 113190 FS+10d, 115940 SS+40d | 71% | 17.14d | 2018-03-21 | 2018-06-12 | 1.86d | 90.86d |  |  | MH-Wtg [1870 h] | 841,500 | 824,670 | 003 |
|  | 47 | **BXXX- Road/Drains/Culverts & Trenches** |  | 2017-06-06 | 2019-01-15 |  |  |  |  |  |  |  |  |  |  |  |  |  |
| A100010 |  | Construction of WBM roads | 80d | 2017-06-06 A | 2018-09-25 | 113121 FS+10d, 103200, 113112.1 FS+10d | 50% | 40d | 2017-07-24 | 2017-11-28 | -48d | 0d |  | Monsoon | MH-Wtg [1559.8 h] | 701,910 | 631,719 | 003 |
| A100020 |  | Construction of drains & culverts | 110d | 2017-07-10 A | 2018-10-23 | 103220, A100010 FS-26d | 45% | 60d | 2017-10-19 | 2018-03-22 | 52063.9d | 0d |  |  | MH-Wtg [1559.8 h] | 701,910 | 596,624 | 003 |
| A100060 |  | Construction of RCC trenches (Deleted) | 40d | 2018-08-01 | 2018-09-25 | A100020 FS-60d |  |  |  |  | 52143.9d |  |  |  | MH-Wtg |  |  | 003 |
| A100030 |  | Construction of RCC roads (Deleted) | 60d | 2018-10-24 | 2019-01-15 | A100020 |  |  |  |  | 52063.9d |  |  |  | MH-Wtg |  |  | 003 |
|  | 37 | **BXXX- Compound Wall & Hardstrata** |  | 2017-04-19 | 2018-08-14 |  |  |  |  |  |  |  |  |  |  |  |  |  |
| A125730 |  | Piling work | 40d | 2017-04-19 A | 2017-08-05 A | 113111 FS+10d | 100% |  | 2017-05-01 | 2017-06-23 |  |  |  |  | MH-Wtg [520 h] | 234,000 | 234,000 | 003 |
| A125740 |  | Pile caps | 30d | 2017-05-03 A | 2017-08-08 A | A125730 FS-25d | 100% |  | 2017-05-08 | 2017-06-16 |  |  |  |  | MH-Wtg [260 h] | 117,000 | 117,000 | 003 |
| A125770 |  | Precasting of panels | 40d | 2017-05-12 A | 2017-08-08 A | A125730 FS-20d | 100% |  | 2017-05-15 | 2017-07-07 |  |  |  |  | MH-Wtg [520 h] | 234,000 | 234,000 | 003 |
| A125750 |  | Plinth beam | 20d | 2017-05-14 A | 2017-08-10 A | A125740 FS-10d | 100% |  | 2017-06-05 | 2017-06-30 |  |  |  |  | MH-Wtg [260 h] | 117,000 | 117,000 | 003 |
| A125810 |  | Construction of Hardstrata | 20d | 2017-05-16 A | 2017-06-14 A | A125740 SS | 100% |  | 2017-05-08 | 2017-06-02 |  |  |  |  | MH-Wtg [480 h] | 216,000 | 216,000 | 003 |
| A125760 |  | RCC columns | 25d | 2017-05-18 A | 2017-08-10 A | A125750 FS-10d | 100% |  | 2017-06-19 | 2017-07-21 |  |  |  |  | MH-Wtg [390 h] | 175,500 | 175,500 | 003 |
| A125780 |  | Installation of precast panel | 30d | 2017-05-24 A | 2017-08-25 A | A125760 FS-15d, A125770 SS+15d | 100% |  | 2017-07-03 | 2017-08-11 |  |  |  |  | MH-Wtg [390 h] | 175,500 | 175,500 | 003 |
| A125790 |  | Concertina fencing installation | 30d | 2017-08-04 A | 2018-03-02 A | A125780 FS-20d | 100% |  | 2017-09-15 | 2017-10-26 |  |  |  |  | MH-Wtg [260 h] | 117,000 | 117,000 | 003 |
| A125800 |  | Installation of gates | 10d | 2018-03-02 A | 2018-08-14 | A125790 |  | 10d | 2018-05-01 | 2018-05-14 | 9d | 336.94d |  |  | MH-Wtg [120 h] | 54,000 | 27,000 | 003 |
|  | 29 | **BXXX- Construction Power** |  | 2017-07-03 | 2017-12-28 |  |  |  |  |  |  |  |  |  |  |  |  |  |
| A125991 |  | Civil work for Transformer foundation | 15d | 2017-07-03 A | 2017-07-18 A | A126040, A126050 | 100% |  | 2017-07-03 | 2017-07-21 |  |  |  |  |  |  |  | 003 |
| A125992 |  | Civil work for ICOG Panel | 10d | 2017-07-03 A | 2017-07-18 A | A126050 | 100% |  | 2017-07-03 | 2017-07-14 |  |  |  |  |  |  |  | 003 |
| A125993 |  | Installation of Transformers | 10d | 2017-08-03 A | 2017-08-05 A | A125991 FS+10d, A126000 SF | 100% |  | 2017-10-23 | 2017-11-06 |  |  |  |  |  |  |  | 003 |
| A125994 |  | Installation of ICOG Panel | 15d | 2017-08-05 A | 2017-08-10 A | A125992 FS+10d | 100% |  | 2017-09-25 | 2017-10-13 |  |  |  |  |  |  |  | 003 |
| A125992.1 |  | Civil work for High mast lighting | 25d | 2017-09-04 A | 2017-10-07 A |  | 100% |  | 2017-09-25 | 2017-10-27 |  |  |  |  |  |  |  | 003 |
| A125990 |  | Civil work for Compact Substation | 15d | 2017-09-13 A | 2017-10-04 A | 118420 FS-22d | 100% |  | 2017-09-25 | 2017-10-13 |  |  |  |  |  |  |  | 003 |
| A126000 |  | Installation of Compact Substation | 10d | 2017-11-10 A | 2017-11-15 A | A125990 FS+7d, 113580.2 FS+10d | 100% |  | 2017-12-01 | 2017-12-14 |  |  |  |  |  |  |  | 003 |
| A126010 |  | HT Cable laying | 15d | 2017-11-15 A | 2017-11-18 A | A126000 SS | 100% |  | 2017-12-01 | 2017-12-21 |  |  |  |  |  |  |  | 003 |
| A126030 |  | LT Cable laying (UG) | 25d | 2017-11-18 A | 2017-11-25 A | A126020 | 100% |  | 2017-12-22 | 2018-01-25 |  |  |  |  |  |  |  | 003 |
| A126000.1 |  | Installation of High mast lighting | 15d | 2017-11-27 A | 2017-12-28 A | A125992.1 | 100% |  | 2017-12-01 | 2017-12-21 |  |  |  |  |  |  |  | 003 |
| A126020 |  | Installation of Distribution boards | 5d | 2017-11-28 A | 2017-11-30 A | A126000 | 100% |  | 2017-12-15 | 2017-12-21 |  |  |  |  |  |  |  | 003 |

Notes:
- A100020: Explanation: Consider 30% wtg for / culvert
- A126000: Explanation: Dates not available. Only tentative / intallation dates
- A126010: Explanation: Dates not available. Only tentative / intallation dates
- A126030: Explanation: Dates not available. Only tentative / intallation dates
- A126000.1: Explanation: Dates not available. Only tentative / intallation dates
- A126020: Explanation: Dates not available. Only tentative / intallation dates

| ID | WBS | Activity | Type | Duration | Start | Finish | Predecessors | Total float | Free float | Constraint | Resources | Cost | UNIT DESCRIPTION |
| --- | --- | --- | --- | --- | --- | --- | --- | --- | --- | --- | --- | --- | --- |
|  | 5 | **Mechanical Clearence & Handover** |  |  | 2018-08-22 |  |  |  |  |  |  |  |  |
|  | 1 | **Operation & Maint. Checklist/Mechanical Completion** |  |  | 2018-08-22 |  |  |  |  |  |  |  |  |
| 120665.8 |  | OOMCL & MCC of Chilled water system |  | 45d | 2018-08-22 | 2018-10-23 | A116880, A116900 FF, A116940, A116950 FF, A116990, A117000, A117010, A117080, A117130 FF, A117170, A117180 FF, A117220, A117230, A117240, A117310 | -27d | 52123.9d | finish on 2018-09-14 | MH-Wtg [203.82 h] | 91,719 | 003 |
| 120666.2 |  | OOMCL & MCC of Power distribution system |  | 15d | 2018-09-20 | 2018-10-10 | A124551, A124570 FF, A124620, A124630, A124640 | 0d | 52132.9d | finish on 2018-10-10 | MH-Wtg [407.64 h] | 183,438 | 003 |
| 120666 |  | OOMCL & MCC of DM water system |  | 10d | 2018-10-01 | 2018-10-12 | A119190, A119210 FF, A119260 FF, A119300, A119310, A119320, A119390, A119490 FF, A119530, A119550, A119620 | -39d | 52130.9d | finish on 2018-08-20 | MH-Wtg [203.82 h] | 91,719 | 003 |
| 120665.9 |  | OOMCL & MCC of Air system |  | 28d | 2018-10-03 | 2018-11-09 | A116490 FF, A116640, A116650, A116670 FF, A116720 FF, A116730, A116740, A116750, A116760, A116770, A116780, A116790, A116800, A116810, A116820, A116830, A116840, A116850 | -69d | 52110.9d | finish on 2018-08-06 | MH-Wtg [203.82 h] | 91,719 | 003 |
| 120665.5 |  | OOMCL & MCC of Teated water system |  | 10d | 2018-10-30 | 2018-11-12 | A118260, A118340 FF, A118380, A118390, A118400, A118470, A118950 | -63d | 52109.9d | finish on 2018-08-15 | MH-Wtg [203.82 h] | 91,719 | 003 |
| 120666.1 |  | OOMCL & MCC of Power generation system |  | 30d | 2018-12-10 | 2019-01-18 | A117600 FF, A117640, A117650 FF, A117690, A117700, A117710, A117780, A120360 FF, A120450, A120460, A120470, A117810, A117830 FF, A117870, A117880 FF, A117920, A117930, A117940, A118010, 115350 FF+15d, A117560.2 | -83d | 52060.9d | finish on 2018-09-25 | MH-Wtg [679.4 h] | 305,730 | 003 |
| 120665.2 |  | OOMCL & MCC of CNA Plant |  | 10d | 2018-12-31 | 2019-01-11 | A113440, A113450 FF, A113490, A113500 FF, A113540, A113550, A113560, A113630, A113660, A113680 FF, A113720, A113730 FF, A113770, A113780, A113790, A113860, 119590.97 FF+20d | -95d | 52065.9d | finish on 2018-08-31 | MH-Wtg [679.4 h] | 305,730 | 002 |
| 120665.7 |  | OOMCL & MCC of Cooling water system |  | 10d | 2018-12-31 | 2019-01-11 | A119720 FF, A119760, A119770, A119780, A119850, A100040 | -89d | 52065.9d | finish on 2018-09-10 | MH-Wtg [339.7 h] | 152,865 | 003 |
| 120665.4 |  | OOMCL & MCC of Raw water system |  | 10d | 2019-01-22 | 2019-02-04 | A118110 FF, A118150, A118240 | -126d | 52049.9d | finish on 2018-08-10 | MH-Wtg [203.82 h] | 91,719 | 003 |
| 120666.3 |  | OOMCL & MCC of Effluent treatment system |  | 10d | 2019-02-15 | 2019-02-28 | A120800, A120810, A120820 FF, A120870 FF, A120910, A120920, A120930, A121000 | -129d | 52031.9d | finish on 2018-08-31 | MH-Wtg [203.82 h] | 91,719 | 003 |
| 120665.3 |  | OOMCL & MCC of Offsite storages |  | 15d | 2019-03-27 | 2019-04-16 | A113890, A113900, A113910 FF, A113960 FF, A114000, A114010, A114020, A114090, A114130, A114140 FF, A114180, A114190 FF, A114230, A114240, A114250, A114320, A114340, A114420 FF, A114460, A114470, A114480, A114550, A114590, A114600 FF, A114650 FF, A114690, A114710, A114780, A114820, A114830 FF, A114880 FF, A114920, A114940, A115010, A115050, A115060 FF, A115110 FF, A115150, A115160, A115170, A115240, A115280 FF, A115330, A115340 FF, A115380, A115390, A115400, A115470, A115510, A115520 FF, A115570 FF, A115610, A115630, A115700, A115740, A115750 FF, A115800 FF, A115840, A115850, A115860, A115930, A115970, A115980 FF, A116030 FF, A116070, A116090, A116160, A116210 FF, A116250, A116260 FF, A116300, A116320, A116390, A123360 FF, A123410 FF, A123430, A123470, A123490, A123400, A113250, A113260 FF, A113300, A113310, A113320, A113390 | -127d | 51998.9d | finish on 2018-10-19 | MH-Wtg [815.28 h] | 366,876 | 003 |
| 120666.5 |  | OOMCL & MCC of General & miscellaneous buildings |  | 10d | 2019-11-28 | 2019-12-12 | A124840, A124860, A121380, A124950, A124970, A121840, A122190, A122300, A125160, A125190 FF, A125210, A125350, A125250, A125480, A125380, A125570, A123910, A125700, A125720, A125600, A125800, A125810, 114230 FF+30d | -327.94d | 51826.9d | finish on 2018-09-10 | MH-Wtg [543.52 h] | 244,584 | 003 |
| 120666.4 |  | OOMCL & MCC of Control system |  | 15d | 2020-06-11 | 2020-07-02 | A124730, A124750 FF, A121140, A121210, 118340 FF+20d, 118410 FF+15d, 119320 FF+15d, A113130, A117690, A115450, A118610, 118340.1 FF+15d | -447.67d | 51682.2d | finish on 2018-10-15 | MH-Wtg [407.64 h] | 183,438 | 003 |
| 120665.1 |  | OOMCL & MCC of WNA Plant |  | 20d | 2020-07-02 | 2020-07-30 | A112960, A112970 FF, A113010, A113020 FF, A113070, A113080, A113150, A113060, A113210 FF | -455.67d | 51662.2d | finish on 2018-10-31 | MH-Wtg [1358.8 h] | 611,460 | 002 |
| 120665.6 |  | OOMCL & MCC of Fire water system |  | 10d |  |  | A118720, A118700, A100000, A118570 FF, A118610, A118620, A118630 | -52161.9d | 0d | finish on 2018-08-30 | MH-Wtg [339.7 h] | 152,865 | 003 |
|  | 2 | **Commencement of Commissioning** |  |  |  |  |  |  |  |  |  |  |  |
| A125820 |  | Mechanical Completion & Ready for Commissioning | milestone | 0d |  |  | 120665.1 FF, 120665.2 FF, 120665.3 FF, 120665.4 FF, 120665.5 FF, 120665.6 FF, 120665.7 FF, 120665.8 FF, 120665.9 FF, 120666 FF, 120666.1 FF, 120666.2 FF, 120666.3 FF, 120666.4 FF | -52117.9d | 0d | finish on 2018-10-31 |  |  |  |

## Activity codes

| Code | Value | Meaning |
| --- | --- | --- |
| UNIT DESCRIPTION | 001 | WNA PLANT |
| UNIT DESCRIPTION | 002 | CNA PLANTS |
| UNIT DESCRIPTION | 003 | OSBL & UTILITIES |
